How a schedule from an exported table changed from version to version. A marks actual dates.

## Version 1 (saved 2026-10-14)

Note of the change: Write the project plan as a GRS JSON schedule with its reading guide

| Task | Start | Finish |
| --- | --- | --- |
| CR-751(GRS JSON スキーマの自己説明)の適用 完了 | 2026-10-15T03:04:00 | 2026-10-15T03:04:00 |
| CR-754〜757(設定パネル・タイムゾーン・ダミー実績・全体シフト)の残りの裁定 | 2026-10-15T09:00:00 | 2026-10-15T11:00:00 |
| 新しい不具合と改善点の聞き取り(DFC-2600〜) | 2026-10-15T11:00:00 | 2026-10-15T14:00:00 |
| CR-753(Ctrl ドラッグの写しを移動と同じ所へ)の実装 | 2026-10-15T09:00:00 | 2026-10-15T13:15:00 |
| 工程の強制の道具(push の見張り・OneDrive の断り・検査 78〜80)の実装 | 2026-10-15T09:00:00 | 2026-10-15T14:00:00 |
| JDG-2071(仕様書が正)の食い違いの調べ | 2026-10-15T09:00:00 | 2026-10-15T11:00:00 |
| CR-740(範囲選択中の下の絵の覚え置き)の実装 | 2026-10-15T09:00:00 | 2026-10-15T14:30:00 |
| CR-752(公開名の呼び方と直す案の行の鍵)の仕様反映 | 2026-10-15T14:00:00 | 2026-10-15T15:15:00 |
| CR-758(依存線とマーカーの干渉解消)の実装 | 2026-10-15T09:00:00 | 2026-10-15T14:15:00 |
| 波 A(CR-753・740・752・758)の合流と確かめ | 2026-10-15T15:15:00 | 2026-10-15T16:15:00 |
| CR-755(タイムゾーンの略称と夏時間)の実装 | 2026-10-15T16:15:00 | 2026-10-16T10:15:00 |
| CR-756(分単位のダミー実績)の実装 | 2026-10-15T16:15:00 | 2026-10-15T20:45:00 |
| CR-757(全体日程のシフト)の実装 | 2026-10-15T16:15:00 | 2026-10-16T10:00:00 |
| 波 B(CR-755・756・757)の合流と確かめ | 2026-10-16T10:15:00 | 2026-10-16T11:15:00 |
| CR-754(設定パネルの閉じる・幅・並び)と DFC-2517(1 行)の実装 | 2026-10-16T11:15:00 | 2026-10-16T17:45:00 |
| 波 C(CR-754・DFC-2517)の合流と確かめ | 2026-10-16T17:45:00 | 2026-10-16T19:15:00 |
| W4(アダプタ層の分割)の前半 CR-578→579→580 の実装 | 2026-10-16T19:15:00 | 2026-10-17T14:15:00 |
| W4 の後半(CR-581 の後半と properties-panel)の実装 | 2026-10-17T14:15:00 | 2026-10-18T09:15:00 |
| W5(異常系 DFC-586 ほか)の仕様 | 2026-10-18T09:15:00 | 2026-10-18T19:15:00 |
| W5(異常系 DFC-922 ほか)の実装と試験 | 2026-10-18T19:15:00 | 2026-10-19T14:15:00 |
| W4・W5(リファクタ)の合流と確かめ | 2026-10-19T14:15:00 | 2026-10-19T15:15:00 |
| 罠の束(DFC-544・547・548・549)の実装 | 2026-10-15T20:45:00 | 2026-10-16T10:45:00 |
| 実装待ちの残り(DFC-464・532〜562 ほか約 20 行)の実装 | 2026-10-16T10:45:00 | 2026-10-16T20:45:00 |
| DFC-730(GP-1)の実装 | 2026-10-16T20:45:00 | 2026-10-16T22:45:00 |
| T-064(公開の名 479 の呼び方)の書き起こしと再検討 | 2026-10-15T16:00:00 | 2026-10-16T16:00:00 |
| 聞き取り分(DFC-2600〜)の CR の起草 | 2026-10-16T16:00:00 | 2026-10-16T21:00:00 |
| 聞き取り分(DFC-2600〜)の CR の実装 | 2026-10-16T21:00:00 | 2026-10-17T16:00:00 |
| 用語集の JSON 化(DFC-2175)の仕様と実装 | 2026-10-16T10:00:00 | 2026-10-16T15:00:00 |
| 仕様待ちの残り(DFC-560・631・1063〜1073 ほか約 19 行)の CR の起草 | 2026-10-16T15:00:00 | 2026-10-16T20:00:00 |
| 仕様待ちの残りの CR の実装 | 2026-10-16T20:00:00 | 2026-10-17T15:00:00 |
| JDG-2071 の食い違いの再検討(仕様とコードのどちらを正とするか) | 2026-10-15T11:00:00 | 2026-10-15T16:00:00 |
| JDG-2071 の規則と検査(仕様に合わせてコードを作る)の実装 | 2026-10-15T16:00:00 | 2026-10-15T21:00:00 |
| 試験待ち 7 行(DFC-550・567・641 ほか)の仕様だけを読む試験 | 2026-10-15T21:00:00 | 2026-10-16T11:00:00 |
| 未検討 40 行(DFC-611・2560〜2569 ほか)のトリアージ | 2026-10-16T11:00:00 | 2026-10-16T16:00:00 |
| トリアージで出た直しの実装 | 2026-10-16T16:00:00 | 2026-10-17T11:00:00 |
| 並行の仕事の合流と台帳の締め | 2026-10-19T15:15:00 | 2026-10-19T16:15:00 |
| 1 枚のチェックリスト(user-checklist)の刷り直し | 2026-10-19T16:15:00 | 2026-10-19T19:15:00 |
| OneDrive を止める(利用者に頼む) | 2026-10-19T16:15:00 | 2026-10-19T16:15:00 |
| 一括の GT-2(非 AI の直しが全部入った sha) | 2026-10-19T19:15:00 | 2026-10-19T21:15:00 |
| refactor と main へ push・Pages の配備 | 2026-10-19T21:15:00 | 2026-10-19T21:15:00 |
| 1 枚のチェックリストを実物で触る | 2026-10-19T21:15:00 | 2026-10-20T09:15:00 |
| チェックリストで出た直しの実装 | 2026-10-20T09:15:00 | 2026-10-20T14:15:00 |
| チェックリストの直しの GT-2 と push | 2026-10-20T14:15:00 | 2026-10-20T15:15:00 |
| 正式公開の判断(JDG-1740) | 2026-10-20T15:15:00 | 2026-10-20T15:15:00 |
| CR-695(対話欄の廃止)の実装 | 2026-10-19T21:15:00 | 2026-10-20T16:15:00 |
| CR-697(取次が口と鍵を覚える)の実装 | 2026-10-19T21:15:00 | 2026-10-20T16:15:00 |
| DFC-2214・2215(AM-19 の説明)の仕様と実装 | 2026-10-19T21:15:00 | 2026-10-20T11:15:00 |
| AI 連携の合流と GT-2 | 2026-10-20T16:15:00 | 2026-10-20T19:15:00 |
| AI 連携の push・計画の終わり | 2026-10-20T19:15:00 | 2026-10-20T19:15:00 |

## Version 2 (saved 2026-10-14)

Note of the change: Merge integration 7cd862bb into claude/practical-bose-c6162b

Last finish 2026-10-20 → 2026-10-19 (-1d).

Added:

| Task | Start | Finish |
| --- | --- | --- |
| CR-751(GRS JSON スキーマの自己説明)の適用 | 2026-10-15T02:00:00 | 2026-10-15T03:04:00 |
| 試験待ち 6 行(DFC-2449〜2466)の仕様だけを読む試験の作成 | 2026-10-15T02:15:00 | 2026-10-15T02:32:00 |
| 1 枚のチェックリスト(user-checklist-2026-10-15)の起草 | 2026-10-15T02:15:00 | 2026-10-15T02:41:00 |
| CR-740・752・753(覚え置き・呼び方・Ctrl の写し)の起草 | 2026-10-15T02:15:00 | 2026-10-15T03:40:00 |
| CR-758(依存線とマーカーの干渉解消)の起草 | 2026-10-15T02:15:00 | 2026-10-15T03:40:00 |
| 表の窓の聞き取り(DFC-2600〜2615)の記録 | 2026-10-15T02:20:00 | 2026-10-15T03:53:00 |
| 工程の強制の道具(push の見張り・検査 78〜80)の実装 | 2026-10-15T02:20:00 | 2026-10-15T04:13:00 |
| CR-754〜757(設定パネル・タイムゾーン・ダミー実績・全体シフト)の起草 | 2026-10-15T02:20:00 | 2026-10-15T05:57:00 |
| JDG-2071(仕様書が正)の権威の調査 | 2026-10-15T02:40:00 | 2026-10-15T04:09:00 |
| 紹介頁(docs/about)のダーク切替の実装 | 2026-10-15T02:40:00 | 2026-10-15T04:05:00 |
| プロジェクト計画(project-plan)の初版と直し | 2026-10-15T03:44:00 | 2026-10-15T05:09:00 |
| STOP の印の仕分け(DFC-2647)の調べ | 2026-10-15T05:09:00 | 2026-10-15T05:36:00 |
| CR-759〜762(表の窓)の起草 | 2026-10-15T05:02:00 | 2026-10-15T07:08:00 |
| CR-765〜768(仕様が正の原稿)の起草 | 2026-10-15T05:09:00 | 2026-10-15T06:07:00 |
| CR-763/764・766・767(飛び先・命令の値・状態機械)の問いへの答え | 2026-10-15T21:00:00 | 2026-10-15T22:00:00 |
| CR-740(範囲選択中の下の絵の覚え置き)の性能の要求の試験 | 2026-10-15T07:30:00 | 2026-10-15T08:30:00 |
| CR-758(依存線とマーカーの干渉解消)の実装の仕上げ | 2026-10-15T07:30:00 | 2026-10-15T09:30:00 |
| CR-757(全体日程のシフト)の仕様だけを読む試験 | 2026-10-15T07:30:00 | 2026-10-15T09:30:00 |
| プロジェクト計画(project-plan)の更新 | 2026-10-15T07:30:00 | 2026-10-15T08:00:00 |
| 英語の慣習の見直し(CR-769〜771)の調べ | 2026-10-15T07:30:00 | 2026-10-15T09:30:00 |
| CR-740(範囲選択中の下の絵の覚え置き)の合流と確かめ | 2026-10-15T08:30:00 | 2026-10-15T09:00:00 |
| CR-758(依存線とマーカーの干渉解消)の合流と確かめ | 2026-10-15T09:30:00 | 2026-10-15T10:00:00 |
| CR-757(全体日程のシフト)の合流と確かめ | 2026-10-15T10:00:00 | 2026-10-15T10:30:00 |
| CR-762(列の境目を引く幅の追従)の実装 | 2026-10-15T08:30:00 | 2026-10-15T12:15:00 |
| CR-762(列の境目を引く幅の追従)の合流と確かめ | 2026-10-15T12:15:00 | 2026-10-15T12:45:00 |
| CR-759(修正案の表の語・推奨の一括採用・下の帯)の実装 | 2026-10-15T12:45:00 | 2026-10-15T21:00:00 |
| CR-759(修正案の表の語と推奨の一括採用)の合流と確かめ | 2026-10-15T21:00:00 | 2026-10-15T21:30:00 |
| CR-760(表のステータスと種別の列)の実装 | 2026-10-15T21:30:00 | 2026-10-16T04:15:00 |
| CR-760(表のステータスと種別の列)の合流と確かめ | 2026-10-16T04:15:00 | 2026-10-16T04:45:00 |
| CR-756(分単位のダミー実績)の合流と確かめ | 2026-10-15T13:30:00 | 2026-10-15T14:00:00 |
| CR-761(列のフィルタの一覧の並びと残す値)の実装 | 2026-10-15T21:30:00 | 2026-10-16T01:45:00 |
| CR-761(列のフィルタの一覧)の合流と確かめ | 2026-10-16T01:45:00 | 2026-10-16T02:15:00 |
| CR-755(タイムゾーンの固定の時差と略称)の実装 | 2026-10-15T09:30:00 | 2026-10-15T19:00:00 |
| CR-755(タイムゾーンの固定の時差と略称)の合流と確かめ | 2026-10-15T19:00:00 | 2026-10-15T19:30:00 |
| CR-754(日付の欄と設定パネルの幅・閉じる・折り返し)の実装 | 2026-10-15T19:30:00 | 2026-10-16T03:00:00 |
| CR-754(日付の欄と設定パネル)の合流と確かめ | 2026-10-16T03:00:00 | 2026-10-16T03:30:00 |
| T-064(公開の名 約 479 の呼び方)の書き起こしと再検討 | 2026-10-15T08:00:00 | 2026-10-15T20:00:00 |
| DFC-2645(手写し 13 か所)の生成への置き換え | 2026-10-15T20:00:00 | 2026-10-16T00:00:00 |
| 古い STOP の印 16 件の除去 | 2026-10-16T00:00:00 | 2026-10-16T04:00:00 |
| CR-765(Agent API の 22 のメンバと呼び方の原稿)の実装 | 2026-10-15T09:30:00 | 2026-10-15T15:15:00 |
| CR-765(Agent API の呼び方の原稿)の合流と確かめ | 2026-10-15T15:15:00 | 2026-10-15T15:45:00 |
| CR-763/764(飛び先のマーカーほか)の起草の仕上げ | 2026-10-15T22:00:00 | 2026-10-16T00:00:00 |
| CR-763/764(飛び先のマーカーほか)の実装 | 2026-10-16T00:00:00 | 2026-10-16T08:00:00 |
| CR-763/764(飛び先のマーカーほか)の合流と確かめ | 2026-10-16T08:00:00 | 2026-10-16T08:30:00 |
| CR-766(文書の命令 88 が運ぶ値の原稿)の実装 | 2026-10-16T03:00:00 | 2026-10-16T11:45:00 |
| CR-766(文書の命令が運ぶ値の原稿)の合流と確かめ | 2026-10-16T11:45:00 | 2026-10-16T12:15:00 |
| CR-767(状態機械の原稿)の波 1 の実装 | 2026-10-16T08:00:00 | 2026-10-16T13:30:00 |
| CR-767(状態機械の原稿)の波 2 の実装 | 2026-10-16T13:30:00 | 2026-10-16T19:00:00 |
| CR-767(状態機械の原稿)の合流と確かめ | 2026-10-16T19:00:00 | 2026-10-16T19:30:00 |
| CR-768(保存の媒体の型を表 T-024 へ)の実装 | 2026-10-16T04:45:00 | 2026-10-16T10:30:00 |
| CR-768(保存の媒体の型)の合流と確かめ | 2026-10-16T10:30:00 | 2026-10-16T11:00:00 |
| 未検討 約 40 行(DFC-611・2560〜2569・2690〜2696 ほか)のトリアージ | 2026-10-16T10:30:00 | 2026-10-16T14:30:00 |
| 仕様待ち 約 18 行(DFC-560・631・1063〜1073 ほか)の CR の起草 | 2026-10-16T04:00:00 | 2026-10-16T08:00:00 |
| 実装待ちの残り(DFC-464・532〜562 ほか約 30 行)の実装 | 2026-10-16T06:15:00 | 2026-10-16T14:15:00 |
| 英語の慣習の見直し(CR-769〜771)の起草 | 2026-10-16T19:00:00 | 2026-10-16T23:00:00 |
| CR-769〜771(英語の慣習)の改名の実装 | 2026-10-16T23:00:00 | 2026-10-17T07:00:00 |
| CR-769〜771(英語の慣習)の合流と確かめ | 2026-10-17T07:00:00 | 2026-10-17T08:00:00 |
| 全部の合流と台帳の締め | 2026-10-17T08:00:00 | 2026-10-17T09:00:00 |
| W4・W5 の合流と GT-2・push | 2026-10-18T21:00:00 | 2026-10-18T23:00:00 |
| AI 連携の合流と GT-2・push | 2026-10-18T23:00:00 | 2026-10-19T01:00:00 |
| 計画の終わり | 2026-10-19T06:45:00 | 2026-10-19T06:45:00 |

Removed: CR-751(GRS JSON スキーマの自己説明)の適用 完了; CR-754〜757(設定パネル・タイムゾーン・ダミー実績・全体シフト)の残りの裁定; 新しい不具合と改善点の聞き取り(DFC-2600〜); 工程の強制の道具(push の見張り・OneDrive の断り・検査 78〜80)の実装; JDG-2071(仕様書が正)の食い違いの調べ; CR-740(範囲選択中の下の絵の覚え置き)の実装; CR-758(依存線とマーカーの干渉解消)の実装; 波 A(CR-753・740・752・758)の合流と確かめ; CR-755(タイムゾーンの略称と夏時間)の実装; CR-757(全体日程のシフト)の実装; 波 B(CR-755・756・757)の合流と確かめ; CR-754(設定パネルの閉じる・幅・並び)と DFC-2517(1 行)の実装; 波 C(CR-754・DFC-2517)の合流と確かめ; W4・W5(リファクタ)の合流と確かめ; 実装待ちの残り(DFC-464・532〜562 ほか約 20 行)の実装; T-064(公開の名 479 の呼び方)の書き起こしと再検討; 聞き取り分(DFC-2600〜)の CR の起草; 聞き取り分(DFC-2600〜)の CR の実装; 仕様待ちの残り(DFC-560・631・1063〜1073 ほか約 19 行)の CR の起草; JDG-2071 の食い違いの再検討(仕様とコードのどちらを正とするか); JDG-2071 の規則と検査(仕様に合わせてコードを作る)の実装; 未検討 40 行(DFC-611・2560〜2569 ほか)のトリアージ; 並行の仕事の合流と台帳の締め; AI 連携の合流と GT-2; AI 連携の push・計画の終わり

Changed:

| Task | Start | Finish |
| --- | --- | --- |
| CR-753(Ctrl ドラッグの写しを移動と同じ所へ)の実装 | 2026-10-15T09:00:00 → 2026-10-15T04:13:00 | 2026-10-15T13:15:00 → 2026-10-15T05:53:00 |
| CR-752(公開名の呼び方と直す案の行の鍵)の仕様反映 | 2026-10-15T14:00:00 → 2026-10-15T04:55:00 | 2026-10-15T15:15:00 → 2026-10-15T06:15:00 |
| CR-756(分単位のダミー実績)の実装 | 2026-10-15T16:15:00 → 2026-10-15T10:00:00 | 2026-10-15T20:45:00 → 2026-10-15T13:30:00 |
| トリアージで出た直しの実装 | 2026-10-16T16:00:00 → 2026-10-16T14:30:00 | 2026-10-17T11:00:00 → 2026-10-16T22:30:00 (-1d) |
| 仕様待ちの残りの CR の実装 | 2026-10-16T20:00:00 → 2026-10-16T08:00:00 | 2026-10-17T15:00:00 → 2026-10-16T16:00:00 (-1d) |
| 罠の束(DFC-544・547・548・549)の実装 | 2026-10-15T20:45:00 → 2026-10-16T02:15:00 (+1d) | 2026-10-16T10:45:00 → 2026-10-16T06:15:00 |
| DFC-730(GP-1)の実装 | 2026-10-16T20:45:00 → 2026-10-16T14:15:00 | 2026-10-16T22:45:00 → 2026-10-16T16:15:00 |
| 試験待ち 7 行(DFC-550・567・641 ほか)の仕様だけを読む試験 | 2026-10-15T21:00:00 → 2026-10-16T11:45:00 (+1d) | 2026-10-16T11:00:00 → 2026-10-16T15:45:00 |
| 用語集の JSON 化(DFC-2175)の仕様と実装 | 2026-10-16T10:00:00 → 2026-10-16T15:45:00 | 2026-10-16T15:00:00 → 2026-10-16T19:45:00 |
| OneDrive を止める(利用者に頼む) | 2026-10-19T16:15:00 → 2026-10-17T09:00:00 (-2d) | 2026-10-19T16:15:00 → 2026-10-17T09:00:00 (-2d) |
| 1 枚のチェックリスト(user-checklist)の刷り直し | 2026-10-19T16:15:00 → 2026-10-17T09:00:00 (-2d) | 2026-10-19T19:15:00 → 2026-10-17T11:00:00 (-2d) |
| 一括の GT-2(非 AI の直しが全部入った sha) | 2026-10-19T19:15:00 → 2026-10-17T11:00:00 (-2d) | 2026-10-19T21:15:00 → 2026-10-17T13:00:00 (-2d) |
| refactor と main へ push・Pages の配備 | 2026-10-19T21:15:00 → 2026-10-17T13:00:00 (-2d) | 2026-10-19T21:15:00 → 2026-10-17T13:00:00 (-2d) |
| 1 枚のチェックリストを実物で触る | 2026-10-19T21:15:00 → 2026-10-17T13:00:00 (-2d) | 2026-10-20T09:15:00 → 2026-10-17T15:00:00 (-3d) |
| チェックリストで出た直しの実装 | 2026-10-20T09:15:00 → 2026-10-17T15:00:00 (-3d) | 2026-10-20T14:15:00 → 2026-10-17T19:00:00 (-3d) |
| チェックリストの直しの GT-2 と push | 2026-10-20T14:15:00 → 2026-10-17T19:00:00 (-3d) | 2026-10-20T15:15:00 → 2026-10-17T20:00:00 (-3d) |
| W4(アダプタ層の分割)の前半 CR-578→579→580 の実装 | 2026-10-16T19:15:00 → 2026-10-17T13:00:00 (+1d) | 2026-10-17T14:15:00 → 2026-10-17T21:00:00 |
| W4 の後半(CR-581 の後半と properties-panel)の実装 | 2026-10-17T14:15:00 → 2026-10-17T21:00:00 | 2026-10-18T09:15:00 → 2026-10-18T05:00:00 |
| W5(異常系 DFC-586 ほか)の仕様 | 2026-10-18T09:15:00 → 2026-10-18T05:00:00 | 2026-10-18T19:15:00 → 2026-10-18T13:00:00 |
| W5(異常系 DFC-922 ほか)の実装と試験 | 2026-10-18T19:15:00 → 2026-10-18T13:00:00 | 2026-10-19T14:15:00 → 2026-10-18T21:00:00 (-1d) |
| CR-695(対話欄の廃止)の実装 | 2026-10-19T21:15:00 → 2026-10-17T13:00:00 (-2d) | 2026-10-20T16:15:00 → 2026-10-17T21:00:00 (-3d) |
| CR-697(取次が口と鍵を覚える)の実装 | 2026-10-19T21:15:00 → 2026-10-17T13:00:00 (-2d) | 2026-10-20T16:15:00 → 2026-10-17T21:00:00 (-3d) |
| DFC-2214・2215(AM-19 の説明)の仕様と実装 | 2026-10-19T21:15:00 → 2026-10-17T13:00:00 (-2d) | 2026-10-20T11:15:00 → 2026-10-17T17:00:00 (-3d) |
| 正式公開の判断(JDG-1740) | 2026-10-20T15:15:00 → 2026-10-19T06:45:00 (-1d) | 2026-10-20T15:15:00 → 2026-10-19T06:45:00 (-1d) |

## Version 3 (saved 2026-10-15)

Note of the change: Rewrite the project plan for the weekend priorities

Last finish 2026-10-19 → 2026-10-24 (+5d).

Added:

| Task | Start | Finish |
| --- | --- | --- |
| プロジェクト計画(project-plan)の更新と前の計画の重ね | 2026-10-15T07:12:00 | 2026-10-15T07:36:00 |
| CR-740(範囲選択中の下の絵の覚え置き)の実装 | 2026-10-15T04:13:00 | 2026-10-15T07:21:00 |
| CR-758(依存線とマーカーの干渉解消)の実装 | 2026-10-15T04:13:00 | 2026-10-15T07:58:00 |
| CR-757(全体日程のシフト)の実装 | 2026-10-15T05:58:00 | 2026-10-15T07:59:00 |
| CR-769〜771(英語の慣習)の調べ | 2026-10-15T06:15:00 | 2026-10-15T07:54:00 |
| CR-769〜771(英語の慣習)の起草と答えの記録 | 2026-10-15T07:54:00 | 2026-10-15T08:25:00 |
| CR-761(列のフィルタの一覧)の実装 | 2026-10-15T08:46:00 | 2026-10-15T11:04:00 |
| DFC-2765(変更前の輪郭が日に丸まる)の直し | 2026-10-15T08:25:00 | 2026-10-15T11:04:00 |
| CR-763(飛び先の輪のバラ色と角丸)の実装 | 2026-10-15T08:25:00 | 2026-10-15T11:04:00 |
| CR-759(修正案の表の語と推奨の一括採用)の実装 | 2026-10-15T08:25:00 | 2026-10-15T11:05:00 |
| CR-764(診断マーカーを押すとレポートの行)の実装 | 2026-10-15T11:05:00 | 2026-10-15T13:04:00 |
| CR-765(Agent API の呼び方の原稿)の実装 | 2026-10-15T11:05:00 | 2026-10-15T13:24:00 |
| CR-768(保存の媒体の型)の A・B の実装 | 2026-10-15T12:19:00 | 2026-10-15T13:26:00 |
| CR-754(日付の欄と設定パネル)の実装 | 2026-10-15T10:28:00 | 2026-10-15T13:55:00 |
| CR-766(文書の命令が運ぶ値の原稿)の実装 | 2026-10-15T12:19:00 | 2026-10-15T14:34:00 |
| CR-769(保存する名と連携の名の英語)の実装 | 2026-10-15T14:37:00 | 2026-10-15T16:06:00 |
| CR-770(画面の英語の語)の実装 | 2026-10-15T15:44:00 | 2026-10-15T17:23:00 |
| DFC-2309(開けないファイルの通知)の直し | 2026-10-15T16:06:00 | 2026-10-15T17:20:00 |
| CR-771(コードの公開名と配る物の名)の実装 | 2026-10-15T17:23:00 | 2026-10-15T23:57:00 |
| 裁定待ち 約 15 問(CR-754・759〜770・DFC-2880)への答え | 2026-10-15T22:30:00 | 2026-10-16T00:03:00 |
| 紹介頁(docs/about)の表紙の .md の仕様へのリンクと見本 | 2026-10-15T17:23:00 | 2026-10-15T23:57:00 |
| DFC-2880(出荷見本が開けない)の直し | 2026-10-15T17:23:00 | 2026-10-15T23:57:00 |
| CR-773(利用者が答えた 6 つの裁定)の実装 | 2026-10-16T00:01:00 | 2026-10-16T00:46:00 |
| CR-772(タスクグループを 1 回のドラッグで)の実装 | 2026-10-16T00:01:00 | 2026-10-16T03:52:00 |
| dist の作り直し | 2026-10-16T01:22:00 | 2026-10-16T01:44:00 |
| CR-774(深さの上限で問う)の起草と仕様の段 | 2026-10-16T03:57:00 | 2026-10-16T04:42:00 |
| 作業木の GT-2(MSPDI のスキーマを写して) | 2026-10-16T03:57:00 | 2026-10-16T05:00:00 |
| CR-774(深さの上限で問う)の仕様の段の合流 | 2026-10-16T04:42:00 | 2026-10-16T05:10:00 |
| 根の一括の GT-2(gate-queue の drain) | 2026-10-16T05:30:00 | 2026-10-16T06:30:00 |
| refactor と main へ push | 2026-10-16T06:30:00 | 2026-10-16T06:30:00 |
| Pages の配備 | 2026-10-16T06:30:00 | 2026-10-16T07:00:00 |
| 完了確認の残り 6 席の片付け | 2026-10-16T05:30:00 | 2026-10-16T06:00:00 |
| CR-774(深さの上限で問う)の実装 | 2026-10-16T05:30:00 | 2026-10-16T10:00:00 |
| CR-774(深さの上限で問う)の仕様だけを読む試験 | 2026-10-16T05:30:00 | 2026-10-16T10:00:00 |
| 紹介頁(docs/about)のタブ 05「拡張の試し」・@pure の注・DFC-2890/2891 | 2026-10-16T05:30:00 | 2026-10-16T10:00:00 |
| CR-774(深さの上限で問う)と紹介頁の合流 | 2026-10-16T10:00:00 | 2026-10-16T10:30:00 |
| 型の検査(tsc) | 2026-10-16T10:30:00 | 2026-10-16T10:45:00 |
| CR-774(深さの上限で問う)と紹介頁の入った先端の GT-2 | 2026-10-16T10:45:00 | 2026-10-16T12:00:00 |
| 性能の試験(PERF、GRS_PERF=1) | 2026-10-16T12:00:00 | 2026-10-16T13:00:00 |
| CR-774(深さの上限で問う)と紹介頁の push | 2026-10-16T13:00:00 | 2026-10-16T13:00:00 |
| CR-774(深さの上限で問う)と紹介頁の Pages の配備 | 2026-10-16T13:00:00 | 2026-10-16T13:30:00 |
| CR-774(深さの上限で問う)と紹介頁を見て tier B を選ぶ | 2026-10-16T21:00:00 | 2026-10-16T22:00:00 |
| JDG-2340(飛び先の輪の色)の直し | 2026-10-16T22:00:00 | 2026-10-17T00:00:00 |
| JDG-2361(命令の値 19 の名を列の名へ)の新しい CR の実装 | 2026-10-17T00:00:00 | 2026-10-17T01:30:00 |
| DFC-2912(箱を引いて離しても変わらない操作)の調べと直し | 2026-10-16T22:00:00 | 2026-10-17T00:00:00 |
| DFC-2700〜2702(CR-753 の残りの 3 点)の直し | 2026-10-17T00:00:00 | 2026-10-17T04:00:00 |
| DFC-2856(形の外れた命令の束を断る)の実装 | 2026-10-16T22:00:00 | 2026-10-17T02:00:00 |
| DFC-2903(PI-39 の消えた型)の直し | 2026-10-17T02:00:00 | 2026-10-17T04:00:00 |
| DFC-557(MSPDI の拒否が黙る)の直し | 2026-10-16T22:00:00 | 2026-10-17T02:00:00 |
| DFC-2870(実績期間の欄の幅)の直し | 2026-10-17T02:00:00 | 2026-10-17T04:00:00 |
| tier B の入った先端の GT-2 と push・Pages | 2026-10-17T04:00:00 | 2026-10-17T06:00:00 |
| 最後の GT-2 と push・予備 | 2026-10-18T18:00:00 | 2026-10-18T23:00:00 |
| α 版(10/19)のお披露目 | 2026-10-19T09:00:00 | 2026-10-19T09:00:00 |
| 週の使用量の戻り(水 19:00)と仕事の再開 | 2026-10-21T19:00:00 | 2026-10-21T19:00:00 |
| CR-768(保存の媒体の型)の C と CM-27 の注の実装 | 2026-10-22T06:30:00 | 2026-10-22T10:30:00 |
| CR-768(保存の媒体の型)の C の合流と確かめ | 2026-10-22T10:30:00 | 2026-10-22T11:00:00 |
| DFC-2911(コメントボックスの先端の吸い付き)の実装 | 2026-10-21T19:00:00 | 2026-10-22T03:00:00 |
| T-064(公開の名 約 479 の呼び出し形, DFC-2640)の書き起こしと再検討 | 2026-10-21T19:00:00 | 2026-10-22T07:00:00 |
| edgeOf(重複した関数)の 1 つへの寄せ | 2026-10-21T19:00:00 | 2026-10-21T21:00:00 |
| NOT_STORED_DUMMY_SIZES(手で持つ寸法)の生成への置き換え | 2026-10-21T21:00:00 | 2026-10-21T23:00:00 |
| baseChangeCommandOf(名の複数形)の言い直し | 2026-10-21T23:00:00 | 2026-10-22T01:00:00 |
| DFC-2646〜2648(STOP の仕分けで出た 3 行)の直し | 2026-10-22T03:00:00 | 2026-10-22T07:00:00 |
| 未検討 約 45 行(DFC-611・2560〜2569・2690〜2699 ほか)のトリアージ | 2026-10-22T07:00:00 | 2026-10-22T11:00:00 |
| 仕様待ちの残り(DFC-560・631・1063〜1073 ほか)の CR の起草 | 2026-10-21T19:00:00 | 2026-10-21T23:00:00 |
| 実装待ちの残り(DFC-464・532〜562 ほか)の実装 | 2026-10-22T15:00:00 | 2026-10-22T23:00:00 |
| 試験待ち 11 行(DFC-550・567・641 ほか)の仕様だけを読む試験 | 2026-10-22T01:00:00 | 2026-10-22T05:00:00 |
| tier C の入った一括の GT-2 と push | 2026-10-23T00:00:00 | 2026-10-23T02:00:00 |

Removed: CR-763/764・766・767(飛び先・命令の値・状態機械)の問いへの答え; CR-740(範囲選択中の下の絵の覚え置き)の性能の要求の試験; CR-758(依存線とマーカーの干渉解消)の実装の仕上げ; CR-757(全体日程のシフト)の仕様だけを読む試験; プロジェクト計画(project-plan)の更新; 英語の慣習の見直し(CR-769〜771)の調べ; CR-740(範囲選択中の下の絵の覚え置き)の合流と確かめ; CR-758(依存線とマーカーの干渉解消)の合流と確かめ; CR-757(全体日程のシフト)の合流と確かめ; CR-762(列の境目を引く幅の追従)の合流と確かめ; CR-759(修正案の表の語・推奨の一括採用・下の帯)の実装; CR-759(修正案の表の語と推奨の一括採用)の合流と確かめ; CR-760(表のステータスと種別の列)の合流と確かめ; CR-756(分単位のダミー実績)の合流と確かめ; CR-761(列のフィルタの一覧の並びと残す値)の実装; CR-761(列のフィルタの一覧)の合流と確かめ; CR-755(タイムゾーンの固定の時差と略称)の合流と確かめ; CR-754(日付の欄と設定パネルの幅・閉じる・折り返し)の実装; CR-754(日付の欄と設定パネル)の合流と確かめ; T-064(公開の名 約 479 の呼び方)の書き起こしと再検討; DFC-2645(手写し 13 か所)の生成への置き換え; CR-765(Agent API の 22 のメンバと呼び方の原稿)の実装; CR-765(Agent API の呼び方の原稿)の合流と確かめ; CR-763/764(飛び先のマーカーほか)の実装; CR-763/764(飛び先のマーカーほか)の合流と確かめ; CR-766(文書の命令 88 が運ぶ値の原稿)の実装; CR-766(文書の命令が運ぶ値の原稿)の合流と確かめ; CR-768(保存の媒体の型を表 T-024 へ)の実装; CR-768(保存の媒体の型)の合流と確かめ; 未検討 約 40 行(DFC-611・2560〜2569・2690〜2696 ほか)のトリアージ; 仕様待ち 約 18 行(DFC-560・631・1063〜1073 ほか)の CR の起草; 実装待ちの残り(DFC-464・532〜562 ほか約 30 行)の実装; 試験待ち 7 行(DFC-550・567・641 ほか)の仕様だけを読む試験; 英語の慣習の見直し(CR-769〜771)の起草; CR-769〜771(英語の慣習)の改名の実装; CR-769〜771(英語の慣習)の合流と確かめ; 一括の GT-2(非 AI の直しが全部入った sha); refactor と main へ push・Pages の配備; チェックリストの直しの GT-2 と push

Changed:

| Task | Start | Finish |
| --- | --- | --- |
| CR-763/764(飛び先のマーカーほか)の起草の仕上げ | 2026-10-15T22:00:00 → 2026-10-15T03:53:00 | 2026-10-16T00:00:00 → 2026-10-15T07:30:00 (-1d) |
| CR-756(分単位のダミー実績)の実装 | 2026-10-15T10:00:00 → 2026-10-15T08:09:00 | 2026-10-15T13:30:00 → 2026-10-15T11:04:00 |
| CR-755(タイムゾーンの固定の時差と略称)の実装 | 2026-10-15T09:30:00 → 2026-10-15T08:09:00 | 2026-10-15T19:00:00 → 2026-10-15T11:04:00 |
| CR-762(列の境目を引く幅の追従)の実装 | 2026-10-15T08:30:00 → 2026-10-15T08:25:00 | 2026-10-15T12:15:00 → 2026-10-15T11:04:00 |
| CR-760(表のステータスと種別の列)の実装 | 2026-10-15T21:30:00 → 2026-10-15T08:25:00 | 2026-10-16T04:15:00 → 2026-10-15T11:05:00 (-1d) |
| OneDrive を止める(利用者に頼む) | 2026-10-17T09:00:00 → 2026-10-16T06:45:00 (-1d) | 2026-10-17T09:00:00 → 2026-10-16T06:45:00 (-1d) |
| 1 枚のチェックリスト(user-checklist)の刷り直し | 2026-10-17T09:00:00 → 2026-10-17T06:00:00 | 2026-10-17T11:00:00 → 2026-10-17T07:00:00 |
| 1 枚のチェックリストを実物で触る | 2026-10-17T13:00:00 → 2026-10-17T09:00:00 | 2026-10-17T15:00:00 → 2026-10-17T11:00:00 |
| チェックリストで出た直しの実装 | 2026-10-17T15:00:00 → 2026-10-17T11:00:00 | 2026-10-17T19:00:00 → 2026-10-17T15:00:00 |
| CR-767(状態機械の原稿)の波 1 の実装 | 2026-10-16T08:00:00 → 2026-10-21T19:00:00 (+5d) | 2026-10-16T13:30:00 → 2026-10-22T00:30:00 (+6d) |
| CR-767(状態機械の原稿)の波 2 の実装 | 2026-10-16T13:30:00 → 2026-10-22T00:30:00 (+6d) | 2026-10-16T19:00:00 → 2026-10-22T06:00:00 (+6d) |
| CR-767(状態機械の原稿)の合流と確かめ | 2026-10-16T19:00:00 → 2026-10-22T06:00:00 (+6d) | 2026-10-16T19:30:00 → 2026-10-22T06:30:00 (+6d) |
| 古い STOP の印 16 件の除去 | 2026-10-16T00:00:00 → 2026-10-22T07:00:00 (+6d) | 2026-10-16T04:00:00 → 2026-10-22T11:00:00 (+6d) |
| トリアージで出た直しの実装 | 2026-10-16T14:30:00 → 2026-10-22T11:00:00 (+6d) | 2026-10-16T22:30:00 → 2026-10-22T19:00:00 (+6d) |
| 仕様待ちの残りの CR の実装 | 2026-10-16T08:00:00 → 2026-10-21T23:00:00 (+5d) | 2026-10-16T16:00:00 → 2026-10-22T07:00:00 (+6d) |
| 罠の束(DFC-544・547・548・549)の実装 | 2026-10-16T02:15:00 → 2026-10-22T11:00:00 (+6d) | 2026-10-16T06:15:00 → 2026-10-22T15:00:00 (+6d) |
| DFC-730(GP-1)の実装 | 2026-10-16T14:15:00 → 2026-10-22T07:00:00 (+6d) | 2026-10-16T16:15:00 → 2026-10-22T09:00:00 (+6d) |
| 用語集の JSON 化(DFC-2175)の仕様と実装 | 2026-10-16T15:45:00 → 2026-10-22T05:00:00 (+6d) | 2026-10-16T19:45:00 → 2026-10-22T09:00:00 (+6d) |
| 全部の合流と台帳の締め | 2026-10-17T08:00:00 → 2026-10-22T23:00:00 (+5d) | 2026-10-17T09:00:00 → 2026-10-23T00:00:00 (+6d) |
| W4(アダプタ層の分割)の前半 CR-578→579→580 の実装 | 2026-10-17T13:00:00 → 2026-10-23T02:00:00 (+6d) | 2026-10-17T21:00:00 → 2026-10-23T10:00:00 (+6d) |
| W4 の後半(CR-581 の後半と properties-panel)の実装 | 2026-10-17T21:00:00 → 2026-10-23T10:00:00 (+6d) | 2026-10-18T05:00:00 → 2026-10-23T18:00:00 (+5d) |
| W5(異常系 DFC-586 ほか)の仕様 | 2026-10-18T05:00:00 → 2026-10-23T18:00:00 (+5d) | 2026-10-18T13:00:00 → 2026-10-24T02:00:00 (+6d) |
| W5(異常系 DFC-922 ほか)の実装と試験 | 2026-10-18T13:00:00 → 2026-10-24T02:00:00 (+6d) | 2026-10-18T21:00:00 → 2026-10-24T10:00:00 (+6d) |
| W4・W5 の合流と GT-2・push | 2026-10-18T21:00:00 → 2026-10-24T10:00:00 (+6d) | 2026-10-18T23:00:00 → 2026-10-24T12:00:00 (+6d) |
| CR-695(対話欄の廃止)の実装 | 2026-10-17T13:00:00 → 2026-10-23T02:00:00 (+6d) | 2026-10-17T21:00:00 → 2026-10-23T10:00:00 (+6d) |
| CR-697(取次が口と鍵を覚える)の実装 | 2026-10-17T13:00:00 → 2026-10-23T02:00:00 (+6d) | 2026-10-17T21:00:00 → 2026-10-23T10:00:00 (+6d) |
| DFC-2214・2215(AM-19 の説明)の仕様と実装 | 2026-10-17T13:00:00 → 2026-10-23T02:00:00 (+6d) | 2026-10-17T17:00:00 → 2026-10-23T06:00:00 (+6d) |
| 正式公開の判断(JDG-1740) | 2026-10-19T06:45:00 → 2026-10-24T12:00:00 (+5d) | 2026-10-19T06:45:00 → 2026-10-24T12:00:00 (+5d) |
| AI 連携の合流と GT-2・push | 2026-10-18T23:00:00 → 2026-10-24T12:00:00 (+6d) | 2026-10-19T01:00:00 → 2026-10-24T14:00:00 (+5d) |
| 計画の終わり | 2026-10-19T06:45:00 → 2026-10-24T14:00:00 (+5d) | 2026-10-19T06:45:00 → 2026-10-24T14:00:00 (+5d) |

## Version 4 (saved 2026-10-16)

Note of the change: Record the 05:20 usage reading in both plan files

Last finish stays 2026-10-24.

Added:

| Task | Start | Finish |
| --- | --- | --- |
| 根の一括の GT-2 と push | 2026-10-16T05:00:00 | 2026-10-16T05:35:00 |
| CR-774(深さの上限で問う)と紹介頁の入った先端の GT-2 と push | 2026-10-16T06:40:00 | 2026-10-16T07:15:00 |
| CR-775(Alt の寄せは離した時点で読む, DFC-2700〜2702)の実装 | 2026-10-16T07:25:00 | 2026-10-16T08:55:00 |
| CR-776(命令の値 19 を列の名へ, JDG-2361)の実装 | 2026-10-16T07:25:00 | 2026-10-16T08:55:00 |
| CR-777(コメントボックスの線先の吸い付き, DFC-2911)の実装 | 2026-10-16T07:25:00 | 2026-10-16T08:55:00 |
| CR-778(PI-39 の消えた型, DFC-2903)の実装 | 2026-10-16T07:25:00 | 2026-10-16T08:55:00 |
| CR-780(変えなかった書き込みは未保存を立てない, FR-100)の実装 | 2026-10-16T18:35:00 | 2026-10-16T20:20:00 |
| DFC-2909(深さの上限は命令ごとに測る)の直し | 2026-10-16T18:35:00 | 2026-10-16T20:20:00 |
| CR-781(窓が開いているときの遅延診断は窓だけを閉じる)の実装 | 2026-10-16T18:35:00 | 2026-10-16T20:20:00 |
| CR-780・781(未保存と遅延診断の窓)と DFC-2909 の入った先端の GT-2 と push | 2026-10-16T20:20:00 | 2026-10-16T20:45:00 |
| 1 枚のチェックリストへ CR-780(未保存)の 5 節・CR-781・DFC-2909 の行を足す | 2026-10-16T20:20:00 | 2026-10-16T20:45:00 |
| DFC-2950(CR-777 が上げ忘れた形式の版を上げる)の直しと push | 2026-10-16T20:52:00 | 2026-10-16T22:30:00 |
| 1 枚のチェックリストを実物で触って報告する | 2026-10-16T21:00:00 | 2026-10-17T01:00:00 |
| 1 枚のチェックリストの 5〜14 行の Playwright での確かめ | 2026-10-16T22:30:00 | 2026-10-17T01:00:00 |
| DFC-2870(実績期間の欄の幅)の直し直しと CR-783(時の段で引いて作る)の実装 | 2026-10-16T22:08:00 | 2026-10-17T04:47:00 |
| CR-782(コメントボックスの線先が出てパネルが文字を受ける)の実装 | 2026-10-16T22:08:00 | 2026-10-17T04:59:00 |
| 規則 04 の 7 節と test_route(合流の後に試験を選ぶ, JDG-2419) | 2026-10-17T01:00:00 | 2026-10-17T04:00:00 |
| 利用者の報告(DFC-2960〜2973・JDG-2460〜2475)の仕分け | 2026-10-17T04:00:00 | 2026-10-17T05:18:00 |
| 席 1・3(DFC-2870・CR-783・CR-782)の合流 | 2026-10-17T05:30:00 | 2026-10-17T06:00:00 |
| test_route が選ぶ試験(PERF・e2e・探り針) | 2026-10-17T06:00:00 | 2026-10-17T07:00:00 |
| 席 1・3 の入った先端の GT-2 と push | 2026-10-17T07:00:00 | 2026-10-17T09:00:00 |
| 不具合の聞き取り(実績を入力する UI が変になった) | 2026-10-17T05:30:00 | 2026-10-17T07:30:00 |
| 聞き取りで出た不具合(実績を入力する UI)の直し | 2026-10-17T07:30:00 | 2026-10-17T11:30:00 |
| 残りの行(未確認 2 行と DFC-2870)を実物で確かめる | 2026-10-17T09:00:00 | 2026-10-17T10:00:00 |
| DFC-2960・2961(タスクグループを運ぶ手掛かり, 束 A)の実装 | 2026-10-17T06:00:00 | 2026-10-17T10:00:00 |
| DFC-2962〜2965・2970(パネルの幅と設定の語, 束 B)の実装 | 2026-10-17T06:00:00 | 2026-10-17T14:00:00 |
| DFC-2972(担当の欄, 束 C)の実装 | 2026-10-17T14:00:00 | 2026-10-17T22:00:00 |
| DFC-2973・2968(最前面に配置, 束 D)の実装 | 2026-10-17T06:00:00 | 2026-10-17T10:00:00 |
| DFC-2966・2967・2969(文書の形と実績の表, 束 E)の仕様と実装 | 2026-10-17T06:00:00 | 2026-10-17T10:00:00 |
| DFC-2971(パネルの値の全点, 束 F)の試験 | 2026-10-17T22:00:00 | 2026-10-18T06:00:00 |
| 最後の GT-2 と push | 2026-10-18T06:00:00 | 2026-10-18T08:00:00 |

Removed: OneDrive を止める(利用者に頼む); 根の一括の GT-2(gate-queue の drain); refactor と main へ push; Pages の配備; 完了確認の残り 6 席の片付け; CR-774(深さの上限で問う)と紹介頁の合流; 型の検査(tsc); CR-774(深さの上限で問う)と紹介頁の入った先端の GT-2; 性能の試験(PERF、GRS_PERF=1); CR-774(深さの上限で問う)と紹介頁の push; CR-774(深さの上限で問う)と紹介頁の Pages の配備; JDG-2340(飛び先の輪の色)の直し; JDG-2361(命令の値 19 の名を列の名へ)の新しい CR の実装; DFC-2700〜2702(CR-753 の残りの 3 点)の直し; DFC-2903(PI-39 の消えた型)の直し; 1 枚のチェックリスト(user-checklist)の刷り直し; 1 枚のチェックリストを実物で触る; チェックリストで出た直しの実装; 最後の GT-2 と push・予備; DFC-2911(コメントボックスの先端の吸い付き)の実装

Changed:

| Task | Start | Finish |
| --- | --- | --- |
| 紹介頁(docs/about)のタブ 05「拡張の試し」・@pure の注・DFC-2890/2891 |  | 2026-10-16T10:00:00 → 2026-10-16T05:42:00 |
| CR-774(深さの上限で問う)の実装 |  | 2026-10-16T10:00:00 → 2026-10-16T06:40:00 |
| CR-774(深さの上限で問う)の仕様だけを読む試験 |  | 2026-10-16T10:00:00 → 2026-10-16T06:06:00 |
| CR-774(深さの上限で問う)と紹介頁を見て tier B を選ぶ | 2026-10-16T21:00:00 → 2026-10-16T07:15:00 | 2026-10-16T22:00:00 → 2026-10-16T07:25:00 |
| DFC-2870(実績期間の欄の幅)の直し | 2026-10-17T02:00:00 → 2026-10-16T07:25:00 (-1d) | 2026-10-17T04:00:00 → 2026-10-16T08:55:00 (-1d) |
| DFC-2912(箱を引いて離しても変わらない操作)の調べと直し | 2026-10-16T22:00:00 → 2026-10-16T07:25:00 | 2026-10-17T00:00:00 → 2026-10-16T08:55:00 (-1d) |
| DFC-557(MSPDI の拒否が黙る)の直し | 2026-10-16T22:00:00 → 2026-10-16T07:25:00 | 2026-10-17T02:00:00 → 2026-10-16T08:55:00 (-1d) |
| DFC-2856(形の外れた命令の束を断る)の実装 | 2026-10-16T22:00:00 → 2026-10-16T07:25:00 | 2026-10-17T02:00:00 → 2026-10-16T08:55:00 (-1d) |
| tier B の入った先端の GT-2 と push・Pages | 2026-10-17T04:00:00 → 2026-10-16T08:55:00 (-1d) | 2026-10-17T06:00:00 → 2026-10-16T18:35:00 (-1d) |
| DFC-2646〜2648(STOP の仕分けで出た 3 行)の直し | 2026-10-22T03:00:00 → 2026-10-21T19:00:00 (-1d) | 2026-10-22T07:00:00 → 2026-10-21T23:00:00 (-1d) |
| 未検討 約 45 行(DFC-611・2560〜2569・2690〜2699 ほか)のトリアージ | 2026-10-22T07:00:00 → 2026-10-21T23:00:00 (-1d) | 2026-10-22T11:00:00 → 2026-10-22T03:00:00 |
| トリアージで出た直しの実装 | 2026-10-22T11:00:00 → 2026-10-22T03:00:00 | 2026-10-22T19:00:00 → 2026-10-22T11:00:00 |
