How a schedule from an exported table changed from version to version. A marks actual dates.

## Version 1 (saved 2026-10-22)

Note of the change: Merge the re-drawn beta plan and rulings JDG-3043..3047

| Task | Start | Finish |
| --- | --- | --- |
| 席 1・3(DFC-2870・CR-783・CR-782)の合流 | 2026-10-17T05:30:00 | 2026-10-17T08:28:00 |
| 不具合の聞き取り(実績を入力する UI) | 2026-10-17T05:30:00 | 2026-10-17T09:15:00 |
| CR-789(タスクグループを運ぶ手掛かり, 束 A)の実装 | 2026-10-17T06:00:00 | 2026-10-17T12:44:00 |
| CR-787(パネルの幅, 束 B)の実装 | 2026-10-17T06:00:00 | 2026-10-17T11:48:00 |
| CR-786(最前面に配置, 束 D)の実装 | 2026-10-17T06:00:00 | 2026-10-17T10:50:00 |
| 聞き取りで出た不具合(DFC-2980)の直し | 2026-10-17T09:16:00 | 2026-10-17T10:24:00 |
| CR-784(進行中の印を (→) に)の適用 | 2026-10-17T09:16:00 | 2026-10-17T10:24:00 |
| CR-785(ヘルプのリンクと行, DFC-3000〜3006)の適用 | 2026-10-17T09:43:00 | 2026-10-17T13:14:00 |
| CR-788(担当の欄, 束 C)の実装 | 2026-10-17T11:48:00 | 2026-10-17T12:36:00 |
| GT-2 の赤の直し(CR-782・785・787・788) | 2026-10-17T13:20:00 | 2026-10-17T15:06:00 |
| α のチェックリストの行を出荷ビルドで確かめる | 2026-10-17T15:06:00 | 2026-10-17T18:57:00 |
| 打鍵が欄から漏れる件(DFC-3100〜3103)の掃きと直し | 2026-10-17T18:57:00 | 2026-10-17T19:51:00 |
| CR-790(大きな見本の矛盾を減らす)の適用 | 2026-10-17T19:51:00 | 2026-10-17T21:13:00 |
| CR-791(取次の説明とスキーマの資源)の適用 | 2026-10-17T20:45:00 | 2026-10-18T02:52:00 |
| α 前の段ごとの GT-2 と push(ab1e1a3c・f1a0ec6d・815ecba8・0829239a) | 2026-10-17T21:13:00 | 2026-10-18T03:16:00 |
| CR-793・794(タスクのツールチップ)の適用 | 2026-10-17T21:13:00 | 2026-10-17T22:44:00 |
| CR-792(改名 14 件と状態の語)の段 0〜2 | 2026-10-17T21:53:00 | 2026-10-18T02:13:00 |
| RS-61 の語とダウンロード頁の語(DFC-3280) | 2026-10-18T05:29:00 | 2026-10-18T06:06:00 |
| CR-795・797(遅延診断の詰み・自分で走り直さない)の適用 | 2026-10-18T06:58:00 | 2026-10-18T08:27:00 |
| CR-796(GRS Relay の 7 片)の適用 | 2026-10-18T08:27:00 | 2026-10-18T13:11:00 |
| CR-695(対話欄の廃止)—— CR-796 の 6 片目が当てた | 2026-10-18T11:08:00 | 2026-10-18T12:08:00 |
| DFC-3302(検索窓の IME)と CR-798〜802(チェック列・スキーマの部分読み) | 2026-10-18T17:06:00 | 2026-10-18T20:48:00 |
| サーバー同期のデモ(DFC-3070・3071)の組み立てと紹介頁 05 | 2026-10-18T22:19:00 | 2026-10-19T00:35:00 |
| 実地の利用の中継の直し(CR-803〜810) | 2026-10-19T07:56:00 | 2026-10-19T09:19:00 |
| コメントボックスの字の大きさ(CR-809・811・812) | 2026-10-19T08:59:00 | 2026-10-19T10:07:00 |
| CR-813 の 1 片目(修正の記録の .tsv・語の改め) | 2026-10-19T10:03:00 | 2026-10-19T10:20:00 |
| CR-814・816・817(AI の修正の記録・見出しの箱・説明の追従)の適用 | 2026-10-19T10:57:00 | 2026-10-19T11:25:00 |
| α の GT-2(34d6ee84、赤 3 件を残して出した)と push | 2026-10-19T11:25:00 | 2026-10-19T12:13:00 |
| α 版のリリース(Alpha-20261019T022508Z) | 2026-10-19T11:25:00 | 2026-10-19T11:25:00 |
| main への push を止める仕組み(JDG-2930〜2934) | 2026-10-20T03:30:00 | 2026-10-20T04:09:00 |
| CR-819(studies/ への改名)・develop への改名・README・SECURITY | 2026-10-20T04:09:00 | 2026-10-20T05:03:00 |
| α のリリースノート(英日)と紹介頁の更新(JDG-2960・2961) | 2026-10-20T05:03:00 | 2026-10-20T05:59:00 |
| CR-820(配る物の版とバイト列を中身が変わるまで保つ)の適用 | 2026-10-20T05:59:00 | 2026-10-20T06:33:00 |
| CR-821(済んだ記録を history/ へ)の適用 | 2026-10-20T06:33:00 | 2026-10-20T06:41:00 |
| CR-822(版の規則を 1 つの表へ)の適用 | 2026-10-20T06:41:00 | 2026-10-20T07:39:00 |
| 不具合 2 件・改善 3 件の記録と β に向けた計画の書き直し(記録と計画の子セッション) | 2026-10-20T23:20:00 | 2026-10-22T05:46:00 |
| 週の使用量の戻り(10-21 水 19:00)と仕事の再開(10-22 木 08:15、第 1 波) | 2026-10-22T08:15:00 | 2026-10-22T08:15:00 |
| 第 1 波の合流と GT-2(赤 3 件が消えたか)・develop へ push | 2026-10-22T12:15:00 | 2026-10-22T15:15:00 |
| 第 2 波 W1〜W4 の合流と GT-2(中継の版の上げは 1 回) | 2026-10-24T03:00:00 | 2026-10-24T06:00:00 |
| 第 2 波の後の基準線の下げ(G1・G3)と GT-2(D1・D7 を外す) | 2026-10-24T18:00:00 | 2026-10-24T21:00:00 |
| CR-767(状態機械の原稿)の合流と確かめ | 2026-10-25T09:00:00 | 2026-10-25T10:00:00 |
| CR-768(保存の媒体の型)の C の合流と確かめ | 2026-10-25T14:00:00 | 2026-10-25T15:00:00 |
| 週の使用量の戻り(10-28 水 19:00) | 2026-10-28T19:00:00 | 2026-10-28T19:00:00 |
| 片付けの合流と台帳の締め | 2026-10-30T07:00:00 | 2026-10-30T09:00:00 |
| W4・W5 の合流と GT-2・push | 2026-10-31T03:00:00 | 2026-10-31T06:00:00 |
| 片付けの入った一括の GT-2 と push | 2026-10-31T06:00:00 | 2026-10-31T09:00:00 |
| PERF の測り(OneDrive を止めて) | 2026-11-01T09:00:00 | 2026-11-01T11:00:00 |
| 不具合の合流と GT-2・push | 2026-11-04T19:00:00 | 2026-11-04T22:00:00 |
| 週の使用量の戻り(11-04 水 19:00) | 2026-11-04T19:00:00 | 2026-11-04T19:00:00 |
| AI 連携の合流と GT-2・push | 2026-11-05T19:00:00 | 2026-11-05T22:00:00 |
| 新機能の合流と GT-2・push | 2026-11-06T11:00:00 | 2026-11-06T14:00:00 |
| 最後の合流と PERF・GT-2(重い試験は 1 回だけ) | 2026-11-07T21:00:00 | 2026-11-08T03:00:00 |
| node tools/release_version.mjs Beta・リリースノート(英日)・README の版の行 | 2026-11-08T03:00:00 | 2026-11-08T07:00:00 |
| リリースの sha の GT-2 と develop → main の PR | 2026-11-08T07:00:00 | 2026-11-08T10:00:00 |
| Pages の配備(gh workflow run pages.yml --ref main) | 2026-11-08T11:00:00 | 2026-11-08T12:00:00 |
| 計画の終わり | 2026-11-08T13:00:00 | 2026-11-08T13:00:00 |
| 遅延診断の ? と炎の裁定(DFC-3390: 基準日より後を開始で読むか・壁の件数も外すか)に答える | 2026-10-22T21:00:00 | 2026-10-22T22:00:00 |
| ハイパーリンク(MSPDI に写すか・コメントのアイコンの置き場)とダークの色の導き方(JDG-326 の ② を覆す)に答える | 2026-10-22T22:00:00 | 2026-10-22T23:00:00 |
| DFC-3397(左端に出す名前と札)の細部の協議に答える | 2026-10-22T23:00:00 | 2026-10-23T00:00:00 |
| DFC-3392・3395(プロンプトの写し方・保存の確認の文)の裁定に答える | 2026-10-23T00:00:00 | 2026-10-23T01:00:00 |
| 見本の Developer C の重なり(C7, AS-8 のためのわざと)と pages.yml の起動(E17)の裁定に答える | 2026-10-23T06:45:00 | 2026-10-23T07:15:00 |
| 憲章の下書き(temp/charter-draft/CHARTER-ja.md)を直す | 2026-10-23T21:00:00 | 2026-10-23T23:00:00 |
| 取次からページのアドレスを得る直し(DFC-3400・3401)の案 B1〜B6 に答える | 2026-10-27T21:00:00 | 2026-10-27T22:00:00 |
| DFC-3410(名前付きのフィルタの条件)の細部に答える | 2026-10-31T11:00:00 | 2026-10-31T12:00:00 |
| チェックリストを実物で触る | 2026-11-07T09:00:00 | 2026-11-07T13:00:00 |
| PR を見て main へ合流する | 2026-11-08T10:00:00 | 2026-11-08T11:00:00 |
| Beta のタグを打ち、GitHub Release を作る | 2026-11-08T12:00:00 | 2026-11-08T13:00:00 |
| β 版のリリース(条件: β に入れた仕事が全部済み、GT-2 と PERF が通る。目安 11-09 09:00) | 2026-11-08T13:00:00 | 2026-11-08T13:00:00 |
| β への計画の引き直しと利用者の答え 5 つの記録(JDG-3043〜3047) | 2026-10-22T08:15:00 | 2026-10-22T11:15:00 |
| 読むだけの棚卸し(仕様・_source・_asset・コード・試験・道具の 6 つの所を数える) | 2026-10-22T08:15:00 | 2026-10-22T08:39:00 |

| Task | Start | Finish |
| --- | --- | --- |
| GT-2 の赤 ③ uc-008:76(コメントのダブルクリックで PR-21 に焦点が入らない)の調べと直し | 2026-10-22T08:15:00 | 2026-10-22T12:15:00 |
| GT-2 の赤 ① nfr-004 SWS-8(.tsv の IO-9 を押す探り)を足す | 2026-10-22T08:15:00 | 2026-10-22T10:15:00 |
| GT-2 の赤 ② w3-t2(FR-135 の古い引用)を直す | 2026-10-22T10:15:00 | 2026-10-22T12:15:00 |
| 紹介頁・ダウンロード頁・デモの頁の語の直し(データだけ) | 2026-10-22T08:15:00 | 2026-10-22T12:15:00 |
| 意図しない圧縮への備え(85% の知らせ・セッション台帳・引継書の検査・呼び名の統一)の仕組みと試し | 2026-10-22T08:15:00 | 2026-10-22T16:15:00 |
| 利用者の裁定が要る 6 件(DFC-3390・3392・3393・3394・3395・3397)を 1 問ずつ問う | 2026-10-22T08:15:00 | 2026-10-22T10:15:00 |
| 裁定 6 件の答えの記録(JDG の行と台帳) | 2026-10-23T01:00:00 | 2026-10-23T03:00:00 |
| 合流済みの作業木の掃除(第 1 波の後半) | 2026-10-22T15:15:00 | 2026-10-22T17:15:00 |
| プロジェクト憲章(利用者が直した CHARTER-ja.md から)の仕上げ | 2026-10-23T23:00:00 | 2026-10-24T03:00:00 |
| W1 仕様と _source／_assets の掃除(棚卸しの A・B の行、C3 の仕様の側 PI-9) | 2026-10-23T03:00:00 | 2026-10-23T15:00:00 |
| edgeOf と baselineEdgeXOf(重複した関数, C1)の 1 つへの寄せ | 2026-10-23T03:00:00 | 2026-10-23T03:30:00 |
| NOT_STORED_DUMMY_SIZES(生成済みの寸法, C2・E28)の読まれない写しと古い注の始末 | 2026-10-23T03:30:00 | 2026-10-23T04:00:00 |
| 衛生の小物(PlanActualState の中の語の 2 組, C8)の揃え | 2026-10-23T04:00:00 | 2026-10-23T06:00:00 |
| 古い STOP の印 15 件(DFC-2730, C9)の除去 | 2026-10-23T06:00:00 | 2026-10-23T08:00:00 |
| W2 src の掃除(棚卸しの C4・C10・C15・E15・E16 ほか) | 2026-10-23T08:00:00 | 2026-10-24T01:00:00 |
| baseChangeCommandOf(名の複数形, C3)の言い直し —— W1 で仕様 PI-9 の名を直した後 | 2026-10-24T01:00:00 | 2026-10-24T03:00:00 |
| W3 試験の掃除(棚卸しの D の行と G2) | 2026-10-23T03:00:00 | 2026-10-23T15:00:00 |
| W4 道具と目録の掃除(棚卸しの E の行・09-tools.md・About の版の形) | 2026-10-23T03:00:00 | 2026-10-23T15:00:00 |
| DFC-2646〜2648(STOP の仕分けで出た 3 行)の始末 —— 2647 の刈り取り(F3) | 2026-10-24T06:00:00 | 2026-10-24T06:30:00 |
| W5 台帳と記録の掃除(棚卸しの F の行。古い STOP の台帳 F2 は W2 の後) | 2026-10-24T06:30:00 | 2026-10-24T18:00:00 |
| T-064(公開の名 約 479 の呼び出し形, DFC-2640)の書き起こしと再検討 | 2026-10-24T21:00:00 | 2026-10-25T09:00:00 |
| src の写しの畳み込み(C14・G13・F11・F12・F17) | 2026-10-28T19:00:00 | 2026-10-29T07:00:00 |
| 罠の束(DFC-544・547・548・549)の実装 | 2026-10-29T07:00:00 | 2026-10-29T15:00:00 |
| 実装待ちの残り(DFC-464・532〜562・582・630 ほか 35 行)の実装 | 2026-10-29T15:00:00 | 2026-10-30T07:00:00 |
| 予定の日が 1 日前へずれる疑い(初見 AI の試験の子セッションの報告)の再現と直し | 2026-10-31T09:00:00 | 2026-10-31T17:00:00 |
| 依存線の縦の部分が重なる(O-1)の直し | 2026-10-31T17:00:00 | 2026-10-31T21:00:00 |
| DFC-3396(.html に保存して開くと表示の状態が違う)の再現と直し | 2026-10-31T21:00:00 | 2026-11-01T01:00:00 |
| 食い違う写しの畳み込みと px の比べ方の揃え(F4 DFC-2646・F9 DFC-630)の CR の起草と当て | 2026-11-01T01:00:00 | 2026-11-01T09:00:00 |
| CR-813 の 2 片目(遅延診断レポートの親子関係のタブ, DFC-3358)の当て | 2026-11-04T19:00:00 | 2026-11-05T07:00:00 |
| CR-697(取次が口と鍵を覚える)の起草と当て | 2026-11-05T07:00:00 | 2026-11-05T11:00:00 |
| DFC-3410(名前付きのフィルタの条件)の仕様と実装 | 2026-11-05T11:00:00 | 2026-11-06T03:00:00 |
| 実測待ちの行を出荷ビルドで押す(1/3: 日程表・パネル・ドラッグ) | 2026-11-06T14:00:00 | 2026-11-07T02:00:00 |
| チェックリストで出た直し(仮置き) | 2026-11-07T13:00:00 | 2026-11-07T21:00:00 |
| CR-767(状態機械の原稿)の波 1 の実装 | 2026-10-24T21:00:00 | 2026-10-25T03:00:00 |
| CR-767(状態機械の原稿)の波 2 の実装 | 2026-10-25T03:00:00 | 2026-10-25T09:00:00 |
| CR-768(保存の媒体の型)の C と CM-27 の注の実装 | 2026-10-25T10:00:00 | 2026-10-25T14:00:00 |
| W4(アダプタ層の分割)の前半 CR-578→579→580 の実装(偶然の写し DFC-1071〜1073) | 2026-10-28T19:00:00 | 2026-10-29T11:00:00 |
| W4 の後半(CR-581 の後半と properties-panel、DFC-1074・1075)の実装 | 2026-10-29T11:00:00 | 2026-10-30T03:00:00 |
| W5(異常系 DFC-586 ほか)の仕様 | 2026-10-30T03:00:00 | 2026-10-30T11:00:00 |
| W5(異常系)の実装と試験 —— 既知の赤 cr-586-iv-22 の 2 件(DFC-922)を緑に | 2026-10-30T11:00:00 | 2026-10-31T03:00:00 |
| DFC-3393・3394(ハイパーリンク・ダークの任意色)の CR の起草 | 2026-10-31T03:00:00 | 2026-10-31T07:00:00 |
| DFC-3410(フィルタの条件に名前を付けて GRS JSON に幾つも保存する)の CR の起草 | 2026-10-31T07:00:00 | 2026-10-31T11:00:00 |
| ハイパーリンクとダークの任意色の仕様と実装 | 2026-10-31T11:00:00 | 2026-11-01T03:00:00 |
| DFC-3397(横に拡大して両端が外に出たタスクの名前を左端に出す)の CR の起草 | 2026-11-01T03:00:00 | 2026-11-01T07:00:00 |
| DFC-3397(左端に出す名前と札)の仕様と実装 | 2026-11-01T07:00:00 | 2026-11-01T15:00:00 |
| 利用者のチェックリスト 1 枚(今日の 5 件・新機能・押せなかった行) | 2026-11-07T02:00:00 | 2026-11-07T06:00:00 |
| 試験待ち 23 行(DFC-550・567・641 ほか)の仕様だけを読む試験 | 2026-10-24T21:00:00 | 2026-10-25T05:00:00 |
| 長い関数とファイルを割る(C19・F13、07 R2 の設計の判断) | 2026-10-25T05:00:00 | 2026-10-25T17:00:00 |
| 試験の補助の写しの共通化(D14・D15) | 2026-10-28T19:00:00 | 2026-10-29T07:00:00 |
| 用語集の JSON 化(DFC-2175、7 表 382 行)の仕様と実装 | 2026-10-29T07:00:00 | 2026-10-29T19:00:00 |
| DFC-3390(基準日より後のタスクの ? と炎)の CR の起草と当て | 2026-10-31T09:00:00 | 2026-10-31T17:00:00 |
| 取次から AI がページのアドレスを得る恒久の直し(DFC-3400・3401: B1〜B6 を決めてから CR) | 2026-10-31T17:00:00 | 2026-11-01T01:00:00 |
| ポインタの当たり判定(予定と依存線の優先順位)の見直し —— 見本と Playwright の掃き | 2026-11-01T01:00:00 | 2026-11-01T09:00:00 |
| 既定値の選び直しと公開スキーマの $id・比率の数(A10・B5・B10・F27)の CR の起草と当て | 2026-11-01T09:00:00 | 2026-11-01T17:00:00 |
| 中継の所見の残り(R5: 4・8・9・10・11・14・17・20・24)の当て | 2026-11-04T19:00:00 | 2026-11-05T07:00:00 |
| 中継の所見の「低」8 件(13・16・17・18・19・20・23・25) | 2026-11-05T07:00:00 | 2026-11-05T15:00:00 |
| DFC-2214・2215(AI が読む遅延診断にイナズマ線の頂点・読み方)の仕様と実装 | 2026-11-05T15:00:00 | 2026-11-05T19:00:00 |
| ハイパーリンクとダークの任意色の仕様だけを読む試験(別のサブエージェント) | 2026-11-05T19:00:00 | 2026-11-06T03:00:00 |
| 未検討 72 行(DFC-611・2560〜2569・2690〜2699・2770 ほか)のトリアージ | 2026-10-24T21:00:00 | 2026-10-25T05:00:00 |
| 道具の補助の写しの共通化(E20〜E22) | 2026-10-25T05:00:00 | 2026-10-25T17:00:00 |
| トリアージで出た直しの実装 | 2026-10-28T19:00:00 | 2026-10-29T11:00:00 |
| DFC-3391・3392(プロンプトは本文だけ写し、スキーマは自動で保存)の CR の起草と当て | 2026-10-31T09:00:00 | 2026-10-31T17:00:00 |
| 日付の範囲(S-119/S-120 と MS Project の 1984〜2149)・DFC-3003(ライセンスの窓) | 2026-10-31T17:00:00 | 2026-10-31T21:00:00 |
| DFC-3395(保存の確認がサイトの名を出し、通信するように読める)の調べと対応の案 | 2026-10-31T21:00:00 | 2026-10-31T23:00:00 |
| uid の最高水位と「行」と「タスクグループ」(F10 DFC-1066・F25 DFC-2174)の CR の起草と当て | 2026-10-31T23:00:00 | 2026-11-01T07:00:00 |
| CR-815(絞った表を AI が選んだ列でページに分けて読む)の当て | 2026-11-01T07:00:00 | 2026-11-01T19:00:00 |
| 接続が黙って切れる件(DFC-3340〜3342: ping・ページの下書き)の当て | 2026-11-04T19:00:00 | 2026-11-05T07:00:00 |
| DFC-3397(左端に出す名前と札)の仕様だけを読む試験(別のサブエージェント) | 2026-11-05T07:00:00 | 2026-11-05T11:00:00 |
| 実測待ちの行を出荷ビルドで押す(2/3: 遅延診断・表・検索) | 2026-11-06T14:00:00 | 2026-11-07T02:00:00 |
| サーバー同期のデモの仕上げ(DFC-3070・3071 の状態を測り直し、配る zip で試す) | 2026-10-22T12:15:00 | 2026-10-22T16:15:00 |

| Task | Start | Finish |
| --- | --- | --- |
| 仕様待ち 31 行の残り(DFC-560・631・1063〜1073 ほか)の CR の起草 | 2026-10-24T21:00:00 | 2026-10-25T01:00:00 |
| 仕様待ちの残りの CR の実装 | 2026-10-25T01:00:00 | 2026-10-25T17:00:00 |
| DFC-730(GP-1 編集権限の行は読み取り専用)の実装 | 2026-10-28T19:00:00 | 2026-10-28T23:00:00 |
| DFC-2966・2967・2969(文書の形と実績の組み合わせの表, 束 E)の仕様と実装 | 2026-10-28T23:00:00 | 2026-10-29T07:00:00 |
| 性能の赤の切り分け —— 前の版との交互の比べ(JDG-726)と GR-28・MK-1 のプロファイル | 2026-10-31T09:00:00 | 2026-10-31T17:00:00 |
| 重い処理の直し(最も遅い GR-28 から) | 2026-10-31T17:00:00 | 2026-11-01T09:00:00 |
| DFC-3410(名前付きのフィルタの条件)の仕様だけを読む試験(別のサブエージェント) | 2026-11-06T03:00:00 | 2026-11-06T11:00:00 |
| 実測待ちの行を出荷ビルドで押す(3/3: ファイル・書き出し・AI 連携) | 2026-11-06T14:00:00 | 2026-11-07T02:00:00 |

## Version 2 (saved 2026-10-23)

Note of the change: Merge the plan actuals and handoff update to ee5b5afb8

Last finish 2026-11-08 → 2026-11-04 (-4d).

Added:

| Task | Start | Finish |
| --- | --- | --- |
| 子セッション 1・3(DFC-2870・CR-783・CR-782)の合流 | 2026-10-17T05:30:00 | 2026-10-17T08:28:00 |
| 第 2 波の後の基準線の下げ(G1・G3、検査 5 つ)と develop へ push —— D1・D7 を外すのは 275 へ分けた | 2026-10-23T05:50:00 | 2026-10-23T05:59:00 |
| 裁定 5 行の記録と当て 3 つ(CR-825 ほか)の合流と push | 2026-10-23T06:42:00 | 2026-10-23T08:25:00 |
| known-red の揺れる 4 行(D1)と時間切れの延ばし(D7)を外し、GT-2 が時間切れ 0 で通るのを確かめる | 2026-10-24T05:56:00 | 2026-10-24T08:56:00 |
| 不具合の残り(235・268〜270)の合流と GT-2・push | 2026-10-24T19:57:00 | 2026-10-24T22:57:00 |
| 裁定 5 行(DFC-3430 端の日・DFC-3433 C7 の Developer C・DFC-3453 E17 の pages.yml・DFC-3456 時間切れ・PND-144)に答える | 2026-10-23T06:14:00 | 2026-10-23T06:41:00 |
| 合流済みの作業木の掃除の残り 23 本(自動の判定に断られて止めた分) | 2026-10-24T05:27:00 | 2026-10-24T05:57:00 |
| 裁定 5 行(DFC-3430・3433・3453・3456・PND-144)を 1 問ずつ問う | 2026-10-23T06:14:00 | 2026-10-23T06:41:00 |
| 裁定 5 行の答えの記録(JDG の行と台帳) | 2026-10-23T06:14:00 | 2026-10-23T06:41:00 |
| 計画の予実の更新(実績の測り直しと、まだの仕事の組み直し) | 2026-10-23T06:21:00 | 2026-10-23T06:40:00 |
| cr-811 の 2 枚の絵の比べが GT-2 の負荷で揺れる件(DFC-3467)—— 時計を止める | 2026-10-23T16:59:00 | 2026-10-23T17:20:00 |
| 利用者の依頼の調べ | 2026-10-23T17:00:00 | 2026-10-23T19:34:00 |
| cr-822 の道具の試験の時間切れを 1 件 20 秒にする(JDG-3144、DFC-3493) | 2026-10-24T05:26:00 | 2026-10-24T05:56:00 |
| 計画の予実と引継書の最新の節の更新(ee5b5afb8 の姿へ) | 2026-10-24T05:27:00 | 2026-10-24T07:42:00 |
| 遅い 2 件のシステム試験を、確かめる中身を変えずに速くする(DFC-3459、JDG-3118) | 2026-10-23T18:06:00 | 2026-10-23T19:55:00 |
| CR-767(状態機械の原稿)の波 3 —— ガードの式を単位の判定へ生成する | 2026-10-23T20:31:00 | 2026-10-23T21:18:00 |
| a60f69ed5 の GT-2 の赤 7 件の試験を CR-827・828 に合わせる | 2026-10-24T02:00:00 | 2026-10-24T02:06:00 |

Removed: 席 1・3(DFC-2870・CR-783・CR-782)の合流; 第 2 波の後の基準線の下げ(G1・G3)と GT-2(D1・D7 を外す); 見本の Developer C の重なり(C7, AS-8 のためのわざと)と pages.yml の起動(E17)の裁定に答える

Changed:

| Task | Start | Finish |
| --- | --- | --- |
| 第 1 波の合流と GT-2(赤 3 件が消えたか)・develop へ push | 2026-10-22T12:15:00 → 2026-10-22T20:16:00 | 2026-10-22T15:15:00 → 2026-10-22T21:29:00 |
| 第 2 波 W1〜W4 の合流と GT-2(中継の版の上げは 1 回) | 2026-10-24T03:00:00 → 2026-10-23T03:33:00 (-1d) | 2026-10-24T06:00:00 → 2026-10-23T05:12:00 (-1d) |
| CR-767(状態機械の原稿)の合流と確かめ | 2026-10-25T09:00:00 → 2026-10-23T13:18:00 (-2d) | 2026-10-25T10:00:00 → 2026-10-23T21:47:00 (-2d) |
| CR-768(保存の媒体の型)の C の合流と確かめ | 2026-10-25T14:00:00 → 2026-10-23T22:21:00 (-2d) | 2026-10-25T15:00:00 → 2026-10-23T22:50:00 (-2d) |
| 片付けの合流と台帳の締め | 2026-10-30T07:00:00 → 2026-10-24T11:27:00 (-6d) | 2026-10-30T09:00:00 → 2026-10-24T13:27:00 (-6d) |
| W4・W5 の合流と GT-2・push | 2026-10-31T03:00:00 → 2026-10-24T12:27:00 (-7d) | 2026-10-31T06:00:00 → 2026-10-24T15:27:00 (-7d) |
| 片付けの入った一括の GT-2 と push | 2026-10-31T06:00:00 → 2026-10-24T15:27:00 (-7d) | 2026-10-31T09:00:00 → 2026-10-24T18:27:00 (-7d) |
| PERF の測り(OneDrive を止めて) | 2026-11-01T09:00:00 → 2026-10-24T21:27:00 (-8d) | 2026-11-01T11:00:00 → 2026-10-24T23:27:00 (-8d) |
| 不具合の合流と GT-2・push | 2026-11-04T19:00:00 → 2026-10-24T00:23:00 (-11d) | 2026-11-04T22:00:00 → 2026-10-24T02:46:00 (-11d) |
| AI 連携の合流と GT-2・push | 2026-11-05T19:00:00 → 2026-10-28T20:00:00 (-8d) | 2026-11-05T22:00:00 → 2026-10-28T23:00:00 (-8d) |
| 新機能の合流と GT-2・push | 2026-11-06T11:00:00 → 2026-10-25T00:57:00 (-12d) | 2026-11-06T14:00:00 → 2026-10-25T03:57:00 (-12d) |
| 最後の合流と PERF・GT-2(重い試験は 1 回だけ) | 2026-11-07T21:00:00 → 2026-10-28T23:00:00 (-10d) | 2026-11-08T03:00:00 → 2026-10-29T05:00:00 (-10d) |
| node tools/release_version.mjs Beta・リリースノート(英日)・README の版の行 | 2026-11-08T03:00:00 → 2026-10-29T05:00:00 (-10d) | 2026-11-08T07:00:00 → 2026-10-29T09:00:00 (-10d) |
| リリースの sha の GT-2 と develop → main の PR | 2026-11-08T07:00:00 → 2026-10-29T09:00:00 (-10d) | 2026-11-08T10:00:00 → 2026-10-29T12:00:00 (-10d) |
| Pages の配備(gh workflow run pages.yml --ref main) | 2026-11-08T11:00:00 → 2026-10-29T22:00:00 (-10d) | 2026-11-08T12:00:00 → 2026-10-29T23:00:00 (-10d) |
| 計画の終わり | 2026-11-08T13:00:00 → 2026-10-30T00:00:00 (-9d) | 2026-11-08T13:00:00 → 2026-10-30T00:00:00 (-9d) |
| 遅延診断の ? と炎の裁定(DFC-3390: 基準日より後を開始で読むか・壁の件数も外すか)に答える | 2026-10-22T21:00:00 → 2026-10-22T08:24:00 | 2026-10-22T22:00:00 → 2026-10-22T08:29:00 |
| ハイパーリンク(MSPDI に写すか・コメントのアイコンの置き場)とダークの色の導き方(JDG-326 の ② を覆す)に答える | 2026-10-22T22:00:00 → 2026-10-22T20:14:00 | 2026-10-22T23:00:00 → 2026-10-22T20:44:00 |
| DFC-3397(左端に出す名前と札)の細部の協議に答える | 2026-10-22T23:00:00 → 2026-10-22T20:26:00 | 2026-10-23T00:00:00 → 2026-10-22T20:33:00 (-1d) |
| DFC-3392・3395(プロンプトの写し方・保存の確認の文)の裁定に答える | 2026-10-23T00:00:00 → 2026-10-22T20:44:00 (-1d) | 2026-10-23T01:00:00 → 2026-10-22T20:45:00 (-1d) |
| 憲章の下書き(temp/charter-draft/CHARTER-ja.md)を直す | 2026-10-23T21:00:00 → 2026-10-24T09:00:00 (+1d) | 2026-10-23T23:00:00 → 2026-10-24T11:00:00 (+1d) |
| DFC-3410(名前付きのフィルタの条件)の細部に答える | 2026-10-31T11:00:00 → 2026-10-24T13:27:00 (-7d) | 2026-10-31T12:00:00 → 2026-10-24T14:27:00 (-7d) |
| チェックリストを実物で触る | 2026-11-07T09:00:00 → 2026-10-25T09:00:00 (-13d) | 2026-11-07T13:00:00 → 2026-10-25T13:00:00 (-13d) |
| PR を見て main へ合流する | 2026-11-08T10:00:00 → 2026-10-29T21:00:00 (-10d) | 2026-11-08T11:00:00 → 2026-10-29T22:00:00 (-10d) |
| Beta のタグを打ち、GitHub Release を作る | 2026-11-08T12:00:00 → 2026-10-29T23:00:00 (-10d) | 2026-11-08T13:00:00 → 2026-10-30T00:00:00 (-9d) |
| β 版のリリース(条件: β に入れた仕事が全部済み、GT-2 と PERF が通る。目安 11-09 09:00) | 2026-11-08T13:00:00 → 2026-10-30T00:00:00 (-9d) | 2026-11-08T13:00:00 → 2026-10-30T00:00:00 (-9d) |
| β への計画の引き直しと利用者の答え 5 つの記録(JDG-3043〜3047) | 2026-10-22T08:15:00 → 2026-10-22T08:18:00 | 2026-10-22T11:15:00 → 2026-10-22T08:54:00 |
| GT-2 の赤 ③ uc-008:76(コメントのダブルクリックで PR-21 に焦点が入らない)の調べと直し | 2026-10-22T08:15:00 → 2026-10-22T08:24:00 | 2026-10-22T12:15:00 → 2026-10-22T09:31:00 |
| GT-2 の赤 ① nfr-004 SWS-8(.tsv の IO-9 を押す探り)を足す | 2026-10-22T08:15:00 → 2026-10-22T08:21:00 | 2026-10-22T10:15:00 → 2026-10-22T11:17:00 |
| GT-2 の赤 ② w3-t2(FR-135 の古い引用)を直す | 2026-10-22T10:15:00 → 2026-10-22T08:21:00 | 2026-10-22T12:15:00 → 2026-10-22T11:17:00 |
| 紹介頁・ダウンロード頁・デモの頁の語の直し(データだけ) | 2026-10-22T08:15:00 → 2026-10-22T08:21:00 | 2026-10-22T12:15:00 → 2026-10-22T08:39:00 |
| 意図しない圧縮への備え(85% の知らせ・セッション台帳・引継書の検査・呼び名の統一)の仕組みと試し | 2026-10-22T08:15:00 → 2026-10-22T08:18:00 | 2026-10-22T16:15:00 → 2026-10-22T22:10:00 |
| 利用者の裁定が要る 6 件(DFC-3390・3392・3393・3394・3395・3397)を 1 問ずつ問う | 2026-10-22T08:15:00 → 2026-10-22T08:18:00 | 2026-10-22T10:15:00 → 2026-10-22T20:45:00 |
| 裁定 6 件の答えの記録(JDG の行と台帳) | 2026-10-23T01:00:00 → 2026-10-22T20:45:00 (-1d) | 2026-10-23T03:00:00 → 2026-10-22T20:57:00 (-1d) |
| 合流済みの作業木の掃除(第 1 波の後半) | 2026-10-22T15:15:00 → 2026-10-23T03:03:00 (+1d) | 2026-10-22T17:15:00 → 2026-10-23T03:49:00 (+1d) |
| プロジェクト憲章(利用者が直した CHARTER-ja.md から)の仕上げ | 2026-10-23T23:00:00 → 2026-10-24T11:00:00 (+1d) | 2026-10-24T03:00:00 → 2026-10-24T11:30:00 |
| W1 仕様と _source／_assets の掃除(棚卸しの A・B の行、C3 の仕様の側 PI-9) | 2026-10-23T03:00:00 → 2026-10-23T03:03:00 | 2026-10-23T15:00:00 → 2026-10-23T04:45:00 |
| NOT_STORED_DUMMY_SIZES(生成済みの寸法, C2・E28)の読まれない写しと古い注の始末 | 2026-10-23T03:30:00 → 2026-10-23T03:03:00 | 2026-10-23T04:00:00 → 2026-10-23T03:11:00 |
| 衛生の小物(PlanActualState の中の語の 2 組, C8)の揃え | 2026-10-23T04:00:00 → 2026-10-24T05:27:00 (+1d) | 2026-10-23T06:00:00 → 2026-10-24T05:42:00 (+1d) |
| 古い STOP の印 15 件(DFC-2730, C9)の除去 | 2026-10-23T06:00:00 → 2026-10-23T03:11:00 | 2026-10-23T08:00:00 → 2026-10-23T03:32:00 |
| W2 src の掃除(棚卸しの C4・C10・C15・E15・E16 ほか) | 2026-10-23T08:00:00 → 2026-10-23T03:03:00 | 2026-10-24T01:00:00 → 2026-10-23T03:32:00 (-1d) |
| baseChangeCommandOf(名の複数形, C3)の言い直し —— W1 で仕様 PI-9 の名を直した後 | 2026-10-24T01:00:00 → 2026-10-24T05:27:00 | 2026-10-24T03:00:00 → 2026-10-24T05:42:00 |
| edgeOf と baselineEdgeXOf(重複した関数, C1)の 1 つへの寄せ | 2026-10-23T03:00:00 → 2026-10-23T07:15:00 | 2026-10-23T03:30:00 → 2026-10-23T07:46:00 |
| W3 試験の掃除(棚卸しの D の行と G2) | 2026-10-23T03:00:00 → 2026-10-23T03:03:00 | 2026-10-23T15:00:00 → 2026-10-23T03:44:00 |
| W4 道具と目録の掃除(棚卸しの E の行・09-tools.md・About の版の形) | 2026-10-23T03:00:00 → 2026-10-23T03:03:00 | 2026-10-23T15:00:00 → 2026-10-23T03:22:00 |
| DFC-2646〜2648(STOP の仕分けで出た 3 行)の始末 —— 2647 の刈り取り(F3) | 2026-10-24T06:00:00 → 2026-10-24T05:27:00 | 2026-10-24T06:30:00 → 2026-10-24T05:42:00 |
| W5 台帳と記録の掃除(棚卸しの F の行。古い STOP の台帳 F2 は W2 の後) | 2026-10-24T06:30:00 → 2026-10-23T05:24:00 (-1d) | 2026-10-24T18:00:00 → 2026-10-23T05:49:00 (-1d) |
| T-064(公開の名 約 479 の呼び出し形, DFC-2640)の書き起こしと再検討 | 2026-10-24T21:00:00 → 2026-10-24T05:27:00 | 2026-10-25T09:00:00 → 2026-10-24T06:57:00 (-1d) |
| src の写しの畳み込み(C14・G13・F11・F12・F17) | 2026-10-28T19:00:00 → 2026-10-24T06:57:00 (-4d) | 2026-10-29T07:00:00 → 2026-10-24T08:27:00 (-5d) |
| 罠の束(DFC-544・547・548・549)の実装 | 2026-10-29T07:00:00 → 2026-10-24T08:27:00 (-5d) | 2026-10-29T15:00:00 → 2026-10-24T09:27:00 (-5d) |
| 実装待ちの残り(DFC-464・532〜562・582・630 ほか 35 行)の実装 | 2026-10-29T15:00:00 → 2026-10-24T09:27:00 (-5d) | 2026-10-30T07:00:00 → 2026-10-24T11:27:00 (-6d) |
| 予定の日が 1 日前へずれる疑い(初見 AI の試験の子セッションの報告)の再現と直し | 2026-10-31T09:00:00 → 2026-10-23T23:48:00 (-8d) | 2026-10-31T17:00:00 → 2026-10-24T00:42:00 (-7d) |
| 依存線の縦の部分が重なる(O-1)の直し | 2026-10-31T17:00:00 → 2026-10-23T23:48:00 (-8d) | 2026-10-31T21:00:00 → 2026-10-24T00:24:00 (-7d) |
| DFC-3396(.html に保存して開くと表示の状態が違う)の再現と直し | 2026-10-31T21:00:00 → 2026-10-24T18:27:00 (-7d) | 2026-11-01T01:00:00 → 2026-10-24T18:57:00 (-8d) |
| 食い違う写しの畳み込みと px の比べ方の揃え(F4 DFC-2646・F9 DFC-630)の CR の起草と当て | 2026-11-01T01:00:00 → 2026-10-24T18:57:00 (-8d) | 2026-11-01T09:00:00 → 2026-10-24T19:57:00 (-8d) |
| CR-813 の 2 片目(遅延診断レポートの親子関係のタブ, DFC-3358)の当て | 2026-11-04T19:00:00 → 2026-10-24T19:57:00 (-11d) | 2026-11-05T07:00:00 → 2026-10-24T21:27:00 (-12d) |
| CR-697(取次が口と鍵を覚える)の起草と当て | 2026-11-05T07:00:00 → 2026-10-24T21:27:00 (-12d) | 2026-11-05T11:00:00 → 2026-10-24T21:57:00 (-12d) |
| DFC-3410(名前付きのフィルタの条件)の仕様と実装 | 2026-11-05T11:00:00 → 2026-10-24T21:57:00 (-12d) | 2026-11-06T03:00:00 → 2026-10-24T23:57:00 (-13d) |
| 実測待ちの行を出荷ビルドで押す(1/3: 日程表・パネル・ドラッグ) | 2026-11-06T14:00:00 → 2026-10-25T03:57:00 (-12d) | 2026-11-07T02:00:00 → 2026-10-25T05:27:00 (-13d) |
| チェックリストで出た直し(仮置き) | 2026-11-07T13:00:00 → 2026-10-25T13:00:00 (-13d) | 2026-11-07T21:00:00 → 2026-10-25T14:00:00 (-13d) |
| CR-767(状態機械の原稿)の波 1 の実装 | 2026-10-24T21:00:00 → 2026-10-23T12:00:00 (-1d) | 2026-10-25T03:00:00 → 2026-10-23T13:18:00 (-2d) |
| CR-767(状態機械の原稿)の波 2 の実装 | 2026-10-25T03:00:00 → 2026-10-23T16:59:00 (-2d) | 2026-10-25T09:00:00 → 2026-10-23T18:00:00 (-2d) |
| CR-768(保存の媒体の型)の C と CM-27 の注の実装 | 2026-10-25T10:00:00 → 2026-10-23T21:55:00 (-2d) | 2026-10-25T14:00:00 → 2026-10-23T22:20:00 (-2d) |
| W4(アダプタ層の分割)の前半 CR-578→579→580 の実装(偶然の写し DFC-1071〜1073) | 2026-10-28T19:00:00 → 2026-10-24T05:27:00 (-4d) | 2026-10-29T11:00:00 → 2026-10-24T07:27:00 (-5d) |
| W4 の後半(CR-581 の後半と properties-panel、DFC-1074・1075)の実装 | 2026-10-29T11:00:00 → 2026-10-24T07:27:00 (-5d) | 2026-10-30T03:00:00 → 2026-10-24T09:27:00 (-6d) |
| W5(異常系 DFC-586 ほか)の仕様 | 2026-10-30T03:00:00 → 2026-10-24T09:27:00 (-6d) | 2026-10-30T11:00:00 → 2026-10-24T10:27:00 (-6d) |
| W5(異常系)の実装と試験 —— 既知の赤 cr-586-iv-22 の 2 件(DFC-922)を緑に | 2026-10-30T11:00:00 → 2026-10-24T10:27:00 (-6d) | 2026-10-31T03:00:00 → 2026-10-24T12:27:00 (-7d) |
| DFC-3393・3394(ハイパーリンク・ダークの任意色)の CR の起草 | 2026-10-31T03:00:00 → 2026-10-24T12:27:00 (-7d) | 2026-10-31T07:00:00 → 2026-10-24T12:57:00 (-7d) |
| DFC-3410(フィルタの条件に名前を付けて GRS JSON に幾つも保存する)の CR の起草 | 2026-10-31T07:00:00 → 2026-10-24T12:57:00 (-7d) | 2026-10-31T11:00:00 → 2026-10-24T13:27:00 (-7d) |
| ハイパーリンクとダークの任意色の仕様と実装 | 2026-10-31T11:00:00 → 2026-10-24T18:27:00 (-7d) | 2026-11-01T03:00:00 → 2026-10-24T20:27:00 (-8d) |

| Task | Start | Finish |
| --- | --- | --- |
| DFC-3397(横に拡大して両端が外に出たタスクの名前を左端に出す)の CR の起草 | 2026-11-01T03:00:00 → 2026-10-24T20:27:00 (-8d) | 2026-11-01T07:00:00 → 2026-10-24T20:57:00 (-8d) |
| DFC-3397(左端に出す名前と札)の仕様と実装 | 2026-11-01T07:00:00 → 2026-10-24T20:57:00 (-8d) | 2026-11-01T15:00:00 → 2026-10-24T21:57:00 (-8d) |
| 利用者のチェックリスト 1 枚(今日の 5 件・新機能・押せなかった行) | 2026-11-07T02:00:00 → 2026-10-25T05:27:00 (-13d) | 2026-11-07T06:00:00 → 2026-10-25T05:57:00 (-13d) |
| 試験待ち 23 行(DFC-550・567・641 ほか)の仕様だけを読む試験 | 2026-10-24T21:00:00 → 2026-10-24T05:27:00 | 2026-10-25T05:00:00 → 2026-10-24T06:27:00 (-1d) |
| 長い関数とファイルを割る(C19・F13、07 R2 の設計の判断) | 2026-10-25T05:00:00 → 2026-10-24T06:27:00 (-1d) | 2026-10-25T17:00:00 → 2026-10-24T07:57:00 (-1d) |
| 試験の補助の写しの共通化(D14・D15) | 2026-10-28T19:00:00 → 2026-10-24T07:57:00 (-4d) | 2026-10-29T07:00:00 → 2026-10-24T09:27:00 (-5d) |
| 用語集の JSON 化(DFC-2175、7 表 382 行)の仕様と実装 | 2026-10-29T07:00:00 → 2026-10-24T09:27:00 (-5d) | 2026-10-29T19:00:00 → 2026-10-24T10:57:00 (-5d) |
| DFC-3390(基準日より後のタスクの ? と炎)の CR の起草と当て | 2026-10-31T09:00:00 → 2026-10-23T23:48:00 (-8d) | 2026-10-31T17:00:00 → 2026-10-24T00:18:00 (-7d) |
| 取次から AI がページのアドレスを得る恒久の直し(DFC-3400・3401: B1〜B6 を決めてから CR) | 2026-10-31T17:00:00 → 2026-10-28T19:00:00 (-3d) | 2026-11-01T01:00:00 → 2026-10-28T20:00:00 (-4d) |
| ポインタの当たり判定(予定と依存線の優先順位)の見直し —— 見本と Playwright の掃き | 2026-11-01T01:00:00 → 2026-10-23T23:48:00 (-9d) | 2026-11-01T09:00:00 → 2026-10-24T00:24:00 (-8d) |
| 既定値の選び直しと公開スキーマの $id・比率の数(A10・B5・B10・F27)の CR の起草と当て | 2026-11-01T09:00:00 → 2026-10-24T18:27:00 (-8d) | 2026-11-01T17:00:00 → 2026-10-24T19:27:00 (-8d) |
| 中継の所見の残り(R5: 4・8・9・10・11・14・17・20・24)の当て | 2026-11-04T19:00:00 → 2026-10-24T19:27:00 (-11d) | 2026-11-05T07:00:00 → 2026-10-24T20:57:00 (-12d) |
| 中継の所見の「低」8 件(13・16・17・18・19・20・23・25) | 2026-11-05T07:00:00 → 2026-10-24T20:57:00 (-12d) | 2026-11-05T15:00:00 → 2026-10-24T21:57:00 (-12d) |
| DFC-2214・2215(AI が読む遅延診断にイナズマ線の頂点・読み方)の仕様と実装 | 2026-11-05T15:00:00 → 2026-10-24T21:57:00 (-12d) | 2026-11-05T19:00:00 → 2026-10-24T22:27:00 (-12d) |
| ハイパーリンクとダークの任意色の仕様だけを読む試験(別のサブエージェント) | 2026-11-05T19:00:00 → 2026-10-24T22:27:00 (-12d) | 2026-11-06T03:00:00 → 2026-10-24T23:27:00 (-13d) |
| 未検討 72 行(DFC-611・2560〜2569・2690〜2699・2770 ほか)のトリアージ | 2026-10-24T21:00:00 → 2026-10-24T05:27:00 | 2026-10-25T05:00:00 → 2026-10-24T06:27:00 (-1d) |
| 道具の補助の写しの共通化(E20〜E22) | 2026-10-25T05:00:00 → 2026-10-24T06:27:00 (-1d) | 2026-10-25T17:00:00 → 2026-10-24T07:57:00 (-1d) |
| トリアージで出た直しの実装 | 2026-10-28T19:00:00 → 2026-10-24T07:57:00 (-4d) | 2026-10-29T11:00:00 → 2026-10-24T09:57:00 (-5d) |
| DFC-3391・3392(プロンプトは本文だけ写し、スキーマは自動で保存)の CR の起草と当て | 2026-10-31T09:00:00 → 2026-10-23T23:48:00 (-8d) | 2026-10-31T17:00:00 → 2026-10-24T01:40:00 (-7d) |
| 日付の範囲(S-119/S-120 と MS Project の 1984〜2149)・DFC-3003(ライセンスの窓) | 2026-10-31T17:00:00 → 2026-10-23T23:48:00 (-8d) | 2026-10-31T21:00:00 → 2026-10-24T01:40:00 (-7d) |
| DFC-3395(保存の確認がサイトの名を出し、通信するように読める)の調べと対応の案 | 2026-10-31T21:00:00 → 2026-10-23T23:48:00 (-8d) | 2026-10-31T23:00:00 → 2026-10-24T01:40:00 (-7d) |
| uid の最高水位と「行」と「タスクグループ」(F10 DFC-1066・F25 DFC-2174)の CR の起草と当て | 2026-10-31T23:00:00 → 2026-10-24T18:27:00 (-7d) | 2026-11-01T07:00:00 → 2026-10-24T19:27:00 (-8d) |
| CR-815(絞った表を AI が選んだ列でページに分けて読む)の当て | 2026-11-01T07:00:00 → 2026-10-24T19:27:00 (-8d) | 2026-11-01T19:00:00 → 2026-10-24T20:57:00 (-8d) |
| 接続が黙って切れる件(DFC-3340〜3342: ping・ページの下書き)の当て | 2026-11-04T19:00:00 → 2026-10-24T20:57:00 (-11d) | 2026-11-05T07:00:00 → 2026-10-24T22:27:00 (-12d) |
| DFC-3397(左端に出す名前と札)の仕様だけを読む試験(別のサブエージェント) | 2026-11-05T07:00:00 → 2026-10-24T22:27:00 (-12d) | 2026-11-05T11:00:00 → 2026-10-24T22:57:00 (-12d) |
| 実測待ちの行を出荷ビルドで押す(2/3: 遅延診断・表・検索) | 2026-11-06T14:00:00 → 2026-10-25T03:57:00 (-12d) | 2026-11-07T02:00:00 → 2026-10-25T05:27:00 (-13d) |
| サーバー同期のデモの仕上げ(DFC-3070・3071 の状態を測り直し、配る zip で試す) | 2026-10-22T12:15:00 → 2026-10-24T05:27:00 (+2d) | 2026-10-22T16:15:00 → 2026-10-24T05:57:00 (+2d) |
| 仕様待ち 31 行の残り(DFC-560・631・1063〜1073 ほか)の CR の起草 | 2026-10-24T21:00:00 → 2026-10-24T05:57:00 | 2026-10-25T01:00:00 → 2026-10-24T06:27:00 (-1d) |
| 仕様待ちの残りの CR の実装 | 2026-10-25T01:00:00 → 2026-10-24T06:27:00 (-1d) | 2026-10-25T17:00:00 → 2026-10-24T08:27:00 (-1d) |
| DFC-730(GP-1 編集権限の行は読み取り専用)の実装 | 2026-10-28T19:00:00 → 2026-10-24T08:27:00 (-4d) | 2026-10-28T23:00:00 → 2026-10-24T08:57:00 (-4d) |
| DFC-2966・2967・2969(文書の形と実績の組み合わせの表, 束 E)の仕様と実装 | 2026-10-28T23:00:00 → 2026-10-24T08:57:00 (-4d) | 2026-10-29T07:00:00 → 2026-10-24T09:57:00 (-5d) |
| 性能の赤の切り分け —— 前の版との交互の比べ(JDG-726)と GR-28・MK-1 のプロファイル | 2026-10-31T09:00:00 → 2026-10-24T18:27:00 (-7d) | 2026-10-31T17:00:00 → 2026-10-24T19:27:00 (-7d) |
| 重い処理の直し(最も遅い GR-28 から) | 2026-10-31T17:00:00 → 2026-10-24T19:27:00 (-7d) | 2026-11-01T09:00:00 → 2026-10-24T21:27:00 (-8d) |
| DFC-3410(名前付きのフィルタの条件)の仕様だけを読む試験(別のサブエージェント) | 2026-11-06T03:00:00 → 2026-10-24T23:57:00 (-13d) | 2026-11-06T11:00:00 → 2026-10-25T00:57:00 (-12d) |
| 実測待ちの行を出荷ビルドで押す(3/3: ファイル・書き出し・AI 連携) | 2026-11-06T14:00:00 → 2026-10-25T03:57:00 (-12d) | 2026-11-07T02:00:00 → 2026-10-25T05:27:00 (-13d) |

## Version 3 (saved 2026-10-30)

Note of the change: Re-plan once under the owner's PMO rules

Last finish 2026-11-04 → 2026-11-28 (+24d).

Added:

| Task | Start | Finish |
| --- | --- | --- |
| 調整役の交代(引継書の節と台帳) | 2026-10-24T14:47:00 | 2026-10-24T14:54:00 |
| 10-24〜25 の合流分の dist の組み直し・中継とデモの版の上げ・GT-2・push | 2026-10-31T08:50:00 | 2026-10-31T11:50:00 |
| SUB 7(用語集)のカードを押して始める | 2026-10-31T08:42:00 | 2026-10-31T09:15:00 |
| 計画の置き場(git を使うか・公開するか)を決める | 2026-10-31T09:15:00 | 2026-10-31T09:30:00 |
| PMO の組み直しを見て OK を出す(PMO の決めごとの GQA が閉じた節目) | 2026-10-31T09:30:00 | 2026-10-31T09:45:00 |
| 計画の予実の更新(10-25: CR-851 の 1 週間のレビュー・CR-854・答えの前倒し) | 2026-10-25T18:28:00 | 2026-10-25T18:44:00 |
| 計画 241・244・217 の答えの前倒し(1 問ずつ問い、記録する) | 2026-10-24T06:09:00 | 2026-10-24T16:51:00 |
| CR-850(基準日線・カーソル・掴みを 15 分に)の当て —— X-3a の 3 か所を除く | 2026-10-24T06:33:00 | 2026-10-24T07:53:00 |
| CR-850(基準日線・カーソル・掴みを 15 分に)の X-3a の 3 か所の当て —— W4 前半の後 | 2026-11-25T23:30:00 | 2026-11-26T00:00:00 |
| 規則 07 を原本(gr-sw-maker の review-standards)の派生に作り直し、検査 90 と略語の正式名を足す | 2026-10-24T07:57:00 | 2026-10-24T16:23:00 |
| 再発防止の検査 91〜93(07 の旧番号・07 と原本・依存と OSS) | 2026-10-24T14:57:00 | 2026-10-24T16:28:00 |
| 外への約束(GRS JSON・Agent API・MCP・読み書きの形)の仕様の行の棚卸し(study 77) | 2026-10-24T18:09:00 | 2026-10-24T18:41:00 |
| CR-851(GRS JSON を β の前に 1 回だけ組み替え、α の文書は変換させる)の起草 | 2026-10-24T16:43:00 | 2026-10-25T09:40:00 |
| 拡大縮小の戦略の調べ(study 78)と CR-853 の起草 | 2026-10-25T03:06:00 | 2026-10-25T08:07:00 |
| 用語集の監査を始める(SUB 3 cr-851-successor-3-finis。文の書き方の裁定 JDG-3346〜3350) | 2026-10-26T22:35:00 | 2026-10-27T02:01:00 |
| 語のシート・GRS 独自のキーの名・SSOT・名の辞書の初版(SUB 4 cr-851-successor-4-term) | 2026-10-27T02:01:00 | 2026-10-29T01:56:00 |
| 名の辞書の作り方の紙と GQA 13 の問 1〜4(SUB 5 cr-851-successor-5-gloss) | 2026-10-29T02:08:00 | 2026-10-30T06:47:00 |
| GQA 13 の問 5 の巡(SUB 6 cr-851-successor-6-gloss。JDG-3481〜3507) | 2026-10-31T03:11:00 | 2026-10-31T08:42:00 |
| 名の辞書(用語集)のレビューと確定の残り(SUB 7。GQA 13 の問 5 から、残り 1397 語) | 2026-10-31T09:15:00 | 2026-11-21T14:30:00 |
| CR-857(SSOT へ寄せる —— 名の原稿 glossary.json と生成、JDG-3411〜3427)の起草と当て | 2026-11-25T22:00:00 | 2026-11-26T01:30:00 |
| CR-855(名の辞書のとおりに仕様の文とコードの名を改める)の起草と当て | 2026-11-26T01:30:00 | 2026-11-26T05:45:00 |
| CR-856(語の裁定で変わる振る舞い —— プロパティパネルにプロジェクト名 JDG-3355・休日の設定をツールウィンドウに JDG-3356)の起草と当て | 2026-11-26T05:45:00 | 2026-11-26T07:45:00 |
| CR-853(拡大縮小の戦略)の当て | 2026-11-25T22:00:00 | 2026-11-25T22:30:00 |
| CR-854(変更履歴の窓・パレットのボタン・履歴を足す/直す/消す命令)の起草と当て | 2026-11-25T22:00:00 | 2026-11-26T00:30:00 |
| CR-851・848・849 の行のレビューの初日(SUB cr-851-successor-run-the) | 2026-10-25T09:46:00 | 2026-10-25T19:14:00 |
| CR-851・848・849 の行のレビューの続き(SUB 3 cr-851-successor-3-finis) | 2026-10-25T19:14:00 | 2026-10-26T22:35:00 |
| CR-851・848・849 の行のレビューの残り(用語集の後の SUB。445 行) | 2026-11-21T14:30:00 | 2026-11-23T21:45:00 |
| CR-851 の当て(GRS JSON の組み替えと変換の案内) | 2026-11-25T19:00:00 | 2026-11-25T22:00:00 |
| W4 前半(CR-578〜580)の分け方の計画を書いて止める | 2026-10-24T06:09:00 | 2026-10-24T07:53:00 |
| CR-848・849(ダークの任意色・ハイパーリンク)の当て —— CR-851 の後、848 → 849 の順 | 2026-11-26T09:15:00 | 2026-11-26T10:45:00 |
| 用語集の GQA に答える(GQA 13 の問 5 と 5-5〜5-8 から。残り 1397 語) | 2026-10-31T09:15:00 | 2026-11-21T14:30:00 |
| CR-851・848・849 の行のレビューに答える(残り 445 行) | 2026-11-21T14:30:00 | 2026-11-23T21:45:00 |

Removed: ハイパーリンクとダークの任意色の仕様と実装

Changed:

| Task | Start | Finish |
| --- | --- | --- |
| known-red の揺れる 4 行(D1)と時間切れの延ばし(D7)を外し、GT-2 が時間切れ 0 で通るのを確かめる | 2026-10-24T05:56:00 → 2026-10-31T08:50:00 (+7d) | 2026-10-24T08:56:00 → 2026-10-31T11:50:00 (+7d) |
| 片付けの合流と台帳の締め | 2026-10-24T11:27:00 → 2026-11-21T19:15:00 (+28d) | 2026-10-24T13:27:00 → 2026-11-21T21:15:00 (+28d) |
| W4・W5 の合流と GT-2・push | 2026-10-24T12:27:00 → 2026-11-26T03:15:00 (+33d) | 2026-10-24T15:27:00 → 2026-11-26T06:15:00 (+33d) |
| 片付けの入った一括の GT-2 と push | 2026-10-24T15:27:00 → 2026-11-26T06:15:00 (+33d) | 2026-10-24T18:27:00 → 2026-11-26T09:15:00 (+33d) |
| PERF の測り(OneDrive を止めて) | 2026-10-24T21:27:00 → 2026-11-26T11:30:00 (+33d) | 2026-10-24T23:27:00 → 2026-11-26T13:30:00 (+33d) |
| 不具合の残り(235・268〜270)の合流と GT-2・push | 2026-10-24T19:57:00 → 2026-11-26T10:30:00 (+33d) | 2026-10-24T22:57:00 → 2026-11-26T13:30:00 (+33d) |
| AI 連携の合流と GT-2・push | 2026-10-28T20:00:00 → 2026-11-26T12:30:00 (+29d) | 2026-10-28T23:00:00 → 2026-11-26T15:30:00 (+29d) |
| 新機能の合流と GT-2・push | 2026-10-25T00:57:00 → 2026-11-26T14:30:00 (+32d) | 2026-10-25T03:57:00 → 2026-11-26T17:30:00 (+32d) |
| 最後の合流と PERF・GT-2(重い試験は 1 回だけ) | 2026-10-28T23:00:00 → 2026-11-27T01:45:00 (+30d) | 2026-10-29T05:00:00 → 2026-11-27T07:45:00 (+29d) |
| node tools/release_version.mjs Beta・リリースノート(英日)・README の版の行 | 2026-10-29T05:00:00 → 2026-11-27T07:45:00 (+29d) | 2026-10-29T09:00:00 → 2026-11-27T11:45:00 (+29d) |
| リリースの sha の GT-2 と develop → main の PR | 2026-10-29T09:00:00 → 2026-11-27T11:45:00 (+29d) | 2026-10-29T12:00:00 → 2026-11-27T14:45:00 (+29d) |
| Pages の配備(gh workflow run pages.yml --ref main) | 2026-10-29T22:00:00 → 2026-11-27T22:00:00 (+29d) | 2026-10-29T23:00:00 → 2026-11-27T23:00:00 (+29d) |
| 計画の終わり | 2026-10-30T00:00:00 → 2026-11-28T00:00:00 (+29d) | 2026-10-30T00:00:00 → 2026-11-28T00:00:00 (+29d) |
| 憲章の下書き(temp/charter-draft/CHARTER-ja.md)を直す | 2026-10-24T09:00:00 → 2026-10-31T09:45:00 (+7d) | 2026-10-24T11:00:00 → 2026-10-31T11:45:00 (+7d) |
| 取次からページのアドレスを得る直し(DFC-3400・3401)の案 B1〜B6 に答える | 2026-10-27T21:00:00 → 2026-10-24T06:09:00 (-3d) | 2026-10-27T22:00:00 → 2026-10-24T07:57:00 (-3d) |
| DFC-3410(名前付きのフィルタの条件)の細部に答える | 2026-10-24T13:27:00 → 2026-10-24T06:09:00 | 2026-10-24T14:27:00 → 2026-10-24T07:57:00 |
| チェックリストを実物で触る | 2026-10-25T09:00:00 → 2026-11-26T21:00:00 (+32d) | 2026-10-25T13:00:00 → 2026-11-27T01:00:00 (+33d) |
| PR を見て main へ合流する | 2026-10-29T21:00:00 → 2026-11-27T21:00:00 (+29d) | 2026-10-29T22:00:00 → 2026-11-27T22:00:00 (+29d) |
| Beta のタグを打ち、GitHub Release を作る | 2026-10-29T23:00:00 → 2026-11-27T23:00:00 (+29d) | 2026-10-30T00:00:00 → 2026-11-28T00:00:00 (+29d) |
| β 版のリリース(条件: β に入れた仕事が全部済み、GT-2 と PERF が通る。目安 11-09 09:00) | 2026-10-30T00:00:00 → 2026-11-28T00:00:00 (+29d) | 2026-10-30T00:00:00 → 2026-11-28T00:00:00 (+29d) |
| 合流済みの作業木の掃除の残り 23 本(自動の判定に断られて止めた分) | 2026-10-24T05:27:00 → 2026-11-21T14:30:00 (+28d) | 2026-10-24T05:57:00 → 2026-11-21T15:00:00 (+28d) |
| プロジェクト憲章(利用者が直した CHARTER-ja.md から)の仕上げ | 2026-10-24T11:00:00 → 2026-11-21T14:30:00 (+28d) | 2026-10-24T11:30:00 → 2026-11-21T15:00:00 (+28d) |
| 衛生の小物(PlanActualState の中の語の 2 組, C8)の揃え | 2026-10-24T05:27:00 → 2026-11-21T14:30:00 (+28d) | 2026-10-24T05:42:00 → 2026-11-21T14:45:00 (+28d) |
| baseChangeCommandOf(名の複数形, C3)の言い直し —— W1 で仕様 PI-9 の名を直した後 | 2026-10-24T05:27:00 → 2026-11-21T14:30:00 (+28d) | 2026-10-24T05:42:00 → 2026-11-21T14:45:00 (+28d) |
| DFC-2646〜2648(STOP の仕分けで出た 3 行)の始末 —— 2647 の刈り取り(F3) | 2026-10-24T05:27:00 → 2026-11-21T14:30:00 (+28d) | 2026-10-24T05:42:00 → 2026-11-21T14:45:00 (+28d) |
| cr-822 の道具の試験の時間切れを 1 件 20 秒にする(JDG-3144、DFC-3493) |  | 2026-10-24T05:56:00 → 2026-10-24T05:41:00 |
| 計画の予実と引継書の最新の節の更新(ee5b5afb8 の姿へ) |  | 2026-10-24T07:42:00 → 2026-10-24T05:46:00 |
| T-064(公開の名 約 479 の呼び出し形, DFC-2640)の書き起こしと再検討 | 2026-10-24T05:27:00 → 2026-11-21T14:30:00 (+28d) | 2026-10-24T06:57:00 → 2026-11-21T15:45:00 (+28d) |
| src の写しの畳み込み(C14・G13・F11・F12・F17) | 2026-10-24T06:57:00 → 2026-11-21T15:45:00 (+28d) | 2026-10-24T08:27:00 → 2026-11-21T17:00:00 (+28d) |
| 罠の束(DFC-544・547・548・549)の実装 | 2026-10-24T08:27:00 → 2026-11-21T17:00:00 (+28d) | 2026-10-24T09:27:00 → 2026-11-21T17:45:00 (+28d) |
| 実装待ちの残り(DFC-464・532〜562・582・630 ほか 35 行)の実装 | 2026-10-24T09:27:00 → 2026-11-21T17:45:00 (+28d) | 2026-10-24T11:27:00 → 2026-11-21T19:15:00 (+28d) |
| DFC-3396(.html に保存して開くと表示の状態が違う)の再現と直し | 2026-10-24T18:27:00 → 2026-11-26T09:15:00 (+33d) | 2026-10-24T18:57:00 → 2026-11-26T09:45:00 (+33d) |
| 食い違う写しの畳み込みと px の比べ方の揃え(F4 DFC-2646・F9 DFC-630)の CR の起草と当て | 2026-10-24T18:57:00 → 2026-11-26T09:45:00 (+33d) | 2026-10-24T19:57:00 → 2026-11-26T10:30:00 (+33d) |
| CR-813 の 2 片目(遅延診断レポートの親子関係のタブ, DFC-3358)の当て | 2026-10-24T19:57:00 → 2026-11-26T10:30:00 (+33d) | 2026-10-24T21:27:00 → 2026-11-26T11:45:00 (+33d) |
| CR-697(取次が口と鍵を覚える)の起草と当て | 2026-10-24T21:27:00 → 2026-11-26T11:45:00 (+33d) | 2026-10-24T21:57:00 → 2026-11-26T12:15:00 (+33d) |
| DFC-3410(名前付きのフィルタの条件)の仕様と実装 | 2026-10-24T21:57:00 → 2026-11-26T12:15:00 (+33d) | 2026-10-24T23:57:00 → 2026-11-26T13:45:00 (+33d) |
| 実測待ちの行を出荷ビルドで押す(1/3: 日程表・パネル・ドラッグ) | 2026-10-25T03:57:00 → 2026-11-26T17:30:00 (+32d) | 2026-10-25T05:27:00 → 2026-11-26T18:45:00 (+32d) |
| チェックリストで出た直し(仮置き) | 2026-10-25T13:00:00 → 2026-11-27T01:00:00 (+33d) | 2026-10-25T14:00:00 → 2026-11-27T01:45:00 (+33d) |
| W4(アダプタ層の分割)の前半 CR-578→579→580 の実装(偶然の写し DFC-1071〜1073) | 2026-10-24T05:27:00 → 2026-11-25T22:00:00 (+32d) | 2026-10-24T07:27:00 → 2026-11-25T23:30:00 (+32d) |
| W4 の後半(CR-581 の後半と properties-panel、DFC-1074・1075)の実装 | 2026-10-24T07:27:00 → 2026-11-25T23:30:00 (+32d) | 2026-10-24T09:27:00 → 2026-11-26T01:00:00 (+33d) |
| W5(異常系 DFC-586 ほか)の仕様 | 2026-10-24T09:27:00 → 2026-11-26T01:00:00 (+33d) | 2026-10-24T10:27:00 → 2026-11-26T01:45:00 (+33d) |
| W5(異常系)の実装と試験 —— 既知の赤 cr-586-iv-22 の 2 件(DFC-922)を緑に | 2026-10-24T10:27:00 → 2026-11-26T01:45:00 (+33d) | 2026-10-24T12:27:00 → 2026-11-26T03:15:00 (+33d) |
| DFC-3393・3394(ハイパーリンク・ダークの任意色)の CR の起草 | 2026-10-24T12:27:00 → 2026-10-24T16:43:00 | 2026-10-24T12:57:00 → 2026-10-25T09:40:00 (+1d) |
| DFC-3410(フィルタの条件に名前を付けて GRS JSON に幾つも保存する)の CR の起草 | 2026-10-24T12:57:00 → 2026-11-25T19:00:00 (+32d) | 2026-10-24T13:27:00 → 2026-11-25T19:30:00 (+32d) |
| DFC-3397(横に拡大して両端が外に出たタスクの名前を左端に出す)の CR の起草 | 2026-10-24T20:27:00 → 2026-11-26T10:45:00 (+33d) | 2026-10-24T20:57:00 → 2026-11-26T11:15:00 (+33d) |
| DFC-3397(左端に出す名前と札)の仕様と実装 | 2026-10-24T20:57:00 → 2026-11-26T11:15:00 (+33d) | 2026-10-24T21:57:00 → 2026-11-26T12:00:00 (+33d) |
| 利用者のチェックリスト 1 枚(今日の 5 件・新機能・押せなかった行) | 2026-10-25T05:27:00 → 2026-11-26T18:45:00 (+32d) | 2026-10-25T05:57:00 → 2026-11-26T19:15:00 (+32d) |
| 試験待ち 23 行(DFC-550・567・641 ほか)の仕様だけを読む試験 | 2026-10-24T05:27:00 → 2026-10-24T06:09:00 | 2026-10-24T06:27:00 → 2026-10-24T06:48:00 |
| 長い関数とファイルを割る(C19・F13、07 R2 の設計の判断) | 2026-10-24T06:27:00 → 2026-11-21T14:30:00 (+28d) | 2026-10-24T07:57:00 → 2026-11-21T15:45:00 (+28d) |
| 試験の補助の写しの共通化(D14・D15) | 2026-10-24T07:57:00 → 2026-11-21T15:45:00 (+28d) | 2026-10-24T09:27:00 → 2026-11-21T17:00:00 (+28d) |
| 用語集の JSON 化(DFC-2175、7 表 382 行)の仕様と実装 | 2026-10-24T09:27:00 → 2026-11-21T17:00:00 (+28d) | 2026-10-24T10:57:00 → 2026-11-21T18:15:00 (+28d) |
| 取次から AI がページのアドレスを得る恒久の直し(DFC-3400・3401: B1〜B6 を決めてから CR) | 2026-10-28T19:00:00 → 2026-11-26T09:15:00 (+29d) | 2026-10-28T20:00:00 → 2026-11-26T10:00:00 (+29d) |
| 既定値の選び直しと公開スキーマの $id・比率の数(A10・B5・B10・F27)の CR の起草と当て | 2026-10-24T18:27:00 → 2026-11-26T09:15:00 (+33d) | 2026-10-24T19:27:00 → 2026-11-26T10:00:00 (+33d) |
| 中継の所見の残り(R5: 4・8・9・10・11・14・17・20・24)の当て | 2026-10-24T19:27:00 → 2026-11-26T10:00:00 (+33d) | 2026-10-24T20:57:00 → 2026-11-26T11:15:00 (+33d) |
| 中継の所見の「低」8 件(13・16・17・18・19・20・23・25) | 2026-10-24T20:57:00 → 2026-11-26T11:15:00 (+33d) | 2026-10-24T21:57:00 → 2026-11-26T12:00:00 (+33d) |
| DFC-2214・2215(AI が読む遅延診断にイナズマ線の頂点・読み方)の仕様と実装 | 2026-10-24T21:57:00 → 2026-11-26T12:00:00 (+33d) | 2026-10-24T22:27:00 → 2026-11-26T12:30:00 (+33d) |
| ハイパーリンクとダークの任意色の仕様だけを読む試験(別のサブエージェント) | 2026-10-24T22:27:00 → 2026-11-26T12:30:00 (+33d) | 2026-10-24T23:27:00 → 2026-11-26T13:15:00 (+33d) |
| 未検討 72 行(DFC-611・2560〜2569・2690〜2699・2770 ほか)のトリアージ | 2026-10-24T05:27:00 → 2026-10-24T06:09:00 | 2026-10-24T06:27:00 → 2026-10-24T06:46:00 |
| 道具の補助の写しの共通化(E20〜E22) | 2026-10-24T06:27:00 → 2026-11-21T14:30:00 (+28d) | 2026-10-24T07:57:00 → 2026-11-21T15:45:00 (+28d) |
| トリアージで出た直しの実装 | 2026-10-24T07:57:00 → 2026-11-21T15:45:00 (+28d) | 2026-10-24T09:57:00 → 2026-11-21T17:15:00 (+28d) |
| uid の最高水位と「行」と「タスクグループ」(F10 DFC-1066・F25 DFC-2174)の CR の起草と当て | 2026-10-24T18:27:00 → 2026-11-26T09:15:00 (+33d) | 2026-10-24T19:27:00 → 2026-11-26T10:00:00 (+33d) |
| CR-815(絞った表を AI が選んだ列でページに分けて読む)の当て | 2026-10-24T19:27:00 → 2026-11-26T10:00:00 (+33d) | 2026-10-24T20:57:00 → 2026-11-26T11:15:00 (+33d) |
| 接続が黙って切れる件(DFC-3340〜3342: ping・ページの下書き)の当て | 2026-10-24T20:57:00 → 2026-11-26T11:15:00 (+33d) | 2026-10-24T22:27:00 → 2026-11-26T12:30:00 (+33d) |
| DFC-3397(左端に出す名前と札)の仕様だけを読む試験(別のサブエージェント) | 2026-10-24T22:27:00 → 2026-11-26T12:30:00 (+33d) | 2026-10-24T22:57:00 → 2026-11-26T13:00:00 (+33d) |
| 実測待ちの行を出荷ビルドで押す(2/3: 遅延診断・表・検索) | 2026-10-25T03:57:00 → 2026-11-26T17:30:00 (+32d) | 2026-10-25T05:27:00 → 2026-11-26T18:45:00 (+32d) |
| サーバー同期のデモの仕上げ(DFC-3070・3071 の状態を測り直し、配る zip で試す) | 2026-10-24T05:27:00 → 2026-10-24T06:09:00 | 2026-10-24T05:57:00 → 2026-10-24T06:29:00 |
| 仕様待ち 31 行の残り(DFC-560・631・1063〜1073 ほか)の CR の起草 | 2026-10-24T05:57:00 → 2026-10-24T06:09:00 | 2026-10-24T06:27:00 → 2026-10-24T06:55:00 |
| 仕様待ちの残りの CR の実装 | 2026-10-24T06:27:00 → 2026-11-21T14:30:00 (+28d) | 2026-10-24T08:27:00 → 2026-11-21T16:00:00 (+28d) |
| DFC-730(GP-1 編集権限の行は読み取り専用)の実装 | 2026-10-24T08:27:00 → 2026-11-21T16:00:00 (+28d) | 2026-10-24T08:57:00 → 2026-11-21T16:30:00 (+28d) |
| DFC-2966・2967・2969(文書の形と実績の組み合わせの表, 束 E)の仕様と実装 | 2026-10-24T08:57:00 → 2026-11-21T16:30:00 (+28d) | 2026-10-24T09:57:00 → 2026-11-21T17:15:00 (+28d) |

| Task | Start | Finish |
| --- | --- | --- |
| 性能の赤の切り分け —— 前の版との交互の比べ(JDG-726)と GR-28・MK-1 のプロファイル | 2026-10-24T18:27:00 → 2026-11-26T09:15:00 (+33d) | 2026-10-24T19:27:00 → 2026-11-26T10:00:00 (+33d) |
| 重い処理の直し(最も遅い GR-28 から) | 2026-10-24T19:27:00 → 2026-11-26T10:00:00 (+33d) | 2026-10-24T21:27:00 → 2026-11-26T11:30:00 (+33d) |
| DFC-3410(名前付きのフィルタの条件)の仕様だけを読む試験(別のサブエージェント) | 2026-10-24T23:57:00 → 2026-11-26T13:45:00 (+33d) | 2026-10-25T00:57:00 → 2026-11-26T14:30:00 (+32d) |
| 実測待ちの行を出荷ビルドで押す(3/3: ファイル・書き出し・AI 連携) | 2026-10-25T03:57:00 → 2026-11-26T17:30:00 (+32d) | 2026-10-25T05:27:00 → 2026-11-26T18:45:00 (+32d) |

## Version 4 (saved 2026-10-31)

Note of the change: Record plan actuals to 10-31 11:25 (SUB 7 started)

Last finish stays 2026-11-28.

Added:

| Task | Start | Finish |
| --- | --- | --- |
| β 版のリリース(仮の日付。条件: β に入れた仕事が全部済み、GT-2 と PERF が通る。目安 11-09 09:00) | 2026-11-28T00:00:00 | 2026-11-28T00:00:00 |
| N1 用語集の確定(名の辞書の命名が終わる。1397 語) | 2026-11-21T14:30:00 | 2026-11-21T14:30:00 |

Removed: β 版のリリース(条件: β に入れた仕事が全部済み、GT-2 と PERF が通る。目安 11-09 09:00)

Changed:

| Task | Start | Finish |
| --- | --- | --- |
| 10-24〜25 の合流分の dist の組み直し・中継とデモの版の上げ・GT-2・push | 2026-10-31T08:50:00 → 2026-10-31T10:50:00 | 2026-10-31T11:50:00 → 2026-10-31T13:50:00 |
| known-red の揺れる 4 行(D1)と時間切れの延ばし(D7)を外し、GT-2 が時間切れ 0 で通るのを確かめる | 2026-10-31T08:50:00 → 2026-10-31T10:50:00 | 2026-10-31T11:50:00 → 2026-10-31T13:50:00 |
| SUB 7(用語集)のカードを押して始める |  | 2026-10-31T09:15:00 → 2026-10-31T11:22:00 |
| 計画の置き場(git を使うか・公開するか)を決める | 2026-10-31T09:15:00 → 2026-10-31T11:25:00 | 2026-10-31T09:30:00 → 2026-10-31T11:40:00 |
| PMO の組み直しを見て OK を出す(PMO の決めごとの GQA が閉じた節目) | 2026-10-31T09:30:00 → 2026-10-31T08:54:00 | 2026-10-31T09:45:00 → 2026-10-31T11:23:00 |
| 憲章の下書き(temp/charter-draft/CHARTER-ja.md)を直す | 2026-10-31T09:45:00 → 2026-10-31T11:40:00 | 2026-10-31T11:45:00 → 2026-10-31T13:40:00 |
| GQA 13 の問 5 の巡(SUB 6 cr-851-successor-6-gloss。JDG-3481〜3507) |  | 2026-10-31T08:42:00 → 2026-10-31T10:33:00 |
| 名の辞書(用語集)のレビューと確定の残り(SUB 7。GQA 13 の問 5 から、残り 1397 語) | 2026-10-31T09:15:00 → 2026-10-31T11:22:00 |  |
