# Core ERP Replacement Program

How a schedule from MS Project XML changed from version to version. A marks actual dates.

## Version 1 (data date 2026-08-26, saved 2026-08-26)

Note of the change: Publish sample-schedule: nine sample documents and a ProjectLibre file

| ID | WBS | Task | Duration | Start | Finish | Predecessors | Complete | Total float | Constraint |
| --- | --- | --- | --- | --- | --- | --- | --- | --- | --- |
| 1 | 1 | **Program Management** | 509d | 2025-10-01 A | 2027-11-12 |  | 90% | 52d |  |
| 2 |  | PMO Setup and Governance Definition | 10d | 2025-10-01 A | 2025-10-15 A |  | 100% |  |  |
| 3 |  | Program Master Schedule Baseline | 15d | 2025-10-16 A | 2025-11-06 A | 2 | 100% |  |  |
| 4 |  | Risk and Issue Management Setup | 8d | 2025-10-16 A | 2025-10-27 A | 2 | 100% |  |  |
| 5 |  | Quality Management Plan | 8d | 2025-10-16 A | 2025-10-27 A | 2 | 100% |  |  |
| 6 | 1.5 | **Steering Committee** | 479d | 2025-11-14 A | 2027-11-12 |  | 44% | 52d |  |
| 7 |  | Steering Committee #1 | 1d | 2025-11-14 A | 2025-11-14 A |  | 100% |  | start no earlier than 2025-11-14 |
| 8 |  | Steering Committee #2 | 1d | 2026-02-13 A | 2026-02-13 A |  | 100% |  | start no earlier than 2026-02-13 |
| 9 |  | Steering Committee #3 | 1d | 2026-05-15 A | 2026-05-15 A |  | 100% |  | start no earlier than 2026-05-15 |
| 10 |  | Steering Committee #4 | 1d | 2026-08-17 A | 2026-08-17 A |  | 100% |  | start no earlier than 2026-08-14 |
| 11 |  | Steering Committee #5 | 1d | 2026-11-13 | 2026-11-13 |  |  | 292d | start no earlier than 2026-11-13 |
| 12 |  | Steering Committee #6 | 1d | 2027-02-12 | 2027-02-12 |  |  | 234d | start no earlier than 2027-02-12 |
| 13 |  | Steering Committee #7 | 1d | 2027-05-14 | 2027-05-14 |  |  | 175d | start no earlier than 2027-05-14 |
| 14 |  | Steering Committee #8 | 1d | 2027-08-16 | 2027-08-16 |  |  | 112d | start no earlier than 2027-08-13 |
| 15 |  | Steering Committee #9 | 1d | 2027-11-12 | 2027-11-12 |  |  | 52d | start no earlier than 2027-11-12 |
| 16 | 2 | **Program Initiation** | 113d | 2025-10-01 A | 2026-03-24 A |  | 100% |  |  |
| 17 |  | Business Case Validation | 15d | 2025-10-01 A | 2025-10-22 A |  | 100% |  |  |
| 18 |  | Program Scope Definition | 10d | 2025-10-23 A | 2025-11-06 A | 17 | 100% |  |  |
| 19 |  | Package Fit Assessment | 15d | 2025-11-07 A | 2025-11-28 A | 18 | 100% |  |  |
| 20 |  | RFP Preparation and Release | 15d | 2025-12-01 A | 2025-12-19 A | 19 | 100% |  |  |
| 21 |  | Vendor Proposal Evaluation | 20d | 2025-12-22 A | 2026-01-26 A | 20 | 100% |  |  |
| 22 |  | Contract Negotiation | 21d | 2026-01-27 A | 2026-02-26 A | 21 | 100% |  |  |
| 23 |  | Contract Signed | 0d | 2026-02-26 A | 2026-02-26 A | 22 | 100% |  |  |
| 24 |  | ERP License Procurement | 10d | 2026-02-27 A | 2026-03-12 A | 23 | 100% |  |  |
| 25 |  | Team Mobilization | 15d | 2026-02-27 A | 2026-03-19 A | 23 | 100% |  |  |
| 26 |  | Program Kickoff | 2d | 2026-03-23 A | 2026-03-24 A | 25, 3 | 100% |  |  |
| 27 |  | Program Started | 0d | 2026-03-24 A | 2026-03-24 A | 26 | 100% |  |  |
| 28 | 3 | **Technical Architecture and Infrastructure** | 113d | 2026-03-25 A | 2026-09-09 |  | 89% | -16d |  |
| 29 |  | Technical Architecture Design | 20d | 2026-03-25 A | 2026-04-21 A | 27 | 100% |  |  |
| 30 |  | Sizing and Capacity Planning | 10d | 2026-04-22 A | 2026-05-11 A | 29 | 100% |  |  |
| 31 |  | Network and WAN Design | 12d | 2026-04-22 A | 2026-05-13 A | 29 | 100% |  |  |
| 32 |  | Security and Authorization Concept | 15d | 2026-04-22 A | 2026-05-18 A | 29 | 100% |  |  |
| 33 |  | Hardware and Cloud Procurement | 25d | 2026-05-12 A | 2026-06-15 A | 30 | 100% |  |  |
| 34 |  | Sandbox System Build | 10d | 2026-04-22 A | 2026-05-11 A | 24, 29 | 100% |  |  |
| 35 |  | Development System Build | 12d | 2026-06-16 A | 2026-07-01 A | 33, 34 | 100% |  |  |
| 36 |  | QA System Build | 12d | 2026-07-02 A | 2026-07-17 A | 35 | 100% |  |  |
| 37 |  | Production System Build | 18d | 2026-07-21 A | 2026-08-18 A | 36 | 100% |  |  |
| 38 |  | Disaster Recovery Site Build | 15d | 2026-08-19 A | 2026-09-08 | 37 | 40% | -15d |  |
| 39 |  | Transport Route and Change Control Setup | 6d | 2026-07-21 A | 2026-07-28 A | 36 | 100% |  |  |
| 40 |  | Backup and Restore Design | 8d | 2026-07-28 A | 2026-08-06 A | 37SS+5d | 100% |  |  |
| 41 |  | System Monitoring Setup | 8d | 2026-08-19 A | 2026-08-28 | 37 | 75% | -8d |  |
| 42 |  | Identity Management Integration | 10d | 2026-07-21 A | 2026-08-03 A | 32, 36 | 100% |  |  |
| 43 |  | Security Hardening | 10d | 2026-08-19 A | 2026-09-01 | 37, 42 | 60% | -16d |  |
| 44 |  | Performance Baseline Measurement | 6d | 2026-09-02 | 2026-09-09 | 43 |  | -16d |  |
| 45 |  | Technical Readiness Confirmed | 0d | 2026-09-09 | 2026-09-09 | 44, 41, 40, 38, 39 |  | -16d |  |
| 46 | 4 | **Business Blueprint** | 73.5d | 2026-03-25 A | 2026-07-10 A |  | 100% |  |  |
| 47 |  | Blueprint Preparation and Workshop Planning | 8d | 2026-03-25 A | 2026-04-03 A | 27 | 100% |  |  |
| 48 | 4.2 | **Blueprint - Finance and Controlling** | 58d | 2026-04-06 A | 2026-06-30 A |  | 100% |  |  |
| 49 |  | As-Is Process Documentation - Finance and Controlling | 12d | 2026-04-06 A | 2026-04-21 A | 47 | 100% |  |  |
| 50 |  | Fit / Gap Workshops - Finance and Controlling | 15d | 2026-04-22 A | 2026-05-18 A | 49 | 100% |  |  |
| 51 |  | To-Be Process Design - Finance and Controlling | 15d | 2026-05-19 A | 2026-06-08 A | 50 | 100% |  |  |
| 52 |  | Gap Resolution Decision - Finance and Controlling | 6d | 2026-06-09 A | 2026-06-16 A | 51 | 100% |  |  |
| 53 |  | Blueprint Document - Finance and Controlling | 10d | 2026-06-17 A | 2026-06-30 A | 52 | 100% |  |  |
| 54 |  | Blueprint Sign-off - Finance and Controlling | 0d | 2026-06-30 A | 2026-06-30 A | 53 | 100% |  |  |
| 55 | 4.3 | **Blueprint - Procurement and Inventory** | 58d | 2026-04-06 A | 2026-06-30 A |  | 100% |  |  |
| 56 |  | As-Is Process Documentation - Procurement and Inventory | 12d | 2026-04-06 A | 2026-04-21 A | 47 | 100% |  |  |
| 57 |  | Fit / Gap Workshops - Procurement and Inventory | 15d | 2026-04-22 A | 2026-05-18 A | 56 | 100% |  |  |
| 58 |  | To-Be Process Design - Procurement and Inventory | 15d | 2026-05-19 A | 2026-06-08 A | 57 | 100% |  |  |
| 59 |  | Gap Resolution Decision - Procurement and Inventory | 6d | 2026-06-09 A | 2026-06-16 A | 58 | 100% |  |  |
| 60 |  | Blueprint Document - Procurement and Inventory | 10d | 2026-06-17 A | 2026-06-30 A | 59 | 100% |  |  |
| 61 |  | Blueprint Sign-off - Procurement and Inventory | 0d | 2026-06-30 A | 2026-06-30 A | 60 | 100% |  |  |
| 62 | 4.4 | **Blueprint - Production Planning** | 60.5d | 2026-04-06 A | 2026-07-03 A |  | 100% |  |  |
| 63 |  | As-Is Process Documentation - Production Planning | 12d | 2026-04-06 A | 2026-04-21 A | 47 | 100% |  |  |
| 64 |  | Fit / Gap Workshops - Production Planning | 15d | 2026-04-22 A | 2026-05-18 A | 63 | 100% |  |  |
| 65 |  | To-Be Process Design - Production Planning | 15d | 2026-05-19 A | 2026-06-08 A | 64 | 100% |  |  |
| 66 |  | Gap Resolution Decision - Production Planning | 6d | 2026-06-09 A | 2026-06-16 A | 65 | 100% |  |  |
| 67 |  | Blueprint Document - Production Planning | 12.5d | 2026-06-17 A | 2026-07-03 A | 66 | 100% |  |  |
| 68 |  | Blueprint Sign-off - Production Planning | 0d | 2026-07-03 A | 2026-07-03 A | 67 | 100% |  |  |
| 69 | 4.5 | **Blueprint - Sales and Distribution** | 60.5d | 2026-04-06 A | 2026-07-03 A |  | 100% |  |  |
| 70 |  | As-Is Process Documentation - Sales and Distribution | 12d | 2026-04-06 A | 2026-04-21 A | 47 | 100% |  |  |

| ID | WBS | Task | Duration | Start | Finish | Predecessors | Complete | Total float |
| --- | --- | --- | --- | --- | --- | --- | --- | --- |
| 71 |  | Fit / Gap Workshops - Sales and Distribution | 15d | 2026-04-22 A | 2026-05-18 A | 70 | 100% |  |
| 72 |  | To-Be Process Design - Sales and Distribution | 15d | 2026-05-19 A | 2026-06-08 A | 71 | 100% |  |
| 73 |  | Gap Resolution Decision - Sales and Distribution | 6d | 2026-06-09 A | 2026-06-16 A | 72 | 100% |  |
| 74 |  | Blueprint Document - Sales and Distribution | 12.5d | 2026-06-17 A | 2026-07-03 A | 73 | 100% |  |
| 75 |  | Blueprint Sign-off - Sales and Distribution | 0d | 2026-07-03 A | 2026-07-03 A | 74 | 100% |  |
| 76 |  | Blueprint Quality Gate | 5d | 2026-07-03 A | 2026-07-10 A | 54, 61, 68, 75 | 100% |  |
| 77 |  | Blueprint Phase Complete | 0d | 2026-07-10 A | 2026-07-10 A | 76 | 100% |  |
| 78 | 5 | **Realization** | 116d | 2026-07-01 A | 2026-12-22 |  | 25% | -16d |
| 79 | 5.1 | **Realization - Finance and Controlling** | 116d | 2026-07-01 A | 2026-12-22 |  | 25% | -16d |
| 80 |  | Baseline Configuration - Finance and Controlling | 20d | 2026-09-10 | 2026-10-09 | 54, 45 |  | -16d |
| 81 |  | Master Data Design - Finance and Controlling | 12d | 2026-09-17 | 2026-10-06 | 80SS+5d |  | -13d |
| 82 |  | Authorization Role Design - Finance and Controlling | 10d | 2026-10-13 | 2026-10-26 | 80, 32 |  | 8d |
| 83 |  | Final Configuration - Finance and Controlling | 30d | 2026-10-13 | 2026-11-25 | 80, 81 |  | -16d |
| 84 |  | RICEFW Specification - Finance and Controlling | 15d | 2026-07-01 A | 2026-07-22 A | 54 | 100% |  |
| 85 |  | Add-on Development - Finance and Controlling | 36d | 2026-07-23 A | 2026-09-15 | 84, 35 | 61% | 38d |
| 86 |  | Unit Test - Finance and Controlling | 12d | 2026-08-25 A | 2026-09-09 | 85SS+20d | 17% | 38d |
| 87 |  | Playback Session - Finance and Controlling | 4d | 2026-11-26 | 2026-12-01 | 83 |  | -16d |
| 88 |  | Module Integration Test - Finance and Controlling | 15d | 2026-12-02 | 2026-12-22 | 86, 87, 82 |  | -16d |
| 89 |  | Module Ready - Finance and Controlling | 0d | 2026-12-22 | 2026-12-22 | 88 |  | -16d |
| 90 | 5.2 | **Realization - Procurement and Inventory** | 111d | 2026-07-01 A | 2026-12-15 |  | 27% | -11d |
| 91 |  | Baseline Configuration - Procurement and Inventory | 20d | 2026-09-10 | 2026-10-09 | 61, 45 |  | -11d |
| 92 |  | Master Data Design - Procurement and Inventory | 12d | 2026-09-17 | 2026-10-06 | 91SS+5d |  | -8d |
| 93 |  | Authorization Role Design - Procurement and Inventory | 10d | 2026-10-13 | 2026-10-26 | 91, 32 |  | 8d |
| 94 |  | Final Configuration - Procurement and Inventory | 25d | 2026-10-13 | 2026-11-17 | 91, 92 |  | -11d |
| 95 |  | RICEFW Specification - Procurement and Inventory | 15d | 2026-07-01 A | 2026-07-22 A | 61 | 100% |  |
| 96 |  | Add-on Development - Procurement and Inventory | 30d | 2026-07-23 A | 2026-09-07 | 95, 35 | 73% | 38d |
| 97 |  | Unit Test - Procurement and Inventory | 12d | 2026-08-25 A | 2026-09-09 | 96SS+20d | 17% | 38d |
| 98 |  | Playback Session - Procurement and Inventory | 4d | 2026-11-18 | 2026-11-24 | 94 |  | -11d |
| 99 |  | Module Integration Test - Procurement and Inventory | 15d | 2026-11-25 | 2026-12-15 | 97, 98, 93 |  | -11d |
| 100 |  | Module Ready - Procurement and Inventory | 0d | 2026-12-15 | 2026-12-15 | 99 |  | -11d |
| 101 | 5.3 | **Realization - Production Planning** | 108.5d | 2026-07-03 A | 2026-12-15 |  | 24% | -11d |
| 102 |  | Baseline Configuration - Production Planning | 20d | 2026-09-10 | 2026-10-09 | 68, 45 |  | -11d |
| 103 |  | Master Data Design - Production Planning | 12d | 2026-09-17 | 2026-10-06 | 102SS+5d |  | -8d |
| 104 |  | Authorization Role Design - Production Planning | 10d | 2026-10-13 | 2026-10-26 | 102, 32 |  | 8d |
| 105 |  | Final Configuration - Production Planning | 25d | 2026-10-13 | 2026-11-17 | 102, 103 |  | -11d |
| 106 |  | RICEFW Specification - Production Planning | 15d | 2026-07-03 A | 2026-07-27 A | 68 | 100% |  |
| 107 |  | Add-on Development - Production Planning | 30d | 2026-07-27 A | 2026-09-10 | 106, 35 | 65% | 35.5d |
| 108 |  | Unit Test - Production Planning | 12d | 2026-08-27 | 2026-09-14 | 107SS+20d |  | 35.5d |
| 109 |  | Playback Session - Production Planning | 4d | 2026-11-18 | 2026-11-24 | 105 |  | -11d |
| 110 |  | Module Integration Test - Production Planning | 15d | 2026-11-25 | 2026-12-15 | 108, 109, 104 |  | -11d |
| 111 |  | Module Ready - Production Planning | 0d | 2026-12-15 | 2026-12-15 | 110 |  | -11d |
| 112 | 5.4 | **Realization - Sales and Distribution** | 108.5d | 2026-07-03 A | 2026-12-15 |  | 24% | -11d |
| 113 |  | Baseline Configuration - Sales and Distribution | 20d | 2026-09-10 | 2026-10-09 | 75, 45 |  | -11d |
| 114 |  | Master Data Design - Sales and Distribution | 12d | 2026-09-17 | 2026-10-06 | 113SS+5d |  | -8d |
| 115 |  | Authorization Role Design - Sales and Distribution | 10d | 2026-10-13 | 2026-10-26 | 113, 32 |  | 8d |
| 116 |  | Final Configuration - Sales and Distribution | 25d | 2026-10-13 | 2026-11-17 | 113, 114 |  | -11d |
| 117 |  | RICEFW Specification - Sales and Distribution | 15d | 2026-07-03 A | 2026-07-27 A | 75 | 100% |  |
| 118 |  | Add-on Development - Sales and Distribution | 30d | 2026-07-27 A | 2026-09-10 | 117, 35 | 65% | 35.5d |
| 119 |  | Unit Test - Sales and Distribution | 12d | 2026-08-27 | 2026-09-14 | 118SS+20d |  | 35.5d |
| 120 |  | Playback Session - Sales and Distribution | 4d | 2026-11-18 | 2026-11-24 | 116 |  | -11d |
| 121 |  | Module Integration Test - Sales and Distribution | 15d | 2026-11-25 | 2026-12-15 | 119, 120, 115 |  | -11d |
| 122 |  | Module Ready - Sales and Distribution | 0d | 2026-12-15 | 2026-12-15 | 121 |  | -11d |
| 123 | 6 | **Interfaces and Integration** | 151d | 2026-04-22 A | 2026-12-07 |  | 30% | -5d |
| 124 |  | Interface Inventory and Strategy | 10d | 2026-04-22 A | 2026-05-11 A | 29 | 100% |  |
| 125 | 6.2 | **Bank Payment Interface** | 105d | 2026-07-01 A | 2026-12-07 |  | 26% | -5d |
| 126 |  | Interface Specification - Bank Payment Interface | 8d | 2026-07-01 A | 2026-07-10 A | 124, 54 | 100% |  |
| 127 |  | Interface Development - Bank Payment Interface | 15d | 2026-10-13 | 2026-11-02 | 126, 35, 80 |  | 10d |
| 128 |  | Interface Connection Test - Bank Payment Interface | 8d | 2026-11-26 | 2026-12-07 | 127, 36, 83 |  | -5d |
| 129 | 6.3 | **Supplier EDI Interface** | 100d | 2026-07-01 A | 2026-11-30 |  | 26% | 0d |
| 130 |  | Interface Specification - Supplier EDI Interface | 8d | 2026-07-01 A | 2026-07-10 A | 124, 61 | 100% |  |
| 131 |  | Interface Development - Supplier EDI Interface | 15d | 2026-10-13 | 2026-11-02 | 130, 35, 91 |  | 10d |
| 132 |  | Interface Connection Test - Supplier EDI Interface | 8d | 2026-11-18 | 2026-11-30 | 131, 36, 94 |  | 0d |
| 133 | 6.4 | **Warehouse Management Interface** | 100d | 2026-07-01 A | 2026-11-30 |  | 26% | 0d |
| 134 |  | Interface Specification - Warehouse Management Interface | 8d | 2026-07-01 A | 2026-07-10 A | 124, 61 | 100% |  |
| 135 |  | Interface Development - Warehouse Management Interface | 15d | 2026-10-13 | 2026-11-02 | 134, 35, 91 |  | 10d |
| 136 |  | Interface Connection Test - Warehouse Management Interface | 8d | 2026-11-18 | 2026-11-30 | 135, 36, 94 |  | 0d |
| 137 | 6.5 | **Manufacturing Execution Interface** | 97.5d | 2026-07-03 A | 2026-11-30 |  | 26% | 0d |
| 138 |  | Interface Specification - Manufacturing Execution Interface | 8d | 2026-07-03 A | 2026-07-15 A | 124, 68 | 100% |  |
| 139 |  | Interface Development - Manufacturing Execution Interface | 15d | 2026-10-13 | 2026-11-02 | 138, 35, 102 |  | 10d |
| 140 |  | Interface Connection Test - Manufacturing Execution Interface | 8d | 2026-11-18 | 2026-11-30 | 139, 36, 105 |  | 0d |

| ID | WBS | Task | Duration | Start | Finish | Predecessors | Complete | Total float |
| --- | --- | --- | --- | --- | --- | --- | --- | --- |
| 141 | 6.6 | **CRM Interface** | 97.5d | 2026-07-03 A | 2026-11-30 |  | 26% | 0d |
| 142 |  | Interface Specification - CRM Interface | 8d | 2026-07-03 A | 2026-07-15 A | 124, 75 | 100% |  |
| 143 |  | Interface Development - CRM Interface | 15d | 2026-10-13 | 2026-11-02 | 142, 35, 113 |  | 10d |
| 144 |  | Interface Connection Test - CRM Interface | 8d | 2026-11-18 | 2026-11-30 | 143, 36, 116 |  | 0d |
| 145 | 6.7 | **BI and Consolidation Interface** | 105d | 2026-07-01 A | 2026-12-07 |  | 26% | -5d |
| 146 |  | Interface Specification - BI and Consolidation Interface | 8d | 2026-07-01 A | 2026-07-10 A | 124, 54 | 100% |  |
| 147 |  | Interface Development - BI and Consolidation Interface | 15d | 2026-10-13 | 2026-11-02 | 146, 35, 80 |  | 10d |
| 148 |  | Interface Connection Test - BI and Consolidation Interface | 8d | 2026-11-26 | 2026-12-07 | 147, 36, 83 |  | -5d |
| 149 |  | Interfaces Ready | 0d | 2026-12-07 | 2026-12-07 | 128, 132, 136, 140, 144, 148 |  | -5d |
| 150 | 7 | **Data Migration** | 324d | 2026-03-25 A | 2027-07-27 |  | 66% | -14d |
| 151 |  | Data Migration Strategy | 12d | 2026-03-25 A | 2026-04-09 A | 27 | 100% |  |
| 152 |  | Migration Tool and Framework Build | 20d | 2026-07-02 A | 2026-07-30 A | 151, 35 | 100% |  |
| 153 | 7.3 | **Migration Object - Customer Master** | 83d | 2026-04-10 A | 2026-08-12 A |  | 100% |  |
| 154 |  | Mapping and Extraction - Customer Master | 10d | 2026-04-10 A | 2026-04-23 A | 151, 47 | 100% |  |
| 155 |  | Load and Verification - Customer Master | 8d | 2026-07-31 A | 2026-08-12 A | 154, 152 | 100% |  |
| 156 | 7.4 | **Migration Object - Vendor Master** | 83d | 2026-04-10 A | 2026-08-12 A |  | 100% |  |
| 157 |  | Mapping and Extraction - Vendor Master | 10d | 2026-04-10 A | 2026-04-23 A | 151, 47 | 100% |  |
| 158 |  | Load and Verification - Vendor Master | 8d | 2026-07-31 A | 2026-08-12 A | 157, 152 | 100% |  |
| 159 | 7.5 | **Migration Object - Material Master** | 83d | 2026-04-10 A | 2026-08-12 A |  | 100% |  |
| 160 |  | Mapping and Extraction - Material Master | 10d | 2026-04-10 A | 2026-04-23 A | 151, 47 | 100% |  |
| 161 |  | Load and Verification - Material Master | 8d | 2026-07-31 A | 2026-08-12 A | 160, 152 | 100% |  |
| 162 | 7.6 | **Migration Object - BOM and Routing** | 18d | 2026-08-17 A | 2026-09-09 |  | 44% | 13d |
| 163 |  | Mapping and Extraction - BOM and Routing | 10d | 2026-08-17 A | 2026-08-28 | 151, 47, 155 | 80% | 13d |
| 164 |  | Load and Verification - BOM and Routing | 8d | 2026-08-31 | 2026-09-09 | 163, 152 |  | 13d |
| 165 | 7.7 | **Migration Object - Open Purchase and Sales Orders** | 18d | 2026-08-17 A | 2026-09-09 |  | 44% | 31d |
| 166 |  | Mapping and Extraction - Open Purchase and Sales Orders | 10d | 2026-08-17 A | 2026-08-28 | 151, 47, 158 | 80% | 31d |
| 167 |  | Load and Verification - Open Purchase and Sales Orders | 8d | 2026-08-31 | 2026-09-09 | 166, 152 |  | 31d |
| 168 | 7.8 | **Migration Object - General Ledger Balances** | 18d | 2026-08-17 A | 2026-09-09 |  | 44% | 31d |
| 169 |  | Mapping and Extraction - General Ledger Balances | 10d | 2026-08-17 A | 2026-08-28 | 151, 47, 161 | 80% | 31d |
| 170 |  | Load and Verification - General Ledger Balances | 8d | 2026-08-31 | 2026-09-09 | 169, 152 |  | 31d |
| 171 | 7.9 | **Migration Object - Fixed Assets** | 18d | 2026-09-10 | 2026-10-07 |  |  | 13d |
| 172 |  | Mapping and Extraction - Fixed Assets | 10d | 2026-09-10 | 2026-09-25 | 151, 47, 164 |  | 13d |
| 173 |  | Load and Verification - Fixed Assets | 8d | 2026-09-28 | 2026-10-07 | 172, 152 |  | 13d |
| 174 |  | Master Data Cleansing | 52d | 2026-04-24 A | 2026-07-10 A | 154, 157, 160 | 100% |  |
| 175 |  | Reconciliation Rules Design | 10d | 2026-04-10 A | 2026-04-23 A | 151 | 100% |  |
| 176 |  | Mock Migration Run 1 | 12d | 2026-10-08 | 2026-10-26 | 174, 170, 173, 167, 164 |  | 13d |
| 177 |  | Mock Migration Run 2 | 10d | 2027-01-27 | 2027-02-09 | 176FS+10d, 186 |  | 34d |
| 178 |  | Mock Migration Run 3 (Production Dry Run) | 8d | 2027-06-29 | 2027-07-08 | 177FS+10d, 37, 204 |  | -14d |
| 179 |  | Migration Data Quality Verification | 12d | 2027-07-09 | 2027-07-27 | 178, 175 |  | -11d |
| 180 |  | Data Migration Ready | 0d | 2027-07-27 | 2027-07-27 | 179 |  | -11d |
| 181 | 8 | **Integrated Testing** | 253.5d | 2026-07-10 A | 2027-07-30 |  | 12% | -16d |
| 182 | 8.1 | **System Integration Test** | 173.5d | 2026-07-10 A | 2027-04-02 |  | 20% | -16d |
| 183 |  | SIT Planning | 12d | 2026-07-10 A | 2026-07-29 A | 77 | 100% |  |
| 184 |  | SIT Scenario and Case Creation | 30d | 2026-07-29 A | 2026-09-14 | 183 | 58% | 50.5d |
| 185 |  | SIT Environment and Data Preparation | 10d | 2026-10-27 | 2026-11-10 | 176, 36 |  | 13d |
| 186 |  | SIT Cycle 1 | 20d | 2026-12-23 | 2027-01-26 | 184, 185, 149, 89, 100, 111, 122 |  | -16d |
| 187 |  | Defect Resolution - Cycle 1 | 25d | 2027-01-05 | 2027-02-09 | 186SS+5d |  | -16d |
| 188 |  | SIT Cycle 2 | 18d | 2027-02-10 | 2027-03-09 | 186, 187 |  | -16d |
| 189 |  | Defect Resolution - Cycle 2 | 15d | 2027-02-18 | 2027-03-11 | 188SS+5d |  | -16d |
| 190 |  | SIT Cycle 3 (End-to-End) | 15d | 2027-03-12 | 2027-04-02 | 188, 189 |  | -16d |
| 191 |  | SIT Complete | 0d | 2027-04-02 | 2027-04-02 | 190 |  | -16d |
| 192 | 8.2 | **Performance and Security Test** | 82d | 2027-01-27 | 2027-05-31 |  |  | -16d |
| 193 |  | Performance Test Scenario Design | 12d | 2027-01-27 | 2027-02-12 | 186 |  | 29d |
| 194 |  | Performance and Volume Test | 15d | 2027-04-05 | 2027-04-23 | 193, 191 |  | -4d |
| 195 |  | Performance Tuning | 20d | 2027-04-12 | 2027-05-13 | 194SS+5d |  | -4d |
| 196 |  | Vulnerability Assessment | 12d | 2027-04-05 | 2027-04-20 | 191 |  | -16d |
| 197 |  | Penetration Test | 10d | 2027-04-21 | 2027-05-10 | 196 |  | -16d |
| 198 |  | Security Remediation | 15d | 2027-05-11 | 2027-05-31 | 197 |  | -16d |
| 199 |  | Non-functional Test Complete | 0d | 2027-05-31 | 2027-05-31 | 195, 198 |  | -16d |
| 200 | 8.3 | **User Acceptance Test** | 241.5d | 2026-07-29 A | 2027-07-30 |  | 11% | -16d |
| 201 |  | UAT Planning | 10d | 2026-07-29 A | 2026-08-17 A | 183 | 100% |  |
| 202 |  | UAT Data and Environment Preparation | 12d | 2027-04-05 | 2027-04-20 | 191, 177 |  | -1d |
| 203 |  | Key User Training for UAT | 10d | 2027-04-21 | 2027-05-10 | 202 |  | -1d |
| 204 |  | UAT Wave 1 (Finance and Procurement) | 20d | 2027-06-01 | 2027-06-28 | 203, 199 |  | -16d |
| 205 |  | UAT Defect Resolution | 18d | 2027-06-08 | 2027-07-01 | 204SS+5d |  | -16d |
| 206 |  | UAT Wave 2 (Production and Sales) | 20d | 2027-07-02 | 2027-07-30 | 204, 205 |  | -16d |
| 207 |  | UAT Sign-off | 0d | 2027-07-30 | 2027-07-30 | 206 |  | -16d |
| 208 | 9 | **Organizational Change and Training** | 232d | 2026-03-25 A | 2027-03-11 |  | 38% | 81d |
| 209 |  | Change Impact Assessment | 20d | 2026-06-09 A | 2026-07-06 A | 51, 72 | 100% |  |
| 210 |  | Stakeholder Analysis | 10d | 2026-03-25 A | 2026-04-07 A | 27 | 100% |  |

| ID | WBS | Task | Duration | Start | Finish | Predecessors | Complete | Total float |
| --- | --- | --- | --- | --- | --- | --- | --- | --- |
| 211 |  | Communication Plan | 10d | 2026-04-08 A | 2026-04-21 A | 210 | 100% |  |
| 212 |  | Change Communication - FY2026 H1 | 20d | 2026-04-22 A | 2026-05-25 A | 211 | 100% |  |
| 213 |  | Change Communication - FY2026 H2 | 20d | 2026-07-22 A | 2026-08-21 A | 212FS+40d | 100% |  |
| 214 |  | Change Communication - FY2027 H1 | 20d | 2026-10-22 | 2026-11-19 | 213FS+40d |  | 228d |
| 215 |  | Change Communication - FY2027 H2 | 20d | 2027-01-25 | 2027-02-22 | 214FS+40d |  | 228d |
| 216 |  | Training Strategy and Curriculum | 12d | 2026-07-07 A | 2026-07-23 A | 209 | 100% |  |
| 217 |  | Training Material - Finance and Controlling | 15d | 2026-12-02 | 2026-12-22 | 216, 87 |  | 81d |
| 218 |  | Training Material - Procurement and Inventory | 15d | 2026-11-25 | 2026-12-15 | 216, 98 |  | 86d |
| 219 |  | Training Material - Production Planning | 15d | 2026-11-25 | 2026-12-15 | 216, 109 |  | 86d |
| 220 |  | Training Material - Sales and Distribution | 15d | 2026-11-25 | 2026-12-15 | 216, 120 |  | 86d |
| 221 |  | Train the Trainer | 12d | 2026-12-23 | 2027-01-14 | 217, 218, 219, 220 |  | 81d |
| 222 |  | End User Training - Head Office | 10d | 2027-01-15 | 2027-01-28 | 221 |  | 81d |
| 223 |  | End User Training - Kanto Plant | 10d | 2027-01-29 | 2027-02-12 | 222 |  | 81d |
| 224 |  | End User Training - Kansai Plant | 10d | 2027-02-15 | 2027-03-01 | 223 |  | 81d |
| 225 |  | Training Effectiveness Review | 8d | 2027-03-02 | 2027-03-11 | 224 |  | 81d |
| 226 |  | Organization Ready | 0d | 2027-03-11 | 2027-03-11 | 225 |  | 81d |
| 227 | 10 | **Cutover Wave 1 (Finance and Procurement)** | 119d | 2027-04-05 | 2027-09-29 |  |  | -70.12d |
| 228 |  | Cutover Plan - Wave 1 | 20d | 2027-04-05 | 2027-05-06 | 191 |  | 31d |
| 229 |  | Cutover Dress Rehearsal 1 - Wave 1 | 12d | 2027-07-08 | 2027-07-12 | 228, 178 |  | -55.12d |
| 230 |  | Cutover Dress Rehearsal 2 - Wave 1 | 9d | 2027-07-30 | 2027-08-02 | 229FS+45d, 207 |  | -64.12d |
| 231 |  | Cutover Readiness Review - Wave 1 | 3d | 2027-08-03 | 2027-08-05 | 230, 226, 180 |  | -15d |
| 232 |  | Business Data Freeze - Wave 1 | 2d | 2027-08-06 | 2027-08-09 | 231 |  | -15d |
| 233 |  | Production Data Migration - Wave 1 | 9d | 2027-08-09 | 2027-08-12 | 232 |  | -70.12d |
| 234 |  | Post-migration Validation - Wave 1 | 6d | 2027-08-12 | 2027-08-14 | 233 |  | -70.12d |
| 235 |  | Go / No-Go Decision - Wave 1 | 1d | 2027-08-16 | 2027-08-16 | 234 |  | -15d |
| 236 |  | Go-Live Wave 1 | 0d | 2027-08-16 | 2027-08-16 | 235 |  | -15d |
| 237 |  | Hypercare - Wave 1 | 30d | 2027-08-17 | 2027-09-29 | 236 |  | -13d |
| 238 | 11 | **Cutover Wave 2 (Production and Sales)** | 71d | 2027-08-17 | 2027-11-30 |  |  | -61.12d |
| 239 |  | Cutover Plan - Wave 2 | 15d | 2027-08-17 | 2027-09-06 | 236 |  | 2d |
| 240 |  | Cutover Dress Rehearsal - Wave 2 | 12d | 2027-09-29 | 2027-10-03 | 239, 237 |  | -61.12d |
| 241 |  | Cutover Readiness Review - Wave 2 | 3d | 2027-10-04 | 2027-10-06 | 240 |  | -13d |
| 242 |  | Business Data Freeze - Wave 2 | 2d | 2027-10-07 | 2027-10-08 | 241 |  | -13d |
| 243 |  | Production Data Migration - Wave 2 | 12d | 2027-10-08 | 2027-10-12 | 242 |  | -61.12d |
| 244 |  | Post-migration Validation - Wave 2 | 6d | 2027-10-12 | 2027-10-14 | 243 |  | -61.12d |
| 245 |  | Go / No-Go Decision - Wave 2 | 1d | 2027-10-15 | 2027-10-15 | 244 |  | -14d |
| 246 |  | Go-Live Wave 2 | 0d | 2027-10-15 | 2027-10-15 | 245 |  | -14d |
| 247 |  | Hypercare - Wave 2 | 30d | 2027-10-18 | 2027-11-30 | 246 |  | 0d |
| 248 | 12 | **Program Closure** | 111d | 2027-08-18 | 2028-02-02 |  |  | 0d |
| 249 |  | System Stabilization Review | 15d | 2027-12-01 | 2027-12-21 | 247 |  | 0d |
| 250 |  | Benefits Realization Measurement | 20d | 2027-12-22 | 2028-01-25 | 249 |  | 0d |
| 251 |  | Handover to Application Support | 20d | 2027-11-01 | 2027-11-30 | 247FF |  | 15d |
| 252 |  | Legacy System Parallel Operation | 40d | 2027-08-18 | 2027-10-15 | 246SF |  | 45d |
| 253 |  | Legacy System Decommissioning | 25d | 2027-12-01 | 2028-01-11 | 251, 252 |  | 15d |
| 254 |  | Lessons Learned Workshop | 5d | 2028-01-26 | 2028-02-01 | 250 |  | 0d |
| 255 |  | Final Steering Committee | 1d | 2028-02-02 | 2028-02-02 | 254, 253 |  | 0d |
| 256 |  | Program Closed | 0d | 2028-02-02 | 2028-02-02 | 255 |  | 0d |

## Version 2 (data date 2026-12-09, saved 2026-12-09)

Note of the change: Merge commit '63a8c69f3d29bd509431223d0e748eae3db72524' into spec-pass-1001

Last finish stays 2028-02-02. Complete tasks 87 → 134.

Changed:

| ID | Task | Start | Finish | Complete | Total float |
| --- | --- | --- | --- | --- | --- |
| 1 | **Program Management** |  |  | 90% → 57% |  |
| 6 | **Steering Committee** |  |  | 44% → 54% |  |
| 11 | Steering Committee #5 | 2026-11-13 A |  | 0% → 90% |  |
| 28 | **Technical Architecture and Infrastructure** |  | 2026-09-09 A | 89% → 100% | -16d → none |
| 38 | Disaster Recovery Site Build |  | 2026-09-08 A | 40% → 100% | -15d → none |
| 41 | System Monitoring Setup |  | 2026-08-28 A | 75% → 100% | -8d → none |
| 43 | Security Hardening |  | 2026-09-01 A | 60% → 100% | -16d → none |
| 44 | Performance Baseline Measurement | 2026-09-02 A | 2026-09-09 A | 0% → 100% | -16d → none |
| 45 | Technical Readiness Confirmed | 2026-09-09 A | 2026-09-09 A | 0% → 100% | -16d → none |
| 78 | **Realization** |  |  | 25% → 89% |  |
| 79 | **Realization - Finance and Controlling** |  |  | 25% → 90% |  |
| 80 | Baseline Configuration - Finance and Controlling | 2026-09-10 A | 2026-10-09 A | 0% → 100% | -16d → none |
| 81 | Master Data Design - Finance and Controlling | 2026-09-17 A | 2026-10-06 A | 0% → 100% | -13d → none |
| 82 | Authorization Role Design - Finance and Controlling | 2026-10-13 A | 2026-10-26 A | 0% → 100% | 8d → none |
| 83 | Final Configuration - Finance and Controlling | 2026-10-13 A | 2026-11-25 A | 0% → 100% | -16d → none |
| 85 | Add-on Development - Finance and Controlling |  | 2026-09-15 A | 61% → 100% | 38d → none |
| 86 | Unit Test - Finance and Controlling |  | 2026-09-09 A | 17% → 100% | 38d → none |
| 87 | Playback Session - Finance and Controlling | 2026-11-26 A |  | 0% → 90% |  |
| 90 | **Realization - Procurement and Inventory** |  |  | 27% → 89% |  |
| 91 | Baseline Configuration - Procurement and Inventory | 2026-09-10 A | 2026-10-09 A | 0% → 100% | -11d → none |
| 92 | Master Data Design - Procurement and Inventory | 2026-09-17 A | 2026-10-06 A | 0% → 100% | -8d → none |
| 93 | Authorization Role Design - Procurement and Inventory | 2026-10-13 A | 2026-10-26 A | 0% → 100% | 8d → none |
| 94 | Final Configuration - Procurement and Inventory | 2026-10-13 A | 2026-11-17 A | 0% → 100% | -11d → none |
| 96 | Add-on Development - Procurement and Inventory |  | 2026-09-07 A | 73% → 100% | 38d → none |
| 97 | Unit Test - Procurement and Inventory |  | 2026-09-09 A | 17% → 100% | 38d → none |
| 98 | Playback Session - Procurement and Inventory | 2026-11-18 A |  | 0% → 90% |  |
| 101 | **Realization - Production Planning** |  |  | 24% → 89% |  |
| 102 | Baseline Configuration - Production Planning | 2026-09-10 A | 2026-10-09 A | 0% → 100% | -11d → none |
| 103 | Master Data Design - Production Planning | 2026-09-17 A | 2026-10-06 A | 0% → 100% | -8d → none |
| 104 | Authorization Role Design - Production Planning | 2026-10-13 A | 2026-10-26 A | 0% → 100% | 8d → none |
| 105 | Final Configuration - Production Planning | 2026-10-13 A | 2026-11-17 A | 0% → 100% | -11d → none |
| 107 | Add-on Development - Production Planning |  | 2026-09-10 A | 65% → 100% | 35.5d → none |
| 108 | Unit Test - Production Planning | 2026-08-27 A | 2026-09-14 A | 0% → 100% | 35.5d → none |
| 109 | Playback Session - Production Planning | 2026-11-18 A |  | 0% → 90% |  |
| 112 | **Realization - Sales and Distribution** |  |  | 24% → 89% |  |
| 113 | Baseline Configuration - Sales and Distribution | 2026-09-10 A | 2026-10-09 A | 0% → 100% | -11d → none |
| 114 | Master Data Design - Sales and Distribution | 2026-09-17 A | 2026-10-06 A | 0% → 100% | -8d → none |
| 115 | Authorization Role Design - Sales and Distribution | 2026-10-13 A | 2026-10-26 A | 0% → 100% | 8d → none |
| 116 | Final Configuration - Sales and Distribution | 2026-10-13 A | 2026-11-17 A | 0% → 100% | -11d → none |
| 118 | Add-on Development - Sales and Distribution |  | 2026-09-10 A | 65% → 100% | 35.5d → none |
| 119 | Unit Test - Sales and Distribution | 2026-08-27 A | 2026-09-14 A | 0% → 100% | 35.5d → none |
| 120 | Playback Session - Sales and Distribution | 2026-11-18 A |  | 0% → 90% |  |
| 123 | **Interfaces and Integration** |  |  | 30% → 97% |  |
| 125 | **Bank Payment Interface** |  |  | 26% → 97% |  |
| 127 | Interface Development - Bank Payment Interface | 2026-10-13 A | 2026-11-02 A | 0% → 100% | 10d → none |
| 128 | Interface Connection Test - Bank Payment Interface | 2026-11-26 A |  | 0% → 90% |  |
| 129 | **Supplier EDI Interface** |  |  | 26% → 97% |  |
| 131 | Interface Development - Supplier EDI Interface | 2026-10-13 A | 2026-11-02 A | 0% → 100% | 10d → none |
| 132 | Interface Connection Test - Supplier EDI Interface | 2026-11-18 A |  | 0% → 90% |  |
| 133 | **Warehouse Management Interface** |  |  | 26% → 97% |  |
| 135 | Interface Development - Warehouse Management Interface | 2026-10-13 A | 2026-11-02 A | 0% → 100% | 10d → none |
| 136 | Interface Connection Test - Warehouse Management Interface | 2026-11-18 A |  | 0% → 90% |  |
| 137 | **Manufacturing Execution Interface** |  |  | 26% → 97% |  |
| 139 | Interface Development - Manufacturing Execution Interface | 2026-10-13 A | 2026-11-02 A | 0% → 100% | 10d → none |
| 140 | Interface Connection Test - Manufacturing Execution Interface | 2026-11-18 A |  | 0% → 90% |  |
| 141 | **CRM Interface** |  |  | 26% → 97% |  |
| 143 | Interface Development - CRM Interface | 2026-10-13 A | 2026-11-02 A | 0% → 100% | 10d → none |
| 144 | Interface Connection Test - CRM Interface | 2026-11-18 A |  | 0% → 90% |  |
| 145 | **BI and Consolidation Interface** |  |  | 26% → 97% |  |
| 147 | Interface Development - BI and Consolidation Interface | 2026-10-13 A | 2026-11-02 A | 0% → 100% | 10d → none |
| 148 | Interface Connection Test - BI and Consolidation Interface | 2026-11-26 A |  | 0% → 90% |  |
| 150 | **Data Migration** |  |  | 66% → 93% |  |
| 162 | **Migration Object - BOM and Routing** |  | 2026-09-09 A | 44% → 100% | 13d → none |
| 163 | Mapping and Extraction - BOM and Routing |  | 2026-08-28 A | 80% → 100% | 13d → none |
| 164 | Load and Verification - BOM and Routing | 2026-08-31 A | 2026-09-09 A | 0% → 100% | 13d → none |
| 165 | **Migration Object - Open Purchase and Sales Orders** |  | 2026-09-09 A | 44% → 100% | 31d → none |
| 166 | Mapping and Extraction - Open Purchase and Sales Orders |  | 2026-08-28 A | 80% → 100% | 31d → none |
| 167 | Load and Verification - Open Purchase and Sales Orders | 2026-08-31 A | 2026-09-09 A | 0% → 100% | 31d → none |
| 168 | **Migration Object - General Ledger Balances** |  | 2026-09-09 A | 44% → 100% | 31d → none |
| 169 | Mapping and Extraction - General Ledger Balances |  | 2026-08-28 A | 80% → 100% | 31d → none |

| ID | Task | Start | Finish | Complete | Total float |
| --- | --- | --- | --- | --- | --- |
| 170 | Load and Verification - General Ledger Balances | 2026-08-31 A | 2026-09-09 A | 0% → 100% | 31d → none |
| 171 | **Migration Object - Fixed Assets** | 2026-09-10 A | 2026-10-07 A | 0% → 100% | 13d → none |
| 172 | Mapping and Extraction - Fixed Assets | 2026-09-10 A | 2026-09-25 A | 0% → 100% | 13d → none |
| 173 | Load and Verification - Fixed Assets | 2026-09-28 A | 2026-10-07 A | 0% → 100% | 13d → none |
| 176 | Mock Migration Run 1 | 2026-10-08 A | 2026-10-26 A | 0% → 100% | 13d → none |
| 181 | **Integrated Testing** |  |  | 12% → 17% |  |
| 182 | **System Integration Test** |  |  | 20% → 35% |  |
| 184 | SIT Scenario and Case Creation |  | 2026-09-14 A | 58% → 100% | 50.5d → none |
| 185 | SIT Environment and Data Preparation | 2026-10-27 A | 2026-11-10 A | 0% → 100% | 13d → none |
| 208 | **Organizational Change and Training** |  |  | 38% → 46% |  |
| 214 | Change Communication - FY2027 H1 | 2026-10-22 A | 2026-11-19 A | 0% → 100% | 228d → none |
| 243 | Production Data Migration - Wave 2 |  |  | 0% → 10% |  |

## Version 3 (data date 2026-12-09, saved 2026-12-09)

Note of the change: Merge the ERP sample lag fix (8b5e9ca6) into coord: DFC-1815

Last finish stays 2028-02-02.

Changed:

| ID | Task | Predecessors |
| --- | --- | --- |
| 230 | Cutover Dress Rehearsal 2 - Wave 1 | 229FS+45d, 207 → 229FS+13d, 207 |

## Version 4 (data date 2026-12-09, saved 2026-12-09)

Note of the change: Merge commit '815ecba8' into claude/trusting-kowalevski-9290c1

Last finish stays 2028-02-02.

Changed:

| ID | Task | Start | Finish | Complete |
| --- | --- | --- | --- | --- |
| 1 | **Program Management** |  |  | 57% → 52% |
| 6 | **Steering Committee** |  |  | 54% → 49% |
| 48 | **Blueprint - Finance and Controlling** | 2026-04-06 A → 2026-04-06 |  |  |
| 78 | **Realization** |  |  | 89% → 82% |
| 79 | **Realization - Finance and Controlling** |  |  | 90% → 86% |
| 90 | **Realization - Procurement and Inventory** |  |  | 89% → 86% |
| 101 | **Realization - Production Planning** |  |  | 89% → 85% |
| 112 | **Realization - Sales and Distribution** |  |  | 89% → 85% |
| 123 | **Interfaces and Integration** |  |  | 97% → 96% |
| 125 | **Bank Payment Interface** |  |  | 97% → 99% |
| 129 | **Supplier EDI Interface** |  |  | 97% → 99% |
| 133 | **Warehouse Management Interface** |  |  | 97% → 99% |
| 137 | **Manufacturing Execution Interface** |  |  | 97% → 99% |
| 141 | **CRM Interface** |  |  | 97% → 99% |
| 145 | **BI and Consolidation Interface** |  |  | 97% → 99% |
| 150 | **Data Migration** |  |  | 93% → 53% |
| 153 | **Migration Object - Customer Master** |  | 2026-08-12 A → 2026-08-12 |  |
| 181 | **Integrated Testing** |  |  | 17% → 39% |
| 182 | **System Integration Test** |  |  | 35% → 57% |
| 208 | **Organizational Change and Training** |  |  | 46% → 74% |
| 243 | Production Data Migration - Wave 2 |  |  | 10% → 0% |
