# 基幹システム(ERP)刷新プログラム

How a schedule from MS Project XML changed from version to version. A marks actual dates.

## Version 1 (data date 2026-08-26, saved 2026-08-26)

Note of the change: Publish sample-schedule: nine sample documents and a ProjectLibre file

| ID | WBS | Task | Duration | Start | Finish | Predecessors | Complete | Total float | Constraint |
| --- | --- | --- | --- | --- | --- | --- | --- | --- | --- |
| 1 | 1 | **1. プログラム管理** | 509d | 2025-10-01 A | 2027-11-12 |  | 90% | 52d |  |
| 2 |  | PMO 立ち上げ・ガバナンス定義 | 10d | 2025-10-01 A | 2025-10-15 A |  | 100% |  |  |
| 3 |  | プログラム マスタスケジュール策定 | 15d | 2025-10-16 A | 2025-11-06 A | 2 | 100% |  |  |
| 4 |  | リスク・課題管理 整備 | 8d | 2025-10-16 A | 2025-10-27 A | 2 | 100% |  |  |
| 5 |  | 品質管理計画 策定 | 8d | 2025-10-16 A | 2025-10-27 A | 2 | 100% |  |  |
| 6 | 1.5 | **1.5 ステアリングコミッティ** | 479d | 2025-11-14 A | 2027-11-12 |  | 44% | 52d |  |
| 7 |  | ステアリングコミッティ 第 1 回 | 1d | 2025-11-14 A | 2025-11-14 A |  | 100% |  | start no earlier than 2025-11-14 |
| 8 |  | ステアリングコミッティ 第 2 回 | 1d | 2026-02-13 A | 2026-02-13 A |  | 100% |  | start no earlier than 2026-02-13 |
| 9 |  | ステアリングコミッティ 第 3 回 | 1d | 2026-05-15 A | 2026-05-15 A |  | 100% |  | start no earlier than 2026-05-15 |
| 10 |  | ステアリングコミッティ 第 4 回 | 1d | 2026-08-17 A | 2026-08-17 A |  | 100% |  | start no earlier than 2026-08-14 |
| 11 |  | ステアリングコミッティ 第 5 回 | 1d | 2026-11-13 | 2026-11-13 |  |  | 292d | start no earlier than 2026-11-13 |
| 12 |  | ステアリングコミッティ 第 6 回 | 1d | 2027-02-12 | 2027-02-12 |  |  | 234d | start no earlier than 2027-02-12 |
| 13 |  | ステアリングコミッティ 第 7 回 | 1d | 2027-05-14 | 2027-05-14 |  |  | 175d | start no earlier than 2027-05-14 |
| 14 |  | ステアリングコミッティ 第 8 回 | 1d | 2027-08-16 | 2027-08-16 |  |  | 112d | start no earlier than 2027-08-13 |
| 15 |  | ステアリングコミッティ 第 9 回 | 1d | 2027-11-12 | 2027-11-12 |  |  | 52d | start no earlier than 2027-11-12 |
| 16 | 2 | **2. プログラム構想・立ち上げ** | 113d | 2025-10-01 A | 2026-03-24 A |  | 100% |  |  |
| 17 |  | 投資対効果(ビジネスケース) 検証 | 15d | 2025-10-01 A | 2025-10-22 A |  | 100% |  |  |
| 18 |  | プログラム スコープ定義 | 10d | 2025-10-23 A | 2025-11-06 A | 17 | 100% |  |  |
| 19 |  | パッケージ適合性評価 | 15d | 2025-11-07 A | 2025-11-28 A | 18 | 100% |  |  |
| 20 |  | RFP 作成・発行 | 15d | 2025-12-01 A | 2025-12-19 A | 19 | 100% |  |  |
| 21 |  | 提案評価・ベンダー選定 | 20d | 2025-12-22 A | 2026-01-26 A | 20 | 100% |  |  |
| 22 |  | 契約交渉 | 21d | 2026-01-27 A | 2026-02-26 A | 21 | 100% |  |  |
| 23 |  | 契約 締結 | 0d | 2026-02-26 A | 2026-02-26 A | 22 | 100% |  |  |
| 24 |  | ERP ライセンス調達 | 10d | 2026-02-27 A | 2026-03-12 A | 23 | 100% |  |  |
| 25 |  | 体制立ち上げ・要員確保 | 15d | 2026-02-27 A | 2026-03-19 A | 23 | 100% |  |  |
| 26 |  | プログラム キックオフ | 2d | 2026-03-23 A | 2026-03-24 A | 25, 3 | 100% |  |  |
| 27 |  | プログラム開始 | 0d | 2026-03-24 A | 2026-03-24 A | 26 | 100% |  |  |
| 28 | 3 | **3. 技術基盤・インフラ** | 113d | 2026-03-25 A | 2026-09-09 |  | 89% | -16d |  |
| 29 |  | 技術方式設計 | 20d | 2026-03-25 A | 2026-04-21 A | 27 | 100% |  |  |
| 30 |  | サイジング・容量設計 | 10d | 2026-04-22 A | 2026-05-11 A | 29 | 100% |  |  |
| 31 |  | ネットワーク・WAN 設計 | 12d | 2026-04-22 A | 2026-05-13 A | 29 | 100% |  |  |
| 32 |  | セキュリティ・権限方針策定 | 15d | 2026-04-22 A | 2026-05-18 A | 29 | 100% |  |  |
| 33 |  | ハードウェア・クラウド調達 | 25d | 2026-05-12 A | 2026-06-15 A | 30 | 100% |  |  |
| 34 |  | サンドボックス環境構築 | 10d | 2026-04-22 A | 2026-05-11 A | 24, 29 | 100% |  |  |
| 35 |  | 開発環境 構築 | 12d | 2026-06-16 A | 2026-07-01 A | 33, 34 | 100% |  |  |
| 36 |  | 品質保証(QA)環境 構築 | 12d | 2026-07-02 A | 2026-07-17 A | 35 | 100% |  |  |
| 37 |  | 本番環境 構築 | 18d | 2026-07-21 A | 2026-08-18 A | 36 | 100% |  |  |
| 38 |  | DR サイト構築 | 15d | 2026-08-19 A | 2026-09-08 | 37 | 40% | -15d |  |
| 39 |  | 移送経路・変更管理 設定 | 6d | 2026-07-21 A | 2026-07-28 A | 36 | 100% |  |  |
| 40 |  | バックアップ・リストア設計 | 8d | 2026-07-28 A | 2026-08-06 A | 37SS+5d | 100% |  |  |
| 41 |  | システム監視 設定 | 8d | 2026-08-19 A | 2026-08-28 | 37 | 75% | -8d |  |
| 42 |  | ID 管理基盤 連携 | 10d | 2026-07-21 A | 2026-08-03 A | 32, 36 | 100% |  |  |
| 43 |  | セキュリティ ハードニング | 10d | 2026-08-19 A | 2026-09-01 | 37, 42 | 60% | -16d |  |
| 44 |  | 性能ベースライン測定 | 6d | 2026-09-02 | 2026-09-09 | 43 |  | -16d |  |
| 45 |  | 技術基盤 準備完了 | 0d | 2026-09-09 | 2026-09-09 | 44, 41, 40, 38, 39 |  | -16d |  |
| 46 | 4 | **4. 業務設計(ブループリント)** | 73.5d | 2026-03-25 A | 2026-07-10 A |  | 100% |  |  |
| 47 |  | ブループリント準備・ワークショップ計画 | 8d | 2026-03-25 A | 2026-04-03 A | 27 | 100% |  |  |
| 48 | 4.2 | **業務設計 - 財務・管理会計** | 58d | 2026-04-06 A | 2026-06-30 A |  | 100% |  |  |
| 49 |  | 現行業務の可視化 - 財務・管理会計 | 12d | 2026-04-06 A | 2026-04-21 A | 47 | 100% |  |  |
| 50 |  | Fit&Gap ワークショップ - 財務・管理会計 | 15d | 2026-04-22 A | 2026-05-18 A | 49 | 100% |  |  |
| 51 |  | To-Be 業務設計 - 財務・管理会計 | 15d | 2026-05-19 A | 2026-06-08 A | 50 | 100% |  |  |
| 52 |  | ギャップ対応方針 決定 - 財務・管理会計 | 6d | 2026-06-09 A | 2026-06-16 A | 51 | 100% |  |  |
| 53 |  | ブループリント文書化 - 財務・管理会計 | 10d | 2026-06-17 A | 2026-06-30 A | 52 | 100% |  |  |
| 54 |  | ブループリント承認 - 財務・管理会計 | 0d | 2026-06-30 A | 2026-06-30 A | 53 | 100% |  |  |
| 55 | 4.3 | **業務設計 - 購買・在庫管理** | 58d | 2026-04-06 A | 2026-06-30 A |  | 100% |  |  |
| 56 |  | 現行業務の可視化 - 購買・在庫管理 | 12d | 2026-04-06 A | 2026-04-21 A | 47 | 100% |  |  |
| 57 |  | Fit&Gap ワークショップ - 購買・在庫管理 | 15d | 2026-04-22 A | 2026-05-18 A | 56 | 100% |  |  |
| 58 |  | To-Be 業務設計 - 購買・在庫管理 | 15d | 2026-05-19 A | 2026-06-08 A | 57 | 100% |  |  |
| 59 |  | ギャップ対応方針 決定 - 購買・在庫管理 | 6d | 2026-06-09 A | 2026-06-16 A | 58 | 100% |  |  |
| 60 |  | ブループリント文書化 - 購買・在庫管理 | 10d | 2026-06-17 A | 2026-06-30 A | 59 | 100% |  |  |
| 61 |  | ブループリント承認 - 購買・在庫管理 | 0d | 2026-06-30 A | 2026-06-30 A | 60 | 100% |  |  |
| 62 | 4.4 | **業務設計 - 生産管理** | 60.5d | 2026-04-06 A | 2026-07-03 A |  | 100% |  |  |
| 63 |  | 現行業務の可視化 - 生産管理 | 12d | 2026-04-06 A | 2026-04-21 A | 47 | 100% |  |  |
| 64 |  | Fit&Gap ワークショップ - 生産管理 | 15d | 2026-04-22 A | 2026-05-18 A | 63 | 100% |  |  |
| 65 |  | To-Be 業務設計 - 生産管理 | 15d | 2026-05-19 A | 2026-06-08 A | 64 | 100% |  |  |
| 66 |  | ギャップ対応方針 決定 - 生産管理 | 6d | 2026-06-09 A | 2026-06-16 A | 65 | 100% |  |  |
| 67 |  | ブループリント文書化 - 生産管理 | 12.5d | 2026-06-17 A | 2026-07-03 A | 66 | 100% |  |  |
| 68 |  | ブループリント承認 - 生産管理 | 0d | 2026-07-03 A | 2026-07-03 A | 67 | 100% |  |  |
| 69 | 4.5 | **業務設計 - 販売・物流** | 60.5d | 2026-04-06 A | 2026-07-03 A |  | 100% |  |  |
| 70 |  | 現行業務の可視化 - 販売・物流 | 12d | 2026-04-06 A | 2026-04-21 A | 47 | 100% |  |  |

| ID | WBS | Task | Duration | Start | Finish | Predecessors | Complete | Total float |
| --- | --- | --- | --- | --- | --- | --- | --- | --- |
| 71 |  | Fit&Gap ワークショップ - 販売・物流 | 15d | 2026-04-22 A | 2026-05-18 A | 70 | 100% |  |
| 72 |  | To-Be 業務設計 - 販売・物流 | 15d | 2026-05-19 A | 2026-06-08 A | 71 | 100% |  |
| 73 |  | ギャップ対応方針 決定 - 販売・物流 | 6d | 2026-06-09 A | 2026-06-16 A | 72 | 100% |  |
| 74 |  | ブループリント文書化 - 販売・物流 | 12.5d | 2026-06-17 A | 2026-07-03 A | 73 | 100% |  |
| 75 |  | ブループリント承認 - 販売・物流 | 0d | 2026-07-03 A | 2026-07-03 A | 74 | 100% |  |
| 76 |  | ブループリント 品質ゲート | 5d | 2026-07-03 A | 2026-07-10 A | 54, 61, 68, 75 | 100% |  |
| 77 |  | 業務設計フェーズ 完了 | 0d | 2026-07-10 A | 2026-07-10 A | 76 | 100% |  |
| 78 | 5 | **5. 構築(リアライゼーション)** | 116d | 2026-07-01 A | 2026-12-22 |  | 25% | -16d |
| 79 | 5.1 | **構築 - 財務・管理会計** | 116d | 2026-07-01 A | 2026-12-22 |  | 25% | -16d |
| 80 |  | ベースライン設定 - 財務・管理会計 | 20d | 2026-09-10 | 2026-10-09 | 54, 45 |  | -16d |
| 81 |  | マスタデータ設計 - 財務・管理会計 | 12d | 2026-09-17 | 2026-10-06 | 80SS+5d |  | -13d |
| 82 |  | 権限ロール設計 - 財務・管理会計 | 10d | 2026-10-13 | 2026-10-26 | 80, 32 |  | 8d |
| 83 |  | 詳細設定(コンフィグ) - 財務・管理会計 | 30d | 2026-10-13 | 2026-11-25 | 80, 81 |  | -16d |
| 84 |  | アドオン仕様書 作成 - 財務・管理会計 | 15d | 2026-07-01 A | 2026-07-22 A | 54 | 100% |  |
| 85 |  | アドオン開発 - 財務・管理会計 | 36d | 2026-07-23 A | 2026-09-15 | 84, 35 | 61% | 38d |
| 86 |  | 単体テスト - 財務・管理会計 | 12d | 2026-08-25 A | 2026-09-09 | 85SS+20d | 17% | 38d |
| 87 |  | プレイバック(業務確認会) - 財務・管理会計 | 4d | 2026-11-26 | 2026-12-01 | 83 |  | -16d |
| 88 |  | モジュール結合テスト - 財務・管理会計 | 15d | 2026-12-02 | 2026-12-22 | 86, 87, 82 |  | -16d |
| 89 |  | モジュール構築完了 - 財務・管理会計 | 0d | 2026-12-22 | 2026-12-22 | 88 |  | -16d |
| 90 | 5.2 | **構築 - 購買・在庫管理** | 111d | 2026-07-01 A | 2026-12-15 |  | 27% | -11d |
| 91 |  | ベースライン設定 - 購買・在庫管理 | 20d | 2026-09-10 | 2026-10-09 | 61, 45 |  | -11d |
| 92 |  | マスタデータ設計 - 購買・在庫管理 | 12d | 2026-09-17 | 2026-10-06 | 91SS+5d |  | -8d |
| 93 |  | 権限ロール設計 - 購買・在庫管理 | 10d | 2026-10-13 | 2026-10-26 | 91, 32 |  | 8d |
| 94 |  | 詳細設定(コンフィグ) - 購買・在庫管理 | 25d | 2026-10-13 | 2026-11-17 | 91, 92 |  | -11d |
| 95 |  | アドオン仕様書 作成 - 購買・在庫管理 | 15d | 2026-07-01 A | 2026-07-22 A | 61 | 100% |  |
| 96 |  | アドオン開発 - 購買・在庫管理 | 30d | 2026-07-23 A | 2026-09-07 | 95, 35 | 73% | 38d |
| 97 |  | 単体テスト - 購買・在庫管理 | 12d | 2026-08-25 A | 2026-09-09 | 96SS+20d | 17% | 38d |
| 98 |  | プレイバック(業務確認会) - 購買・在庫管理 | 4d | 2026-11-18 | 2026-11-24 | 94 |  | -11d |
| 99 |  | モジュール結合テスト - 購買・在庫管理 | 15d | 2026-11-25 | 2026-12-15 | 97, 98, 93 |  | -11d |
| 100 |  | モジュール構築完了 - 購買・在庫管理 | 0d | 2026-12-15 | 2026-12-15 | 99 |  | -11d |
| 101 | 5.3 | **構築 - 生産管理** | 108.5d | 2026-07-03 A | 2026-12-15 |  | 24% | -11d |
| 102 |  | ベースライン設定 - 生産管理 | 20d | 2026-09-10 | 2026-10-09 | 68, 45 |  | -11d |
| 103 |  | マスタデータ設計 - 生産管理 | 12d | 2026-09-17 | 2026-10-06 | 102SS+5d |  | -8d |
| 104 |  | 権限ロール設計 - 生産管理 | 10d | 2026-10-13 | 2026-10-26 | 102, 32 |  | 8d |
| 105 |  | 詳細設定(コンフィグ) - 生産管理 | 25d | 2026-10-13 | 2026-11-17 | 102, 103 |  | -11d |
| 106 |  | アドオン仕様書 作成 - 生産管理 | 15d | 2026-07-03 A | 2026-07-27 A | 68 | 100% |  |
| 107 |  | アドオン開発 - 生産管理 | 30d | 2026-07-27 A | 2026-09-10 | 106, 35 | 65% | 35.5d |
| 108 |  | 単体テスト - 生産管理 | 12d | 2026-08-27 | 2026-09-14 | 107SS+20d |  | 35.5d |
| 109 |  | プレイバック(業務確認会) - 生産管理 | 4d | 2026-11-18 | 2026-11-24 | 105 |  | -11d |
| 110 |  | モジュール結合テスト - 生産管理 | 15d | 2026-11-25 | 2026-12-15 | 108, 109, 104 |  | -11d |
| 111 |  | モジュール構築完了 - 生産管理 | 0d | 2026-12-15 | 2026-12-15 | 110 |  | -11d |
| 112 | 5.4 | **構築 - 販売・物流** | 108.5d | 2026-07-03 A | 2026-12-15 |  | 24% | -11d |
| 113 |  | ベースライン設定 - 販売・物流 | 20d | 2026-09-10 | 2026-10-09 | 75, 45 |  | -11d |
| 114 |  | マスタデータ設計 - 販売・物流 | 12d | 2026-09-17 | 2026-10-06 | 113SS+5d |  | -8d |
| 115 |  | 権限ロール設計 - 販売・物流 | 10d | 2026-10-13 | 2026-10-26 | 113, 32 |  | 8d |
| 116 |  | 詳細設定(コンフィグ) - 販売・物流 | 25d | 2026-10-13 | 2026-11-17 | 113, 114 |  | -11d |
| 117 |  | アドオン仕様書 作成 - 販売・物流 | 15d | 2026-07-03 A | 2026-07-27 A | 75 | 100% |  |
| 118 |  | アドオン開発 - 販売・物流 | 30d | 2026-07-27 A | 2026-09-10 | 117, 35 | 65% | 35.5d |
| 119 |  | 単体テスト - 販売・物流 | 12d | 2026-08-27 | 2026-09-14 | 118SS+20d |  | 35.5d |
| 120 |  | プレイバック(業務確認会) - 販売・物流 | 4d | 2026-11-18 | 2026-11-24 | 116 |  | -11d |
| 121 |  | モジュール結合テスト - 販売・物流 | 15d | 2026-11-25 | 2026-12-15 | 119, 120, 115 |  | -11d |
| 122 |  | モジュール構築完了 - 販売・物流 | 0d | 2026-12-15 | 2026-12-15 | 121 |  | -11d |
| 123 | 6 | **6. インターフェース・連携** | 151d | 2026-04-22 A | 2026-12-07 |  | 30% | -5d |
| 124 |  | 連携一覧・方式整理 | 10d | 2026-04-22 A | 2026-05-11 A | 29 | 100% |  |
| 125 | 6.2 | **銀行決済 連携** | 105d | 2026-07-01 A | 2026-12-07 |  | 26% | -5d |
| 126 |  | 連携仕様設計 - 銀行決済 連携 | 8d | 2026-07-01 A | 2026-07-10 A | 124, 54 | 100% |  |
| 127 |  | 連携開発 - 銀行決済 連携 | 15d | 2026-10-13 | 2026-11-02 | 126, 35, 80 |  | 10d |
| 128 |  | 連携疎通テスト - 銀行決済 連携 | 8d | 2026-11-26 | 2026-12-07 | 127, 36, 83 |  | -5d |
| 129 | 6.3 | **仕入先 EDI 連携** | 100d | 2026-07-01 A | 2026-11-30 |  | 26% | 0d |
| 130 |  | 連携仕様設計 - 仕入先 EDI 連携 | 8d | 2026-07-01 A | 2026-07-10 A | 124, 61 | 100% |  |
| 131 |  | 連携開発 - 仕入先 EDI 連携 | 15d | 2026-10-13 | 2026-11-02 | 130, 35, 91 |  | 10d |
| 132 |  | 連携疎通テスト - 仕入先 EDI 連携 | 8d | 2026-11-18 | 2026-11-30 | 131, 36, 94 |  | 0d |
| 133 | 6.4 | **倉庫管理(WMS) 連携** | 100d | 2026-07-01 A | 2026-11-30 |  | 26% | 0d |
| 134 |  | 連携仕様設計 - 倉庫管理(WMS) 連携 | 8d | 2026-07-01 A | 2026-07-10 A | 124, 61 | 100% |  |
| 135 |  | 連携開発 - 倉庫管理(WMS) 連携 | 15d | 2026-10-13 | 2026-11-02 | 134, 35, 91 |  | 10d |
| 136 |  | 連携疎通テスト - 倉庫管理(WMS) 連携 | 8d | 2026-11-18 | 2026-11-30 | 135, 36, 94 |  | 0d |
| 137 | 6.5 | **製造実行(MES) 連携** | 97.5d | 2026-07-03 A | 2026-11-30 |  | 26% | 0d |
| 138 |  | 連携仕様設計 - 製造実行(MES) 連携 | 8d | 2026-07-03 A | 2026-07-15 A | 124, 68 | 100% |  |
| 139 |  | 連携開発 - 製造実行(MES) 連携 | 15d | 2026-10-13 | 2026-11-02 | 138, 35, 102 |  | 10d |
| 140 |  | 連携疎通テスト - 製造実行(MES) 連携 | 8d | 2026-11-18 | 2026-11-30 | 139, 36, 105 |  | 0d |

| ID | WBS | Task | Duration | Start | Finish | Predecessors | Complete | Total float |
| --- | --- | --- | --- | --- | --- | --- | --- | --- |
| 141 | 6.6 | **CRM 連携** | 97.5d | 2026-07-03 A | 2026-11-30 |  | 26% | 0d |
| 142 |  | 連携仕様設計 - CRM 連携 | 8d | 2026-07-03 A | 2026-07-15 A | 124, 75 | 100% |  |
| 143 |  | 連携開発 - CRM 連携 | 15d | 2026-10-13 | 2026-11-02 | 142, 35, 113 |  | 10d |
| 144 |  | 連携疎通テスト - CRM 連携 | 8d | 2026-11-18 | 2026-11-30 | 143, 36, 116 |  | 0d |
| 145 | 6.7 | **BI・連結会計 連携** | 105d | 2026-07-01 A | 2026-12-07 |  | 26% | -5d |
| 146 |  | 連携仕様設計 - BI・連結会計 連携 | 8d | 2026-07-01 A | 2026-07-10 A | 124, 54 | 100% |  |
| 147 |  | 連携開発 - BI・連結会計 連携 | 15d | 2026-10-13 | 2026-11-02 | 146, 35, 80 |  | 10d |
| 148 |  | 連携疎通テスト - BI・連結会計 連携 | 8d | 2026-11-26 | 2026-12-07 | 147, 36, 83 |  | -5d |
| 149 |  | 連携 構築完了 | 0d | 2026-12-07 | 2026-12-07 | 128, 132, 136, 140, 144, 148 |  | -5d |
| 150 | 7 | **7. データ移行** | 324d | 2026-03-25 A | 2027-07-27 |  | 66% | -14d |
| 151 |  | データ移行方針策定 | 12d | 2026-03-25 A | 2026-04-09 A | 27 | 100% |  |
| 152 |  | 移行ツール・基盤 構築 | 20d | 2026-07-02 A | 2026-07-30 A | 151, 35 | 100% |  |
| 153 | 7.3 | **移行対象 - 得意先マスタ** | 83d | 2026-04-10 A | 2026-08-12 A |  | 100% |  |
| 154 |  | マッピング・抽出 - 得意先マスタ | 10d | 2026-04-10 A | 2026-04-23 A | 151, 47 | 100% |  |
| 155 |  | 投入・検証 - 得意先マスタ | 8d | 2026-07-31 A | 2026-08-12 A | 154, 152 | 100% |  |
| 156 | 7.4 | **移行対象 - 仕入先マスタ** | 83d | 2026-04-10 A | 2026-08-12 A |  | 100% |  |
| 157 |  | マッピング・抽出 - 仕入先マスタ | 10d | 2026-04-10 A | 2026-04-23 A | 151, 47 | 100% |  |
| 158 |  | 投入・検証 - 仕入先マスタ | 8d | 2026-07-31 A | 2026-08-12 A | 157, 152 | 100% |  |
| 159 | 7.5 | **移行対象 - 品目マスタ** | 83d | 2026-04-10 A | 2026-08-12 A |  | 100% |  |
| 160 |  | マッピング・抽出 - 品目マスタ | 10d | 2026-04-10 A | 2026-04-23 A | 151, 47 | 100% |  |
| 161 |  | 投入・検証 - 品目マスタ | 8d | 2026-07-31 A | 2026-08-12 A | 160, 152 | 100% |  |
| 162 | 7.6 | **移行対象 - 部品表・工順** | 18d | 2026-08-17 A | 2026-09-09 |  | 44% | 13d |
| 163 |  | マッピング・抽出 - 部品表・工順 | 10d | 2026-08-17 A | 2026-08-28 | 151, 47, 155 | 80% | 13d |
| 164 |  | 投入・検証 - 部品表・工順 | 8d | 2026-08-31 | 2026-09-09 | 163, 152 |  | 13d |
| 165 | 7.7 | **移行対象 - 未処理 受発注データ** | 18d | 2026-08-17 A | 2026-09-09 |  | 44% | 31d |
| 166 |  | マッピング・抽出 - 未処理 受発注データ | 10d | 2026-08-17 A | 2026-08-28 | 151, 47, 158 | 80% | 31d |
| 167 |  | 投入・検証 - 未処理 受発注データ | 8d | 2026-08-31 | 2026-09-09 | 166, 152 |  | 31d |
| 168 | 7.8 | **移行対象 - 総勘定元帳 残高** | 18d | 2026-08-17 A | 2026-09-09 |  | 44% | 31d |
| 169 |  | マッピング・抽出 - 総勘定元帳 残高 | 10d | 2026-08-17 A | 2026-08-28 | 151, 47, 161 | 80% | 31d |
| 170 |  | 投入・検証 - 総勘定元帳 残高 | 8d | 2026-08-31 | 2026-09-09 | 169, 152 |  | 31d |
| 171 | 7.9 | **移行対象 - 固定資産** | 18d | 2026-09-10 | 2026-10-07 |  |  | 13d |
| 172 |  | マッピング・抽出 - 固定資産 | 10d | 2026-09-10 | 2026-09-25 | 151, 47, 164 |  | 13d |
| 173 |  | 投入・検証 - 固定資産 | 8d | 2026-09-28 | 2026-10-07 | 172, 152 |  | 13d |
| 174 |  | マスタデータ クレンジング | 52d | 2026-04-24 A | 2026-07-10 A | 154, 157, 160 | 100% |  |
| 175 |  | 突合(照合)ルール設計 | 10d | 2026-04-10 A | 2026-04-23 A | 151 | 100% |  |
| 176 |  | 移行リハーサル 1 回目 | 12d | 2026-10-08 | 2026-10-26 | 174, 170, 173, 167, 164 |  | 13d |
| 177 |  | 移行リハーサル 2 回目 | 10d | 2027-01-27 | 2027-02-09 | 176FS+10d, 186 |  | 34d |
| 178 |  | 移行リハーサル 3 回目(本番相当) | 8d | 2027-06-29 | 2027-07-08 | 177FS+10d, 37, 204 |  | -14d |
| 179 |  | 移行データ品質検証 | 12d | 2027-07-09 | 2027-07-27 | 178, 175 |  | -11d |
| 180 |  | データ移行 準備完了 | 0d | 2027-07-27 | 2027-07-27 | 179 |  | -11d |
| 181 | 8 | **8. 統合テスト** | 253.5d | 2026-07-10 A | 2027-07-30 |  | 12% | -16d |
| 182 | 8.1 | **8.1 システム統合テスト(SIT)** | 173.5d | 2026-07-10 A | 2027-04-02 |  | 20% | -16d |
| 183 |  | SIT 計画策定 | 12d | 2026-07-10 A | 2026-07-29 A | 77 | 100% |  |
| 184 |  | SIT シナリオ・ケース作成 | 30d | 2026-07-29 A | 2026-09-14 | 183 | 58% | 50.5d |
| 185 |  | SIT 環境・データ準備 | 10d | 2026-10-27 | 2026-11-10 | 176, 36 |  | 13d |
| 186 |  | SIT 1 巡目 | 20d | 2026-12-23 | 2027-01-26 | 184, 185, 149, 89, 100, 111, 122 |  | -16d |
| 187 |  | 不具合対応 - 1 巡目 | 25d | 2027-01-05 | 2027-02-09 | 186SS+5d |  | -16d |
| 188 |  | SIT 2 巡目 | 18d | 2027-02-10 | 2027-03-09 | 186, 187 |  | -16d |
| 189 |  | 不具合対応 - 2 巡目 | 15d | 2027-02-18 | 2027-03-11 | 188SS+5d |  | -16d |
| 190 |  | SIT 3 巡目(業務横断) | 15d | 2027-03-12 | 2027-04-02 | 188, 189 |  | -16d |
| 191 |  | SIT 完了 | 0d | 2027-04-02 | 2027-04-02 | 190 |  | -16d |
| 192 | 8.2 | **8.2 性能・セキュリティテスト** | 82d | 2027-01-27 | 2027-05-31 |  |  | -16d |
| 193 |  | 性能試験シナリオ設計 | 12d | 2027-01-27 | 2027-02-12 | 186 |  | 29d |
| 194 |  | 性能・大量データ試験 | 15d | 2027-04-05 | 2027-04-23 | 193, 191 |  | -4d |
| 195 |  | 性能チューニング | 20d | 2027-04-12 | 2027-05-13 | 194SS+5d |  | -4d |
| 196 |  | 脆弱性診断 | 12d | 2027-04-05 | 2027-04-20 | 191 |  | -16d |
| 197 |  | ペネトレーションテスト | 10d | 2027-04-21 | 2027-05-10 | 196 |  | -16d |
| 198 |  | セキュリティ是正対応 | 15d | 2027-05-11 | 2027-05-31 | 197 |  | -16d |
| 199 |  | 非機能テスト 完了 | 0d | 2027-05-31 | 2027-05-31 | 195, 198 |  | -16d |
| 200 | 8.3 | **8.3 受入テスト(UAT)** | 241.5d | 2026-07-29 A | 2027-07-30 |  | 11% | -16d |
| 201 |  | UAT 計画策定 | 10d | 2026-07-29 A | 2026-08-17 A | 183 | 100% |  |
| 202 |  | UAT データ・環境準備 | 12d | 2027-04-05 | 2027-04-20 | 191, 177 |  | -1d |
| 203 |  | UAT 向け キーユーザー研修 | 10d | 2027-04-21 | 2027-05-10 | 202 |  | -1d |
| 204 |  | UAT 第 1 波(財務・購買) | 20d | 2027-06-01 | 2027-06-28 | 203, 199 |  | -16d |
| 205 |  | UAT 指摘事項 対応 | 18d | 2027-06-08 | 2027-07-01 | 204SS+5d |  | -16d |
| 206 |  | UAT 第 2 波(生産・販売) | 20d | 2027-07-02 | 2027-07-30 | 204, 205 |  | -16d |
| 207 |  | UAT 承認 | 0d | 2027-07-30 | 2027-07-30 | 206 |  | -16d |
| 208 | 9 | **9. 組織変革・教育** | 232d | 2026-03-25 A | 2027-03-11 |  | 38% | 81d |
| 209 |  | 変革インパクト分析 | 20d | 2026-06-09 A | 2026-07-06 A | 51, 72 | 100% |  |
| 210 |  | ステークホルダー分析 | 10d | 2026-03-25 A | 2026-04-07 A | 27 | 100% |  |

| ID | WBS | Task | Duration | Start | Finish | Predecessors | Complete | Total float |
| --- | --- | --- | --- | --- | --- | --- | --- | --- |
| 211 |  | コミュニケーション計画 | 10d | 2026-04-08 A | 2026-04-21 A | 210 | 100% |  |
| 212 |  | 変革コミュニケーション実施 - 2026 年度 上期 | 20d | 2026-04-22 A | 2026-05-25 A | 211 | 100% |  |
| 213 |  | 変革コミュニケーション実施 - 2026 年度 下期 | 20d | 2026-07-22 A | 2026-08-21 A | 212FS+40d | 100% |  |
| 214 |  | 変革コミュニケーション実施 - 2027 年度 上期 | 20d | 2026-10-22 | 2026-11-19 | 213FS+40d |  | 228d |
| 215 |  | 変革コミュニケーション実施 - 2027 年度 下期 | 20d | 2027-01-25 | 2027-02-22 | 214FS+40d |  | 228d |
| 216 |  | 教育方針・カリキュラム策定 | 12d | 2026-07-07 A | 2026-07-23 A | 209 | 100% |  |
| 217 |  | 研修教材 作成 - 財務・管理会計 | 15d | 2026-12-02 | 2026-12-22 | 216, 87 |  | 81d |
| 218 |  | 研修教材 作成 - 購買・在庫管理 | 15d | 2026-11-25 | 2026-12-15 | 216, 98 |  | 86d |
| 219 |  | 研修教材 作成 - 生産管理 | 15d | 2026-11-25 | 2026-12-15 | 216, 109 |  | 86d |
| 220 |  | 研修教材 作成 - 販売・物流 | 15d | 2026-11-25 | 2026-12-15 | 216, 120 |  | 86d |
| 221 |  | トレーナー育成 | 12d | 2026-12-23 | 2027-01-14 | 217, 218, 219, 220 |  | 81d |
| 222 |  | エンドユーザー研修 - 本社 | 10d | 2027-01-15 | 2027-01-28 | 221 |  | 81d |
| 223 |  | エンドユーザー研修 - 関東工場 | 10d | 2027-01-29 | 2027-02-12 | 222 |  | 81d |
| 224 |  | エンドユーザー研修 - 関西工場 | 10d | 2027-02-15 | 2027-03-01 | 223 |  | 81d |
| 225 |  | 教育効果 測定・フォロー | 8d | 2027-03-02 | 2027-03-11 | 224 |  | 81d |
| 226 |  | 組織受入 準備完了 | 0d | 2027-03-11 | 2027-03-11 | 225 |  | 81d |
| 227 | 10 | **10. 移行・稼働 第 1 波(財務・購買)** | 119d | 2027-04-05 | 2027-09-29 |  |  | -70.12d |
| 228 |  | 移行計画 - 第 1 波 | 20d | 2027-04-05 | 2027-05-06 | 191 |  | 31d |
| 229 |  | 移行リハーサル(通し) 1 回目 - 第 1 波 | 12d | 2027-07-08 | 2027-07-12 | 228, 178 |  | -55.12d |
| 230 |  | 移行リハーサル(通し) 2 回目 - 第 1 波 | 9d | 2027-07-30 | 2027-08-02 | 229FS+45d, 207 |  | -64.12d |
| 231 |  | 移行判定会(準備状況確認) - 第 1 波 | 3d | 2027-08-03 | 2027-08-05 | 230, 226, 180 |  | -15d |
| 232 |  | 業務データ 締め - 第 1 波 | 2d | 2027-08-06 | 2027-08-09 | 231 |  | -15d |
| 233 |  | 本番データ移行 - 第 1 波 | 9d | 2027-08-09 | 2027-08-12 | 232 |  | -70.12d |
| 234 |  | 移行後 検証 - 第 1 波 | 6d | 2027-08-12 | 2027-08-14 | 233 |  | -70.12d |
| 235 |  | Go/No-Go 判定 - 第 1 波 | 1d | 2027-08-16 | 2027-08-16 | 234 |  | -15d |
| 236 |  | 本番稼働 第 1 波 | 0d | 2027-08-16 | 2027-08-16 | 235 |  | -15d |
| 237 |  | 稼働支援(ハイパーケア) - 第 1 波 | 30d | 2027-08-17 | 2027-09-29 | 236 |  | -13d |
| 238 | 11 | **11. 移行・稼働 第 2 波(生産・販売)** | 71d | 2027-08-17 | 2027-11-30 |  |  | -61.12d |
| 239 |  | 移行計画 - 第 2 波 | 15d | 2027-08-17 | 2027-09-06 | 236 |  | 2d |
| 240 |  | 移行リハーサル(通し) - 第 2 波 | 12d | 2027-09-29 | 2027-10-03 | 239, 237 |  | -61.12d |
| 241 |  | 移行判定会(準備状況確認) - 第 2 波 | 3d | 2027-10-04 | 2027-10-06 | 240 |  | -13d |
| 242 |  | 業務データ 締め - 第 2 波 | 2d | 2027-10-07 | 2027-10-08 | 241 |  | -13d |
| 243 |  | 本番データ移行 - 第 2 波 | 12d | 2027-10-08 | 2027-10-12 | 242 |  | -61.12d |
| 244 |  | 移行後 検証 - 第 2 波 | 6d | 2027-10-12 | 2027-10-14 | 243 |  | -61.12d |
| 245 |  | Go/No-Go 判定 - 第 2 波 | 1d | 2027-10-15 | 2027-10-15 | 244 |  | -14d |
| 246 |  | 本番稼働 第 2 波 | 0d | 2027-10-15 | 2027-10-15 | 245 |  | -14d |
| 247 |  | 稼働支援(ハイパーケア) - 第 2 波 | 30d | 2027-10-18 | 2027-11-30 | 246 |  | 0d |
| 248 | 12 | **12. プログラム完了** | 111d | 2027-08-18 | 2028-02-02 |  |  | 0d |
| 249 |  | 安定稼働 評価 | 15d | 2027-12-01 | 2027-12-21 | 247 |  | 0d |
| 250 |  | 効果測定(ベネフィット) | 20d | 2027-12-22 | 2028-01-25 | 249 |  | 0d |
| 251 |  | 保守運用への引き継ぎ | 20d | 2027-11-01 | 2027-11-30 | 247FF |  | 15d |
| 252 |  | 旧システム 並行稼働 | 40d | 2027-08-18 | 2027-10-15 | 246SF |  | 45d |
| 253 |  | 旧システム 停止・撤去 | 25d | 2027-12-01 | 2028-01-11 | 251, 252 |  | 15d |
| 254 |  | 教訓の整理(振り返り) | 5d | 2028-01-26 | 2028-02-01 | 250 |  | 0d |
| 255 |  | 最終ステアリングコミッティ | 1d | 2028-02-02 | 2028-02-02 | 254, 253 |  | 0d |
| 256 |  | プログラム 完了 | 0d | 2028-02-02 | 2028-02-02 | 255 |  | 0d |

## Version 2 (data date 2026-12-09, saved 2026-12-09)

Note of the change: Merge 16cc4ce7 (16cc4ce7) into coord

Last finish stays 2028-02-02. Complete tasks 87 → 134.

Changed:

| ID | Task | Start | Finish | Complete | Total float |
| --- | --- | --- | --- | --- | --- |
| 1 | **1. プログラム管理** |  |  | 90% → 57% |  |
| 6 | **1.5 ステアリングコミッティ** |  |  | 44% → 54% |  |
| 11 | ステアリングコミッティ 第 5 回 | 2026-11-13 A |  | 0% → 90% |  |
| 28 | **3. 技術基盤・インフラ** |  | 2026-09-09 A | 89% → 100% | -16d → none |
| 38 | DR サイト構築 |  | 2026-09-08 A | 40% → 100% | -15d → none |
| 41 | システム監視 設定 |  | 2026-08-28 A | 75% → 100% | -8d → none |
| 43 | セキュリティ ハードニング |  | 2026-09-01 A | 60% → 100% | -16d → none |
| 44 | 性能ベースライン測定 | 2026-09-02 A | 2026-09-09 A | 0% → 100% | -16d → none |
| 45 | 技術基盤 準備完了 | 2026-09-09 A | 2026-09-09 A | 0% → 100% | -16d → none |
| 78 | **5. 構築(リアライゼーション)** |  |  | 25% → 89% |  |
| 79 | **構築 - 財務・管理会計** |  |  | 25% → 90% |  |
| 80 | ベースライン設定 - 財務・管理会計 | 2026-09-10 A | 2026-10-09 A | 0% → 100% | -16d → none |
| 81 | マスタデータ設計 - 財務・管理会計 | 2026-09-17 A | 2026-10-06 A | 0% → 100% | -13d → none |
| 82 | 権限ロール設計 - 財務・管理会計 | 2026-10-13 A | 2026-10-26 A | 0% → 100% | 8d → none |
| 83 | 詳細設定(コンフィグ) - 財務・管理会計 | 2026-10-13 A | 2026-11-25 A | 0% → 100% | -16d → none |
| 85 | アドオン開発 - 財務・管理会計 |  | 2026-09-15 A | 61% → 100% | 38d → none |
| 86 | 単体テスト - 財務・管理会計 |  | 2026-09-09 A | 17% → 100% | 38d → none |
| 87 | プレイバック(業務確認会) - 財務・管理会計 | 2026-11-26 A |  | 0% → 90% |  |
| 90 | **構築 - 購買・在庫管理** |  |  | 27% → 89% |  |
| 91 | ベースライン設定 - 購買・在庫管理 | 2026-09-10 A | 2026-10-09 A | 0% → 100% | -11d → none |
| 92 | マスタデータ設計 - 購買・在庫管理 | 2026-09-17 A | 2026-10-06 A | 0% → 100% | -8d → none |
| 93 | 権限ロール設計 - 購買・在庫管理 | 2026-10-13 A | 2026-10-26 A | 0% → 100% | 8d → none |
| 94 | 詳細設定(コンフィグ) - 購買・在庫管理 | 2026-10-13 A | 2026-11-17 A | 0% → 100% | -11d → none |
| 96 | アドオン開発 - 購買・在庫管理 |  | 2026-09-07 A | 73% → 100% | 38d → none |
| 97 | 単体テスト - 購買・在庫管理 |  | 2026-09-09 A | 17% → 100% | 38d → none |
| 98 | プレイバック(業務確認会) - 購買・在庫管理 | 2026-11-18 A |  | 0% → 90% |  |
| 101 | **構築 - 生産管理** |  |  | 24% → 89% |  |
| 102 | ベースライン設定 - 生産管理 | 2026-09-10 A | 2026-10-09 A | 0% → 100% | -11d → none |
| 103 | マスタデータ設計 - 生産管理 | 2026-09-17 A | 2026-10-06 A | 0% → 100% | -8d → none |
| 104 | 権限ロール設計 - 生産管理 | 2026-10-13 A | 2026-10-26 A | 0% → 100% | 8d → none |
| 105 | 詳細設定(コンフィグ) - 生産管理 | 2026-10-13 A | 2026-11-17 A | 0% → 100% | -11d → none |
| 107 | アドオン開発 - 生産管理 |  | 2026-09-10 A | 65% → 100% | 35.5d → none |
| 108 | 単体テスト - 生産管理 | 2026-08-27 A | 2026-09-14 A | 0% → 100% | 35.5d → none |
| 109 | プレイバック(業務確認会) - 生産管理 | 2026-11-18 A |  | 0% → 90% |  |
| 112 | **構築 - 販売・物流** |  |  | 24% → 89% |  |
| 113 | ベースライン設定 - 販売・物流 | 2026-09-10 A | 2026-10-09 A | 0% → 100% | -11d → none |
| 114 | マスタデータ設計 - 販売・物流 | 2026-09-17 A | 2026-10-06 A | 0% → 100% | -8d → none |
| 115 | 権限ロール設計 - 販売・物流 | 2026-10-13 A | 2026-10-26 A | 0% → 100% | 8d → none |
| 116 | 詳細設定(コンフィグ) - 販売・物流 | 2026-10-13 A | 2026-11-17 A | 0% → 100% | -11d → none |
| 118 | アドオン開発 - 販売・物流 |  | 2026-09-10 A | 65% → 100% | 35.5d → none |
| 119 | 単体テスト - 販売・物流 | 2026-08-27 A | 2026-09-14 A | 0% → 100% | 35.5d → none |
| 120 | プレイバック(業務確認会) - 販売・物流 | 2026-11-18 A |  | 0% → 90% |  |
| 123 | **6. インターフェース・連携** |  |  | 30% → 97% |  |
| 125 | **銀行決済 連携** |  |  | 26% → 97% |  |
| 127 | 連携開発 - 銀行決済 連携 | 2026-10-13 A | 2026-11-02 A | 0% → 100% | 10d → none |
| 128 | 連携疎通テスト - 銀行決済 連携 | 2026-11-26 A |  | 0% → 90% |  |
| 129 | **仕入先 EDI 連携** |  |  | 26% → 97% |  |
| 131 | 連携開発 - 仕入先 EDI 連携 | 2026-10-13 A | 2026-11-02 A | 0% → 100% | 10d → none |
| 132 | 連携疎通テスト - 仕入先 EDI 連携 | 2026-11-18 A |  | 0% → 90% |  |
| 133 | **倉庫管理(WMS) 連携** |  |  | 26% → 97% |  |
| 135 | 連携開発 - 倉庫管理(WMS) 連携 | 2026-10-13 A | 2026-11-02 A | 0% → 100% | 10d → none |
| 136 | 連携疎通テスト - 倉庫管理(WMS) 連携 | 2026-11-18 A |  | 0% → 90% |  |
| 137 | **製造実行(MES) 連携** |  |  | 26% → 97% |  |
| 139 | 連携開発 - 製造実行(MES) 連携 | 2026-10-13 A | 2026-11-02 A | 0% → 100% | 10d → none |
| 140 | 連携疎通テスト - 製造実行(MES) 連携 | 2026-11-18 A |  | 0% → 90% |  |
| 141 | **CRM 連携** |  |  | 26% → 97% |  |
| 143 | 連携開発 - CRM 連携 | 2026-10-13 A | 2026-11-02 A | 0% → 100% | 10d → none |
| 144 | 連携疎通テスト - CRM 連携 | 2026-11-18 A |  | 0% → 90% |  |
| 145 | **BI・連結会計 連携** |  |  | 26% → 97% |  |
| 147 | 連携開発 - BI・連結会計 連携 | 2026-10-13 A | 2026-11-02 A | 0% → 100% | 10d → none |
| 148 | 連携疎通テスト - BI・連結会計 連携 | 2026-11-26 A |  | 0% → 90% |  |
| 150 | **7. データ移行** |  |  | 66% → 93% |  |
| 162 | **移行対象 - 部品表・工順** |  | 2026-09-09 A | 44% → 100% | 13d → none |
| 163 | マッピング・抽出 - 部品表・工順 |  | 2026-08-28 A | 80% → 100% | 13d → none |
| 164 | 投入・検証 - 部品表・工順 | 2026-08-31 A | 2026-09-09 A | 0% → 100% | 13d → none |
| 165 | **移行対象 - 未処理 受発注データ** |  | 2026-09-09 A | 44% → 100% | 31d → none |
| 166 | マッピング・抽出 - 未処理 受発注データ |  | 2026-08-28 A | 80% → 100% | 31d → none |
| 167 | 投入・検証 - 未処理 受発注データ | 2026-08-31 A | 2026-09-09 A | 0% → 100% | 31d → none |
| 168 | **移行対象 - 総勘定元帳 残高** |  | 2026-09-09 A | 44% → 100% | 31d → none |
| 169 | マッピング・抽出 - 総勘定元帳 残高 |  | 2026-08-28 A | 80% → 100% | 31d → none |

| ID | Task | Start | Finish | Complete | Total float |
| --- | --- | --- | --- | --- | --- |
| 170 | 投入・検証 - 総勘定元帳 残高 | 2026-08-31 A | 2026-09-09 A | 0% → 100% | 31d → none |
| 171 | **移行対象 - 固定資産** | 2026-09-10 A | 2026-10-07 A | 0% → 100% | 13d → none |
| 172 | マッピング・抽出 - 固定資産 | 2026-09-10 A | 2026-09-25 A | 0% → 100% | 13d → none |
| 173 | 投入・検証 - 固定資産 | 2026-09-28 A | 2026-10-07 A | 0% → 100% | 13d → none |
| 176 | 移行リハーサル 1 回目 | 2026-10-08 A | 2026-10-26 A | 0% → 100% | 13d → none |
| 181 | **8. 統合テスト** |  |  | 12% → 17% |  |
| 182 | **8.1 システム統合テスト(SIT)** |  |  | 20% → 35% |  |
| 184 | SIT シナリオ・ケース作成 |  | 2026-09-14 A | 58% → 100% | 50.5d → none |
| 185 | SIT 環境・データ準備 | 2026-10-27 A | 2026-11-10 A | 0% → 100% | 13d → none |
| 208 | **9. 組織変革・教育** |  |  | 38% → 46% |  |
| 214 | 変革コミュニケーション実施 - 2027 年度 上期 | 2026-10-22 A | 2026-11-19 A | 0% → 100% | 228d → none |
| 243 | 本番データ移行 - 第 2 波 |  |  | 0% → 10% |  |

## Version 3 (data date 2026-12-09, saved 2026-12-09)

Note of the change: Merge request seat 87b87d8c (CR-790 large sample findings)

Last finish stays 2028-02-02.

Changed:

| ID | Task | Start | Finish | Complete | Predecessors |
| --- | --- | --- | --- | --- | --- |
| 1 | **1. プログラム管理** |  |  | 57% → 52% |  |
| 6 | **1.5 ステアリングコミッティ** |  |  | 54% → 49% |  |
| 48 | **業務設計 - 財務・管理会計** | 2026-04-06 A → 2026-04-06 |  |  |  |
| 78 | **5. 構築(リアライゼーション)** |  |  | 89% → 82% |  |
| 79 | **構築 - 財務・管理会計** |  |  | 90% → 86% |  |
| 90 | **構築 - 購買・在庫管理** |  |  | 89% → 86% |  |
| 101 | **構築 - 生産管理** |  |  | 89% → 85% |  |
| 112 | **構築 - 販売・物流** |  |  | 89% → 85% |  |
| 123 | **6. インターフェース・連携** |  |  | 97% → 96% |  |
| 125 | **銀行決済 連携** |  |  | 97% → 99% |  |
| 129 | **仕入先 EDI 連携** |  |  | 97% → 99% |  |
| 133 | **倉庫管理(WMS) 連携** |  |  | 97% → 99% |  |
| 137 | **製造実行(MES) 連携** |  |  | 97% → 99% |  |
| 141 | **CRM 連携** |  |  | 97% → 99% |  |
| 145 | **BI・連結会計 連携** |  |  | 97% → 99% |  |
| 150 | **7. データ移行** |  |  | 93% → 53% |  |
| 153 | **移行対象 - 得意先マスタ** |  | 2026-08-12 A → 2026-08-12 |  |  |
| 181 | **8. 統合テスト** |  |  | 17% → 39% |  |
| 182 | **8.1 システム統合テスト(SIT)** |  |  | 35% → 57% |  |
| 208 | **9. 組織変革・教育** |  |  | 46% → 74% |  |
| 230 | 移行リハーサル(通し) 2 回目 - 第 1 波 |  |  |  | 229FS+45d, 207 → 229FS+13d, 207 |
| 243 | 本番データ移行 - 第 2 波 |  |  | 10% → 0% |  |
