# Sales Force Automation System Development

How a schedule from MS Project XML changed from version to version. A marks actual dates.

## Version 1 (data date 2026-08-26, saved 2026-08-26)

Note of the change: Publish sample-schedule: nine sample documents and a ProjectLibre file

| ID | WBS | Task | Duration | Start | Finish | Predecessors | Complete | Total float |
| --- | --- | --- | --- | --- | --- | --- | --- | --- |
| 1 | 1 | **Project Setup** | 11d | 2026-04-06 A | 2026-04-20 A |  | 100% |  |
| 2 |  | Project Charter and Scope Definition | 5d | 2026-04-06 A | 2026-04-10 A |  | 100% |  |
| 3 |  | Team Mobilization and Onboarding | 4d | 2026-04-08 A | 2026-04-13 A | 2SS+2d | 100% |  |
| 4 |  | WBS and Schedule Baseline | 5d | 2026-04-13 A | 2026-04-17 A | 2 | 100% |  |
| 5 |  | Development Standards Definition | 4d | 2026-04-14 A | 2026-04-17 A | 3 | 100% |  |
| 6 |  | Project Kickoff Meeting | 1d | 2026-04-20 A | 2026-04-20 A | 4, 5 | 100% |  |
| 7 |  | Project Start Approved | 0d | 2026-04-20 A | 2026-04-20 A | 6 | 100% |  |
| 8 | 2 | **Requirements Definition** | 43d | 2026-04-21 A | 2026-06-24 A |  | 100% |  |
| 9 |  | As-Is Sales Process Analysis | 10d | 2026-04-21 A | 2026-05-08 A | 7 | 100% |  |
| 10 |  | Interview: Direct Sales Division | 4d | 2026-04-24 A | 2026-04-30 A | 9SS+3d | 100% |  |
| 11 |  | Interview: Dealer Sales Division | 4d | 2026-05-01 A | 2026-05-11 A | 10 | 100% |  |
| 12 |  | Interview: Sales Administration | 3d | 2026-05-12 A | 2026-05-14 A | 11 | 100% |  |
| 13 |  | To-Be Process Design | 10d | 2026-05-15 A | 2026-05-28 A | 12, 9 | 100% |  |
| 14 |  | Use Case and Functional Requirements | 12d | 2026-05-29 A | 2026-06-15 A | 13 | 100% |  |
| 15 |  | Non-functional Requirements | 6d | 2026-05-29 A | 2026-06-05 A | 13 | 100% |  |
| 16 |  | Data Requirements and Migration Scope | 6d | 2026-05-29 A | 2026-06-05 A | 13 | 100% |  |
| 17 |  | Requirements Review and Approval | 7d | 2026-06-16 A | 2026-06-24 A | 14, 15, 16 | 100% |  |
| 18 |  | Requirements Frozen | 0d | 2026-06-24 A | 2026-06-24 A | 17 | 100% |  |
| 19 | 3 | **Architecture and External Design** | 22d | 2026-06-25 A | 2026-07-27 A |  | 100% |  |
| 20 |  | System Architecture Design | 10d | 2026-06-25 A | 2026-07-08 A | 18 | 100% |  |
| 21 |  | Screen Transition Design | 6d | 2026-06-25 A | 2026-07-02 A | 18 | 100% |  |
| 22 |  | Screen Layout Design | 12d | 2026-07-03 A | 2026-07-21 A | 21 | 100% |  |
| 23 |  | API Specification Design | 8d | 2026-07-09 A | 2026-07-21 A | 20 | 100% |  |
| 24 |  | Logical Data Model Design | 8d | 2026-06-30 A | 2026-07-09 A | 20SS+3d | 100% |  |
| 25 |  | Physical Database Design | 6d | 2026-07-10 A | 2026-07-17 A | 24 | 100% |  |
| 26 |  | Security and Access Control Design | 6d | 2026-07-09 A | 2026-07-16 A | 20 | 100% |  |
| 27 |  | Infrastructure Design | 7d | 2026-07-09 A | 2026-07-17 A | 20 | 100% |  |
| 28 |  | External Design Review | 4d | 2026-07-22 A | 2026-07-27 A | 22, 23, 25, 26, 27 | 100% |  |
| 29 |  | External Design Approved | 0d | 2026-07-27 A | 2026-07-27 A | 28 | 100% |  |
| 30 | 4 | **Environment and CI/CD** | 29d | 2026-07-21 A | 2026-09-02 |  | 83% | -2d |
| 31 |  | Development Environment Build | 6d | 2026-07-21 A | 2026-07-28 A | 27 | 100% |  |
| 32 |  | CI/CD Pipeline Setup | 6d | 2026-07-29 A | 2026-08-05 A | 31 | 100% |  |
| 33 |  | Staging Environment Build | 5d | 2026-08-06 A | 2026-08-17 A | 32 | 100% |  |
| 34 |  | Production Environment Build | 8d | 2026-08-18 A | 2026-08-27 | 33 | 88% | 212d |
| 35 |  | Monitoring and Log Collection Setup | 4d | 2026-08-28 | 2026-09-02 | 34 |  | 212d |
| 36 |  | Environments Ready | 0d | 2026-09-02 | 2026-09-02 | 35 |  | 212d |
| 37 | 5 | **Iterative Development** | 142d | 2026-07-29 A | 2027-03-04 |  | 11% | -2d |
| 38 | 5.1 | **Iteration 1 - Account and Contact Management** | 30d | 2026-07-29 A | 2026-09-11 |  | 50% | -2d |
| 39 |  | Iteration 1 Planning | 1d | 2026-07-29 A | 2026-07-29 A | 29, 31 | 100% |  |
| 40 |  | Detailed Design - Account and Contact Management | 6d | 2026-07-30 A | 2026-08-06 A | 39 | 100% |  |
| 41 |  | Implementation - Account and Contact Management | 18.2d | 2026-08-07 A | 2026-09-07 | 40 | 60% | -2d |
| 42 |  | Unit Test - Account and Contact Management | 5d | 2026-08-26 A | 2026-09-01 | 41SS+10d | 20% | -2d |
| 43 |  | Code Review and Refactoring - Account and Contact Management | 2d | 2026-09-02 | 2026-09-03 | 42 |  | -2d |
| 44 |  | Feature Test - Account and Contact Management | 4d | 2026-09-04 | 2026-09-09 | 43 |  | -2d |
| 45 |  | Iteration 1 Review and Demo | 1d | 2026-09-10 | 2026-09-10 | 44 |  | -2d |
| 46 |  | Iteration 1 Retrospective | 1d | 2026-09-11 | 2026-09-11 | 45 |  | 205d |
| 47 | 5.2 | **Iteration 2 - Opportunity and Pipeline Management** | 30d | 2026-09-11 | 2026-10-27 |  |  | -2d |
| 48 |  | Iteration 2 Planning | 1d | 2026-09-11 | 2026-09-11 | 45 |  | -2d |
| 49 |  | Detailed Design - Opportunity and Pipeline Management | 6d | 2026-09-14 | 2026-09-22 | 48 |  | -2d |
| 50 |  | Implementation - Opportunity and Pipeline Management | 16.8d | 2026-09-24 | 2026-10-19 | 49 |  | -2d |
| 51 |  | Unit Test - Opportunity and Pipeline Management | 5d | 2026-10-08 | 2026-10-15 | 50SS+10d |  | -2d |
| 52 |  | Code Review and Refactoring - Opportunity and Pipeline Management | 2d | 2026-10-16 | 2026-10-19 | 51 |  | -2d |
| 53 |  | Feature Test - Opportunity and Pipeline Management | 4d | 2026-10-20 | 2026-10-23 | 52 |  | -2d |
| 54 |  | Iteration 2 Review and Demo | 1d | 2026-10-26 | 2026-10-26 | 53 |  | -2d |
| 55 |  | Iteration 2 Retrospective | 1d | 2026-10-27 | 2026-10-27 | 54 |  | 176d |
| 56 | 5.3 | **Iteration 3 - Activity and Schedule Management** | 26d | 2026-10-27 | 2026-12-03 |  |  | -2d |
| 57 |  | Iteration 3 Planning | 1d | 2026-10-27 | 2026-10-27 | 54 |  | -2d |
| 58 |  | Detailed Design - Activity and Schedule Management | 5d | 2026-10-28 | 2026-11-04 | 57 |  | -2d |
| 59 |  | Implementation - Activity and Schedule Management | 12d | 2026-11-05 | 2026-11-20 | 58 |  | -2d |
| 60 |  | Unit Test - Activity and Schedule Management | 4d | 2026-11-17 | 2026-11-20 | 59SS+8d |  | -2d |
| 61 |  | Code Review and Refactoring - Activity and Schedule Management | 2d | 2026-11-24 | 2026-11-25 | 60 |  | -2d |
| 62 |  | Feature Test - Activity and Schedule Management | 4d | 2026-11-26 | 2026-12-01 | 61 |  | -2d |
| 63 |  | Iteration 3 Review and Demo | 1d | 2026-12-02 | 2026-12-02 | 62 |  | -2d |
| 64 |  | Iteration 3 Retrospective | 1d | 2026-12-03 | 2026-12-03 | 63 |  | 151d |
| 65 | 5.4 | **Iteration 4 - Quotation and Approval Workflow** | 34d | 2026-12-03 | 2027-01-26 |  |  | -2d |
| 66 |  | Iteration 4 Planning | 1d | 2026-12-03 | 2026-12-03 | 63 |  | -2d |
| 67 |  | Detailed Design - Quotation and Approval Workflow | 7d | 2026-12-04 | 2026-12-14 | 66 |  | -2d |
| 68 |  | Implementation - Quotation and Approval Workflow | 16d | 2026-12-15 | 2027-01-12 | 67 |  | -2d |
| 69 |  | Unit Test - Quotation and Approval Workflow | 6d | 2027-01-06 | 2027-01-14 | 68SS+12d |  | -2d |
| 70 |  | Code Review and Refactoring - Quotation and Approval Workflow | 2d | 2027-01-15 | 2027-01-18 | 69 |  | -2d |

| ID | WBS | Task | Duration | Start | Finish | Predecessors | Complete | Total float |
| --- | --- | --- | --- | --- | --- | --- | --- | --- |
| 71 |  | Feature Test - Quotation and Approval Workflow | 4d | 2027-01-19 | 2027-01-22 | 70 |  | -2d |
| 72 |  | Iteration 4 Review and Demo | 1d | 2027-01-25 | 2027-01-25 | 71 |  | -2d |
| 73 |  | Iteration 4 Retrospective | 1d | 2027-01-26 | 2027-01-26 | 72 |  | 118d |
| 74 | 5.5 | **Iteration 5 - Dashboard and Reporting** | 26d | 2027-01-26 | 2027-03-04 |  |  | -2d |
| 75 |  | Iteration 5 Planning | 1d | 2027-01-26 | 2027-01-26 | 72 |  | -2d |
| 76 |  | Detailed Design - Dashboard and Reporting | 5d | 2027-01-27 | 2027-02-02 | 75 |  | -2d |
| 77 |  | Implementation - Dashboard and Reporting | 12d | 2027-02-03 | 2027-02-19 | 76 |  | -2d |
| 78 |  | Unit Test - Dashboard and Reporting | 4d | 2027-02-16 | 2027-02-19 | 77SS+8d |  | -2d |
| 79 |  | Code Review and Refactoring - Dashboard and Reporting | 2d | 2027-02-22 | 2027-02-24 | 78 |  | -2d |
| 80 |  | Feature Test - Dashboard and Reporting | 4d | 2027-02-25 | 2027-03-02 | 79 |  | -2d |
| 81 |  | Iteration 5 Review and Demo | 1d | 2027-03-03 | 2027-03-03 | 80 |  | -2d |
| 82 |  | Iteration 5 Retrospective | 1d | 2027-03-04 | 2027-03-04 | 81 |  | -2d |
| 83 |  | All Iterations Complete | 0d | 2027-03-04 | 2027-03-04 | 82 |  | -2d |
| 84 | 6 | **Data Migration** | 201d | 2026-06-08 A | 2027-04-07 |  | 66% | 8d |
| 85 |  | Source Data Survey | 8d | 2026-06-08 A | 2026-06-17 A | 16 | 100% |  |
| 86 |  | Data Mapping Definition | 10d | 2026-07-21 A | 2026-08-03 A | 85, 25 | 100% |  |
| 87 |  | Migration Tool Development | 15d | 2026-08-04 A | 2026-08-27 | 86 | 93% | 133d |
| 88 |  | Data Cleansing Rules and Execution | 20.25d | 2026-08-04 A | 2026-09-04 | 86 | 69% | 127.75d |
| 89 |  | Mock Migration 1 | 5d | 2026-09-04 | 2026-09-11 | 87, 88 |  | 127.75d |
| 90 |  | Mock Migration 2 | 5d | 2027-03-24 | 2027-03-30 | 89FS+5d, 96 |  | 8d |
| 91 |  | Migration Result Verification | 6d | 2027-03-31 | 2027-04-07 | 90 |  | 8d |
| 92 |  | Migration Procedure Fixed | 0d | 2027-04-07 | 2027-04-07 | 91 |  | 8d |
| 93 | 7 | **System Integration Test** | 176d | 2026-07-28 A | 2027-04-21 |  | 28% | -2d |
| 94 |  | SIT Plan | 5d | 2026-07-28 A | 2026-08-03 A | 29 | 100% |  |
| 95 |  | SIT Case Creation | 15d | 2026-08-04 A | 2026-08-27 | 94 | 93% | 121d |
| 96 |  | SIT Cycle 1 | 12d | 2027-03-05 | 2027-03-23 | 83, 95, 33 |  | -2d |
| 97 |  | Defect Fixing (Cycle 1) | 10d | 2027-03-11 | 2027-03-25 | 96SS+4d |  | -2d |
| 98 |  | SIT Cycle 2 | 10d | 2027-03-26 | 2027-04-08 | 96, 97 |  | -2d |
| 99 |  | Defect Fixing (Cycle 2) | 8d | 2027-03-31 | 2027-04-09 | 98SS+3d |  | -2d |
| 100 |  | Regression Test | 6d | 2027-04-12 | 2027-04-19 | 98, 99 |  | -2d |
| 101 |  | SIT Exit Review | 2d | 2027-04-20 | 2027-04-21 | 100 |  | -2d |
| 102 |  | SIT Complete | 0d | 2027-04-21 | 2027-04-21 | 101 |  | -2d |
| 103 | 8 | **Performance and Security Test** | 35d | 2027-03-24 | 2027-05-17 |  |  | 46d |
| 104 |  | Performance Test Scenario Design | 5d | 2027-03-24 | 2027-03-30 | 96 |  | 62d |
| 105 |  | Load Test Execution | 6d | 2027-04-22 | 2027-04-30 | 104, 102 |  | 46d |
| 106 |  | Performance Tuning | 8d | 2027-05-06 | 2027-05-17 | 105 |  | 46d |
| 107 |  | Vulnerability Assessment | 6d | 2027-04-22 | 2027-04-30 | 102 |  | 48d |
| 108 |  | Security Remediation | 6d | 2027-05-06 | 2027-05-13 | 107 |  | 48d |
| 109 |  | Non-functional Requirements Met | 0d | 2027-05-17 | 2027-05-17 | 106, 108 |  | 46d |
| 110 | 9 | **User Acceptance Test** | 196d | 2026-08-04 A | 2027-06-01 |  | 11% | -2d |
| 111 |  | UAT Plan | 4d | 2026-08-04 A | 2026-08-07 A | 94 | 100% |  |
| 112 |  | UAT Data Preparation | 5d | 2027-04-22 | 2027-04-28 | 92, 102 |  | -2d |
| 113 |  | UAT Participant Briefing | 2d | 2027-04-30 | 2027-05-06 | 111, 112 |  | -2d |
| 114 |  | UAT Cycle 1 | 10d | 2027-05-07 | 2027-05-20 | 113 |  | -2d |
| 115 |  | UAT Defect Fixing | 8d | 2027-05-13 | 2027-05-24 | 114SS+4d |  | -2d |
| 116 |  | UAT Cycle 2 | 6d | 2027-05-25 | 2027-06-01 | 114, 115 |  | -2d |
| 117 |  | UAT Sign-off | 0d | 2027-06-01 | 2027-06-01 | 116 |  | -2d |
| 118 | 10 | **Training and Rollout Preparation** | 66d | 2027-03-05 | 2027-06-11 |  |  | -2d |
| 119 |  | End User Manual | 12d | 2027-03-05 | 2027-03-23 | 83 |  | 40d |
| 120 |  | Administrator Manual | 8d | 2027-03-05 | 2027-03-16 | 83 |  | 51d |
| 121 |  | Train the Trainer | 4d | 2027-03-24 | 2027-03-29 | 119 |  | 40d |
| 122 |  | User Training - East Japan | 4d | 2027-06-02 | 2027-06-07 | 121, 117 |  | -2d |
| 123 |  | User Training - West Japan | 4d | 2027-06-08 | 2027-06-11 | 122 |  | -2d |
| 124 |  | Help Desk Setup | 5d | 2027-06-07 | 2027-06-11 | 120, 123FF |  | -2d |
| 125 |  | Training Complete | 0d | 2027-06-11 | 2027-06-11 | 123, 124 |  | -2d |
| 126 | 11 | **Release and Hypercare** | 60d | 2027-04-22 | 2027-07-21 |  |  | -2d |
| 127 |  | Release and Cutover Plan | 5d | 2027-04-22 | 2027-04-28 | 102 |  | 23d |
| 128 |  | Cutover Rehearsal | 3d | 2027-06-02 | 2027-06-04 | 127, 117 |  | 3d |
| 129 |  | Production Data Migration | 3d | 2027-06-14 | 2027-06-16 | 128, 125 |  | -2d |
| 130 |  | Production Release | 2d | 2027-06-17 | 2027-06-18 | 129 |  | -2d |
| 131 |  | Go-Live | 0d | 2027-06-18 | 2027-06-18 | 130 |  | -2d |
| 132 |  | Hypercare Support | 15d | 2027-06-21 | 2027-07-09 | 131 |  | 0d |
| 133 |  | Post-implementation Review | 4d | 2027-07-12 | 2027-07-15 | 132 |  | 0d |
| 134 |  | Project Closure | 3d | 2027-07-16 | 2027-07-21 | 133 |  | 0d |

## Version 2 (data date 2026-09-09, saved 2026-09-09)

Note of the change: Merge commit '63a8c69f3d29bd509431223d0e748eae3db72524' into spec-pass-1001

Last finish stays 2027-07-21. Complete tasks 35 → 41.

Changed:

| ID | Task | Start | Finish | Complete | Total float |
| --- | --- | --- | --- | --- | --- |
| 30 | **Environment and CI/CD** |  |  | 83% → 98% |  |
| 34 | Production Environment Build |  | 2026-08-27 A | 88% → 100% | 212d → none |
| 35 | Monitoring and Log Collection Setup | 2026-08-28 A |  | 0% → 90% |  |
| 37 | **Iterative Development** |  |  | 11% → 17% |  |
| 38 | **Iteration 1 - Account and Contact Management** |  |  | 50% → 83% |  |
| 41 | Implementation - Account and Contact Management |  | 2026-09-07 A | 60% → 100% | -2d → none |
| 42 | Unit Test - Account and Contact Management |  | 2026-09-01 A | 20% → 100% | -2d → none |
| 43 | Code Review and Refactoring - Account and Contact Management | 2026-09-02 A |  | 0% → 90% |  |
| 84 | **Data Migration** |  |  | 66% → 81% |  |
| 87 | Migration Tool Development |  | 2026-08-27 A | 93% → 100% | 133d → none |
| 88 | Data Cleansing Rules and Execution |  | 2026-09-04 A | 69% → 100% | 127.75d → none |
| 89 | Mock Migration 1 | 2026-09-04 A |  | 0% → 66% |  |
| 93 | **System Integration Test** |  |  | 28% → 29% |  |
| 95 | SIT Case Creation |  | 2026-08-27 A | 93% → 100% | 121d → none |
| 128 | Cutover Rehearsal |  |  | 0% → 10% |  |
