# 営業支援(SFA)システム 開発

How a schedule from MS Project XML changed from version to version. A marks actual dates.

## Version 1 (data date 2026-08-26, saved 2026-08-26)

Note of the change: Publish sample-schedule: nine sample documents and a ProjectLibre file

| ID | WBS | Task | Duration | Start | Finish | Predecessors | Complete | Total float |
| --- | --- | --- | --- | --- | --- | --- | --- | --- |
| 1 | 1 | **1. プロジェクト立ち上げ** | 11d | 2026-04-06 A | 2026-04-20 A |  | 100% |  |
| 2 |  | プロジェクト計画書・スコープ定義 | 5d | 2026-04-06 A | 2026-04-10 A |  | 100% |  |
| 3 |  | 体制構築・要員アサイン | 4d | 2026-04-08 A | 2026-04-13 A | 2SS+2d | 100% |  |
| 4 |  | WBS 作成・スケジュール確定 | 5d | 2026-04-13 A | 2026-04-17 A | 2 | 100% |  |
| 5 |  | 開発標準の策定 | 4d | 2026-04-14 A | 2026-04-17 A | 3 | 100% |  |
| 6 |  | キックオフ会議 | 1d | 2026-04-20 A | 2026-04-20 A | 4, 5 | 100% |  |
| 7 |  | プロジェクト開始承認 | 0d | 2026-04-20 A | 2026-04-20 A | 6 | 100% |  |
| 8 | 2 | **2. 要件定義** | 43d | 2026-04-21 A | 2026-06-24 A |  | 100% |  |
| 9 |  | 現行 営業プロセス分析 | 10d | 2026-04-21 A | 2026-05-08 A | 7 | 100% |  |
| 10 |  | ヒアリング:直販部門 | 4d | 2026-04-24 A | 2026-04-30 A | 9SS+3d | 100% |  |
| 11 |  | ヒアリング:代理店部門 | 4d | 2026-05-01 A | 2026-05-11 A | 10 | 100% |  |
| 12 |  | ヒアリング:営業事務 | 3d | 2026-05-12 A | 2026-05-14 A | 11 | 100% |  |
| 13 |  | To-Be 業務プロセス設計 | 10d | 2026-05-15 A | 2026-05-28 A | 12, 9 | 100% |  |
| 14 |  | ユースケース・機能要件定義 | 12d | 2026-05-29 A | 2026-06-15 A | 13 | 100% |  |
| 15 |  | 非機能要件定義 | 6d | 2026-05-29 A | 2026-06-05 A | 13 | 100% |  |
| 16 |  | データ要件・移行範囲定義 | 6d | 2026-05-29 A | 2026-06-05 A | 13 | 100% |  |
| 17 |  | 要件定義レビュー・承認 | 7d | 2026-06-16 A | 2026-06-24 A | 14, 15, 16 | 100% |  |
| 18 |  | 要件定義 確定 | 0d | 2026-06-24 A | 2026-06-24 A | 17 | 100% |  |
| 19 | 3 | **3. 方式設計・外部設計** | 22d | 2026-06-25 A | 2026-07-27 A |  | 100% |  |
| 20 |  | システム方式設計 | 10d | 2026-06-25 A | 2026-07-08 A | 18 | 100% |  |
| 21 |  | 画面遷移設計 | 6d | 2026-06-25 A | 2026-07-02 A | 18 | 100% |  |
| 22 |  | 画面レイアウト設計 | 12d | 2026-07-03 A | 2026-07-21 A | 21 | 100% |  |
| 23 |  | API 仕様設計 | 8d | 2026-07-09 A | 2026-07-21 A | 20 | 100% |  |
| 24 |  | 論理データモデル設計 | 8d | 2026-06-30 A | 2026-07-09 A | 20SS+3d | 100% |  |
| 25 |  | 物理データベース設計 | 6d | 2026-07-10 A | 2026-07-17 A | 24 | 100% |  |
| 26 |  | セキュリティ・権限設計 | 6d | 2026-07-09 A | 2026-07-16 A | 20 | 100% |  |
| 27 |  | インフラ構成設計 | 7d | 2026-07-09 A | 2026-07-17 A | 20 | 100% |  |
| 28 |  | 外部設計レビュー | 4d | 2026-07-22 A | 2026-07-27 A | 22, 23, 25, 26, 27 | 100% |  |
| 29 |  | 外部設計 承認 | 0d | 2026-07-27 A | 2026-07-27 A | 28 | 100% |  |
| 30 | 4 | **4. 環境構築・CI/CD** | 29d | 2026-07-21 A | 2026-09-02 |  | 83% | -2d |
| 31 |  | 開発環境構築 | 6d | 2026-07-21 A | 2026-07-28 A | 27 | 100% |  |
| 32 |  | CI/CD パイプライン構築 | 6d | 2026-07-29 A | 2026-08-05 A | 31 | 100% |  |
| 33 |  | 検証環境構築 | 5d | 2026-08-06 A | 2026-08-17 A | 32 | 100% |  |
| 34 |  | 本番環境構築 | 8d | 2026-08-18 A | 2026-08-27 | 33 | 88% | 212d |
| 35 |  | 監視・ログ基盤設定 | 4d | 2026-08-28 | 2026-09-02 | 34 |  | 212d |
| 36 |  | 環境構築完了 | 0d | 2026-09-02 | 2026-09-02 | 35 |  | 212d |
| 37 | 5 | **5. 反復開発** | 142d | 2026-07-29 A | 2027-03-04 |  | 11% | -2d |
| 38 | 5.1 | **イテレーション 1 - 取引先・顧客管理** | 30d | 2026-07-29 A | 2026-09-11 |  | 50% | -2d |
| 39 |  | イテレーション 1 計画 | 1d | 2026-07-29 A | 2026-07-29 A | 29, 31 | 100% |  |
| 40 |  | 詳細設計 - 取引先・顧客管理 | 6d | 2026-07-30 A | 2026-08-06 A | 39 | 100% |  |
| 41 |  | 実装 - 取引先・顧客管理 | 18.2d | 2026-08-07 A | 2026-09-07 | 40 | 60% | -2d |
| 42 |  | 単体テスト - 取引先・顧客管理 | 5d | 2026-08-26 A | 2026-09-01 | 41SS+10d | 20% | -2d |
| 43 |  | コードレビュー・改善 - 取引先・顧客管理 | 2d | 2026-09-02 | 2026-09-03 | 42 |  | -2d |
| 44 |  | 機能テスト - 取引先・顧客管理 | 4d | 2026-09-04 | 2026-09-09 | 43 |  | -2d |
| 45 |  | イテレーション 1 レビュー・デモ | 1d | 2026-09-10 | 2026-09-10 | 44 |  | -2d |
| 46 |  | イテレーション 1 振り返り | 1d | 2026-09-11 | 2026-09-11 | 45 |  | 205d |
| 47 | 5.2 | **イテレーション 2 - 商談・パイプライン管理** | 30d | 2026-09-11 | 2026-10-27 |  |  | -2d |
| 48 |  | イテレーション 2 計画 | 1d | 2026-09-11 | 2026-09-11 | 45 |  | -2d |
| 49 |  | 詳細設計 - 商談・パイプライン管理 | 6d | 2026-09-14 | 2026-09-22 | 48 |  | -2d |
| 50 |  | 実装 - 商談・パイプライン管理 | 16.8d | 2026-09-24 | 2026-10-19 | 49 |  | -2d |
| 51 |  | 単体テスト - 商談・パイプライン管理 | 5d | 2026-10-08 | 2026-10-15 | 50SS+10d |  | -2d |
| 52 |  | コードレビュー・改善 - 商談・パイプライン管理 | 2d | 2026-10-16 | 2026-10-19 | 51 |  | -2d |
| 53 |  | 機能テスト - 商談・パイプライン管理 | 4d | 2026-10-20 | 2026-10-23 | 52 |  | -2d |
| 54 |  | イテレーション 2 レビュー・デモ | 1d | 2026-10-26 | 2026-10-26 | 53 |  | -2d |
| 55 |  | イテレーション 2 振り返り | 1d | 2026-10-27 | 2026-10-27 | 54 |  | 176d |
| 56 | 5.3 | **イテレーション 3 - 活動・スケジュール管理** | 26d | 2026-10-27 | 2026-12-03 |  |  | -2d |
| 57 |  | イテレーション 3 計画 | 1d | 2026-10-27 | 2026-10-27 | 54 |  | -2d |
| 58 |  | 詳細設計 - 活動・スケジュール管理 | 5d | 2026-10-28 | 2026-11-04 | 57 |  | -2d |
| 59 |  | 実装 - 活動・スケジュール管理 | 12d | 2026-11-05 | 2026-11-20 | 58 |  | -2d |
| 60 |  | 単体テスト - 活動・スケジュール管理 | 4d | 2026-11-17 | 2026-11-20 | 59SS+8d |  | -2d |
| 61 |  | コードレビュー・改善 - 活動・スケジュール管理 | 2d | 2026-11-24 | 2026-11-25 | 60 |  | -2d |
| 62 |  | 機能テスト - 活動・スケジュール管理 | 4d | 2026-11-26 | 2026-12-01 | 61 |  | -2d |
| 63 |  | イテレーション 3 レビュー・デモ | 1d | 2026-12-02 | 2026-12-02 | 62 |  | -2d |
| 64 |  | イテレーション 3 振り返り | 1d | 2026-12-03 | 2026-12-03 | 63 |  | 151d |
| 65 | 5.4 | **イテレーション 4 - 見積・承認ワークフロー** | 34d | 2026-12-03 | 2027-01-26 |  |  | -2d |
| 66 |  | イテレーション 4 計画 | 1d | 2026-12-03 | 2026-12-03 | 63 |  | -2d |
| 67 |  | 詳細設計 - 見積・承認ワークフロー | 7d | 2026-12-04 | 2026-12-14 | 66 |  | -2d |
| 68 |  | 実装 - 見積・承認ワークフロー | 16d | 2026-12-15 | 2027-01-12 | 67 |  | -2d |
| 69 |  | 単体テスト - 見積・承認ワークフロー | 6d | 2027-01-06 | 2027-01-14 | 68SS+12d |  | -2d |
| 70 |  | コードレビュー・改善 - 見積・承認ワークフロー | 2d | 2027-01-15 | 2027-01-18 | 69 |  | -2d |

| ID | WBS | Task | Duration | Start | Finish | Predecessors | Complete | Total float |
| --- | --- | --- | --- | --- | --- | --- | --- | --- |
| 71 |  | 機能テスト - 見積・承認ワークフロー | 4d | 2027-01-19 | 2027-01-22 | 70 |  | -2d |
| 72 |  | イテレーション 4 レビュー・デモ | 1d | 2027-01-25 | 2027-01-25 | 71 |  | -2d |
| 73 |  | イテレーション 4 振り返り | 1d | 2027-01-26 | 2027-01-26 | 72 |  | 118d |
| 74 | 5.5 | **イテレーション 5 - ダッシュボード・帳票** | 26d | 2027-01-26 | 2027-03-04 |  |  | -2d |
| 75 |  | イテレーション 5 計画 | 1d | 2027-01-26 | 2027-01-26 | 72 |  | -2d |
| 76 |  | 詳細設計 - ダッシュボード・帳票 | 5d | 2027-01-27 | 2027-02-02 | 75 |  | -2d |
| 77 |  | 実装 - ダッシュボード・帳票 | 12d | 2027-02-03 | 2027-02-19 | 76 |  | -2d |
| 78 |  | 単体テスト - ダッシュボード・帳票 | 4d | 2027-02-16 | 2027-02-19 | 77SS+8d |  | -2d |
| 79 |  | コードレビュー・改善 - ダッシュボード・帳票 | 2d | 2027-02-22 | 2027-02-24 | 78 |  | -2d |
| 80 |  | 機能テスト - ダッシュボード・帳票 | 4d | 2027-02-25 | 2027-03-02 | 79 |  | -2d |
| 81 |  | イテレーション 5 レビュー・デモ | 1d | 2027-03-03 | 2027-03-03 | 80 |  | -2d |
| 82 |  | イテレーション 5 振り返り | 1d | 2027-03-04 | 2027-03-04 | 81 |  | -2d |
| 83 |  | 全イテレーション完了 | 0d | 2027-03-04 | 2027-03-04 | 82 |  | -2d |
| 84 | 6 | **6. データ移行** | 201d | 2026-06-08 A | 2027-04-07 |  | 66% | 8d |
| 85 |  | 移行元データ調査 | 8d | 2026-06-08 A | 2026-06-17 A | 16 | 100% |  |
| 86 |  | データマッピング定義 | 10d | 2026-07-21 A | 2026-08-03 A | 85, 25 | 100% |  |
| 87 |  | 移行ツール開発 | 15d | 2026-08-04 A | 2026-08-27 | 86 | 93% | 133d |
| 88 |  | データクレンジング | 20.25d | 2026-08-04 A | 2026-09-04 | 86 | 69% | 127.75d |
| 89 |  | 移行リハーサル 1 回目 | 5d | 2026-09-04 | 2026-09-11 | 87, 88 |  | 127.75d |
| 90 |  | 移行リハーサル 2 回目 | 5d | 2027-03-24 | 2027-03-30 | 89FS+5d, 96 |  | 8d |
| 91 |  | 移行結果 検証 | 6d | 2027-03-31 | 2027-04-07 | 90 |  | 8d |
| 92 |  | 移行手順 確定 | 0d | 2027-04-07 | 2027-04-07 | 91 |  | 8d |
| 93 | 7 | **7. 結合テスト** | 176d | 2026-07-28 A | 2027-04-21 |  | 28% | -2d |
| 94 |  | 結合テスト計画 | 5d | 2026-07-28 A | 2026-08-03 A | 29 | 100% |  |
| 95 |  | 結合テストケース作成 | 15d | 2026-08-04 A | 2026-08-27 | 94 | 93% | 121d |
| 96 |  | 結合テスト 1 巡目 | 12d | 2027-03-05 | 2027-03-23 | 83, 95, 33 |  | -2d |
| 97 |  | 不具合修正 (1 巡目) | 10d | 2027-03-11 | 2027-03-25 | 96SS+4d |  | -2d |
| 98 |  | 結合テスト 2 巡目 | 10d | 2027-03-26 | 2027-04-08 | 96, 97 |  | -2d |
| 99 |  | 不具合修正 (2 巡目) | 8d | 2027-03-31 | 2027-04-09 | 98SS+3d |  | -2d |
| 100 |  | リグレッションテスト | 6d | 2027-04-12 | 2027-04-19 | 98, 99 |  | -2d |
| 101 |  | 結合テスト 完了判定 | 2d | 2027-04-20 | 2027-04-21 | 100 |  | -2d |
| 102 |  | 結合テスト 完了 | 0d | 2027-04-21 | 2027-04-21 | 101 |  | -2d |
| 103 | 8 | **8. 性能・セキュリティテスト** | 35d | 2027-03-24 | 2027-05-17 |  |  | 46d |
| 104 |  | 性能試験シナリオ設計 | 5d | 2027-03-24 | 2027-03-30 | 96 |  | 62d |
| 105 |  | 負荷テスト実施 | 6d | 2027-04-22 | 2027-04-30 | 104, 102 |  | 46d |
| 106 |  | 性能チューニング | 8d | 2027-05-06 | 2027-05-17 | 105 |  | 46d |
| 107 |  | 脆弱性診断 | 6d | 2027-04-22 | 2027-04-30 | 102 |  | 48d |
| 108 |  | セキュリティ対応 | 6d | 2027-05-06 | 2027-05-13 | 107 |  | 48d |
| 109 |  | 非機能要件 充足確認 | 0d | 2027-05-17 | 2027-05-17 | 106, 108 |  | 46d |
| 110 | 9 | **9. 受入テスト(UAT)** | 196d | 2026-08-04 A | 2027-06-01 |  | 11% | -2d |
| 111 |  | UAT 計画 | 4d | 2026-08-04 A | 2026-08-07 A | 94 | 100% |  |
| 112 |  | UAT データ準備 | 5d | 2027-04-22 | 2027-04-28 | 92, 102 |  | -2d |
| 113 |  | UAT 参加者 説明会 | 2d | 2027-04-30 | 2027-05-06 | 111, 112 |  | -2d |
| 114 |  | UAT 1 巡目 | 10d | 2027-05-07 | 2027-05-20 | 113 |  | -2d |
| 115 |  | UAT 指摘対応 | 8d | 2027-05-13 | 2027-05-24 | 114SS+4d |  | -2d |
| 116 |  | UAT 2 巡目 | 6d | 2027-05-25 | 2027-06-01 | 114, 115 |  | -2d |
| 117 |  | UAT 承認 | 0d | 2027-06-01 | 2027-06-01 | 116 |  | -2d |
| 118 | 10 | **10. 教育・展開準備** | 66d | 2027-03-05 | 2027-06-11 |  |  | -2d |
| 119 |  | 利用者マニュアル作成 | 12d | 2027-03-05 | 2027-03-23 | 83 |  | 40d |
| 120 |  | 管理者マニュアル作成 | 8d | 2027-03-05 | 2027-03-16 | 83 |  | 51d |
| 121 |  | トレーナー育成 | 4d | 2027-03-24 | 2027-03-29 | 119 |  | 40d |
| 122 |  | 利用者研修 (東日本) | 4d | 2027-06-02 | 2027-06-07 | 121, 117 |  | -2d |
| 123 |  | 利用者研修 (西日本) | 4d | 2027-06-08 | 2027-06-11 | 122 |  | -2d |
| 124 |  | ヘルプデスク立ち上げ | 5d | 2027-06-07 | 2027-06-11 | 120, 123FF |  | -2d |
| 125 |  | 教育 完了 | 0d | 2027-06-11 | 2027-06-11 | 123, 124 |  | -2d |
| 126 | 11 | **11. リリース・稼働支援** | 60d | 2027-04-22 | 2027-07-21 |  |  | -2d |
| 127 |  | リリース・移行計画 | 5d | 2027-04-22 | 2027-04-28 | 102 |  | 23d |
| 128 |  | 移行リハーサル | 3d | 2027-06-02 | 2027-06-04 | 127, 117 |  | 3d |
| 129 |  | 本番データ移行 | 3d | 2027-06-14 | 2027-06-16 | 128, 125 |  | -2d |
| 130 |  | 本番リリース | 2d | 2027-06-17 | 2027-06-18 | 129 |  | -2d |
| 131 |  | 本番稼働開始 | 0d | 2027-06-18 | 2027-06-18 | 130 |  | -2d |
| 132 |  | 稼働直後 サポート(ハイパーケア) | 15d | 2027-06-21 | 2027-07-09 | 131 |  | 0d |
| 133 |  | 稼働後 評価 | 4d | 2027-07-12 | 2027-07-15 | 132 |  | 0d |
| 134 |  | プロジェクト完了 | 3d | 2027-07-16 | 2027-07-21 | 133 |  | 0d |

## Version 2 (data date 2026-09-09, saved 2026-09-09)

Note of the change: Land CR-618: same-day FS holds, managed MSPDI samples

Last finish stays 2027-07-21. Complete tasks 35 → 41.

Changed:

| ID | Task | Start | Finish | Complete | Total float |
| --- | --- | --- | --- | --- | --- |
| 30 | **4. 環境構築・CI/CD** |  |  | 83% → 98% |  |
| 34 | 本番環境構築 |  | 2026-08-27 A | 88% → 100% | 212d → none |
| 35 | 監視・ログ基盤設定 | 2026-08-28 A |  | 0% → 90% |  |
| 37 | **5. 反復開発** |  |  | 11% → 17% |  |
| 38 | **イテレーション 1 - 取引先・顧客管理** |  |  | 50% → 83% |  |
| 41 | 実装 - 取引先・顧客管理 |  | 2026-09-07 A | 60% → 100% | -2d → none |
| 42 | 単体テスト - 取引先・顧客管理 |  | 2026-09-01 A | 20% → 100% | -2d → none |
| 43 | コードレビュー・改善 - 取引先・顧客管理 | 2026-09-02 A |  | 0% → 90% |  |
| 84 | **6. データ移行** |  |  | 66% → 81% |  |
| 87 | 移行ツール開発 |  | 2026-08-27 A | 93% → 100% | 133d → none |
| 88 | データクレンジング |  | 2026-09-04 A | 69% → 100% | 127.75d → none |
| 89 | 移行リハーサル 1 回目 | 2026-09-04 A |  | 0% → 66% |  |
| 93 | **7. 結合テスト** |  |  | 28% → 29% |  |
| 95 | 結合テストケース作成 |  | 2026-08-27 A | 93% → 100% | 121d → none |
| 128 | 移行リハーサル |  |  | 0% → 10% |  |
