# Corporate Website Renewal

How a schedule from MS Project XML changed from version to version. A marks actual dates.

## Version 1 (data date 2026-08-26, saved 2026-08-26)

Note of the change: Publish sample-schedule: nine sample documents and a ProjectLibre file

| ID | WBS | Task | Duration | Start | Finish | Predecessors | Complete | Total float |
| --- | --- | --- | --- | --- | --- | --- | --- | --- |
| 1 | 1 | **Project Initiation** | 13d | 2026-06-08 A | 2026-06-24 A |  | 100% |  |
| 2 |  | Kickoff Meeting | 1d | 2026-06-08 A | 2026-06-08 A |  | 100% |  |
| 3 |  | Current Site Analysis | 5d | 2026-06-09 A | 2026-06-15 A | 2 | 100% |  |
| 4 |  | Competitor Benchmarking | 4d | 2026-06-09 A | 2026-06-12 A | 2 | 100% |  |
| 5 |  | Requirements Workshop | 3d | 2026-06-16 A | 2026-06-18 A | 3, 4 | 100% |  |
| 6 |  | Requirements Definition Document | 4d | 2026-06-19 A | 2026-06-24 A | 5 | 100% |  |
| 7 |  | Requirements Approved | 0d | 2026-06-24 A | 2026-06-24 A | 6 | 100% |  |
| 8 | 2 | **Information Architecture and Design** | 31d | 2026-06-25 A | 2026-08-07 A |  | 100% |  |
| 9 |  | Sitemap and IA Design | 5d | 2026-06-25 A | 2026-07-01 A | 7 | 100% |  |
| 10 |  | Wireframe Creation | 8d | 2026-07-02 A | 2026-07-13 A | 9 | 100% |  |
| 11 |  | Design System and Style Guide | 5d | 2026-07-06 A | 2026-07-10 A | 10SS+2d | 100% |  |
| 12 |  | Key Page Visual Design | 10d | 2026-07-14 A | 2026-07-28 A | 10, 11 | 100% |  |
| 13 |  | Design Review with Stakeholders | 2d | 2026-07-29 A | 2026-07-30 A | 12 | 100% |  |
| 14 |  | Design Revision | 6d | 2026-07-31 A | 2026-08-07 A | 13 | 100% |  |
| 15 |  | Design Approved | 0d | 2026-08-07 A | 2026-08-07 A | 14 | 100% |  |
| 16 | 3 | **Content Preparation** | 49d | 2026-06-25 A | 2026-09-07 |  | 71% | -7d |
| 17 |  | Content Inventory | 4d | 2026-06-25 A | 2026-06-30 A | 7 | 100% |  |
| 18 |  | SEO Keyword Mapping | 3d | 2026-07-02 A | 2026-07-06 A | 9 | 100% |  |
| 19 |  | Copywriting | 15d | 2026-08-10 A | 2026-09-02 | 17, 15SS | 67% | -7d |
| 20 |  | Photo Shoot | 2d | 2026-08-10 A | 2026-08-12 A | 15 | 100% |  |
| 21 |  | Content Review and Approval | 3d | 2026-09-03 | 2026-09-07 | 19 |  | -7d |
| 22 | 4 | **Build** | 57d | 2026-06-25 A | 2026-09-17 |  | 61% | -7d |
| 23 |  | CMS Setup and Environment Build | 4d | 2026-06-25 A | 2026-06-30 A | 7 | 100% |  |
| 24 |  | Template Development | 12d | 2026-08-10 A | 2026-08-28 | 15, 23 | 83% | -1d |
| 25 |  | Responsive Implementation | 6d | 2026-08-21 A | 2026-08-28 | 24SS+6d | 67% | 7d |
| 26 |  | Inquiry Form Implementation | 4d | 2026-07-01 A | 2026-07-06 A | 23 | 100% |  |
| 27 |  | Content Entry | 8d | 2026-09-08 | 2026-09-17 | 24, 21, 20 |  | -7d |
| 28 |  | Analytics and Tag Setup | 2d | 2026-09-16 | 2026-09-17 | 24, 18, 27FF |  | -7d |
| 29 |  | Build Complete | 0d | 2026-09-17 | 2026-09-17 | 25, 26, 27, 28 |  | -7d |
| 30 | 5 | **Testing** | 17d | 2026-09-18 | 2026-10-15 |  |  | -7d |
| 31 |  | Functional Testing | 5d | 2026-09-18 | 2026-09-28 | 29 |  | -7d |
| 32 |  | Cross-browser and Device Testing | 4d | 2026-09-18 | 2026-09-25 | 29 |  | -6d |
| 33 |  | Accessibility Check | 3d | 2026-09-18 | 2026-09-24 | 29 |  | -5d |
| 34 |  | Performance Tuning | 3d | 2026-09-29 | 2026-10-01 | 31 |  | -3d |
| 35 |  | Defect Fixing | 7d | 2026-09-29 | 2026-10-07 | 31, 32, 33 |  | -7d |
| 36 |  | User Acceptance Test | 5d | 2026-10-08 | 2026-10-15 | 35, 34 |  | -7d |
| 37 |  | UAT Sign-off | 0d | 2026-10-15 | 2026-10-15 | 36 |  | -7d |
| 38 | 6 | **Launch and Closure** | 29d | 2026-09-18 | 2026-11-02 |  |  | -7d |
| 39 |  | DNS and Production Setup | 2d | 2026-09-18 | 2026-09-22 | 29 |  | 8d |
| 40 |  | Go / No-Go Review | 1d | 2026-10-16 | 2026-10-16 | 37, 39 |  | -7d |
| 41 |  | Production Deployment | 1d | 2026-10-19 | 2026-10-19 | 40 |  | -7d |
| 42 |  | Site Launch | 0d | 2026-10-19 | 2026-10-19 | 41 |  | -7d |
| 43 |  | Post-launch Monitoring | 5d | 2026-10-20 | 2026-10-26 | 42 |  | 0d |
| 44 |  | Operations Handover | 3d | 2026-10-27 | 2026-10-29 | 43 |  | 0d |
| 45 |  | Project Closure Report | 2d | 2026-10-30 | 2026-11-02 | 44 |  | 0d |

## Version 2 (data date 2026-10-09, saved 2026-10-09)

Note of the change: Merge commit '63a8c69f3d29bd509431223d0e748eae3db72524' into spec-pass-1001

Last finish stays 2026-11-02. Complete tasks 18 → 29.

Changed:

| ID | Task | Start | Finish | Complete | Total float |
| --- | --- | --- | --- | --- | --- |
| 16 | **Content Preparation** |  | 2026-09-07 A | 71% → 100% | -7d → none |
| 19 | Copywriting |  | 2026-09-02 A | 67% → 100% | -7d → none |
| 21 | Content Review and Approval | 2026-09-03 A | 2026-09-07 A | 0% → 100% | -7d → none |
| 22 | **Build** |  | 2026-09-17 A | 61% → 100% | -7d → none |
| 24 | Template Development |  | 2026-08-28 A | 83% → 100% | -1d → none |
| 25 | Responsive Implementation |  | 2026-08-28 A | 67% → 100% | 7d → none |
| 27 | Content Entry | 2026-09-08 A | 2026-09-17 A | 0% → 100% | -7d → none |
| 28 | Analytics and Tag Setup | 2026-09-16 A | 2026-09-17 A | 0% → 100% | -7d → none |
| 29 | Build Complete | 2026-09-17 A | 2026-09-17 A | 0% → 100% | -7d → none |
| 30 | **Testing** | 2026-09-18 A |  | 0% → 77% |  |
| 31 | Functional Testing | 2026-09-18 A | 2026-09-28 A | 0% → 100% | -7d → none |
| 32 | Cross-browser and Device Testing | 2026-09-18 A | 2026-09-25 A | 0% → 100% | -6d → none |
| 33 | Accessibility Check | 2026-09-18 A | 2026-09-24 A | 0% → 100% | -5d → none |
| 34 | Performance Tuning | 2026-09-29 A |  | 0% → 90% |  |
| 35 | Defect Fixing | 2026-09-29 A |  | 0% → 90% |  |
| 38 | **Launch and Closure** | 2026-09-18 A |  | 0% → 14% |  |
| 39 | DNS and Production Setup | 2026-09-18 A | 2026-09-22 A | 0% → 100% | 8d → none |
| 44 | Operations Handover |  |  | 0% → 10% |  |
