# コーポレートサイト リニューアル

How a schedule from MS Project XML changed from version to version. A marks actual dates.

## Version 1 (data date 2026-08-26, saved 2026-08-26)

Note of the change: Publish sample-schedule: nine sample documents and a ProjectLibre file

| ID | WBS | Task | Duration | Start | Finish | Predecessors | Complete | Total float |
| --- | --- | --- | --- | --- | --- | --- | --- | --- |
| 1 | 1 | **1. 立ち上げ** | 13d | 2026-06-08 A | 2026-06-24 A |  | 100% |  |
| 2 |  | キックオフ会議 | 1d | 2026-06-08 A | 2026-06-08 A |  | 100% |  |
| 3 |  | 現行サイト分析 | 5d | 2026-06-09 A | 2026-06-15 A | 2 | 100% |  |
| 4 |  | 競合ベンチマーク調査 | 4d | 2026-06-09 A | 2026-06-12 A | 2 | 100% |  |
| 5 |  | 要件ワークショップ | 3d | 2026-06-16 A | 2026-06-18 A | 3, 4 | 100% |  |
| 6 |  | 要件定義書 作成 | 4d | 2026-06-19 A | 2026-06-24 A | 5 | 100% |  |
| 7 |  | 要件定義 承認 | 0d | 2026-06-24 A | 2026-06-24 A | 6 | 100% |  |
| 8 | 2 | **2. IA・デザイン** | 31d | 2026-06-25 A | 2026-08-07 A |  | 100% |  |
| 9 |  | サイトマップ・IA 設計 | 5d | 2026-06-25 A | 2026-07-01 A | 7 | 100% |  |
| 10 |  | ワイヤーフレーム作成 | 8d | 2026-07-02 A | 2026-07-13 A | 9 | 100% |  |
| 11 |  | デザインシステム・スタイルガイド策定 | 5d | 2026-07-06 A | 2026-07-10 A | 10SS+2d | 100% |  |
| 12 |  | 主要ページ ビジュアルデザイン | 10d | 2026-07-14 A | 2026-07-28 A | 10, 11 | 100% |  |
| 13 |  | デザインレビュー(関係部署) | 2d | 2026-07-29 A | 2026-07-30 A | 12 | 100% |  |
| 14 |  | デザイン修正 | 6d | 2026-07-31 A | 2026-08-07 A | 13 | 100% |  |
| 15 |  | デザイン 承認 | 0d | 2026-08-07 A | 2026-08-07 A | 14 | 100% |  |
| 16 | 3 | **3. コンテンツ準備** | 49d | 2026-06-25 A | 2026-09-07 |  | 71% | -7d |
| 17 |  | コンテンツ棚卸し | 4d | 2026-06-25 A | 2026-06-30 A | 7 | 100% |  |
| 18 |  | SEO キーワード設計 | 3d | 2026-07-02 A | 2026-07-06 A | 9 | 100% |  |
| 19 |  | 原稿執筆 | 15d | 2026-08-10 A | 2026-09-02 | 17, 15SS | 67% | -7d |
| 20 |  | 写真撮影 | 2d | 2026-08-10 A | 2026-08-12 A | 15 | 100% |  |
| 21 |  | 原稿レビュー・承認 | 3d | 2026-09-03 | 2026-09-07 | 19 |  | -7d |
| 22 | 4 | **4. 構築** | 57d | 2026-06-25 A | 2026-09-17 |  | 61% | -7d |
| 23 |  | CMS 構築・環境準備 | 4d | 2026-06-25 A | 2026-06-30 A | 7 | 100% |  |
| 24 |  | テンプレート開発 | 12d | 2026-08-10 A | 2026-08-28 | 15, 23 | 83% | -1d |
| 25 |  | レスポンシブ対応実装 | 6d | 2026-08-21 A | 2026-08-28 | 24SS+6d | 67% | 7d |
| 26 |  | 問い合わせフォーム実装 | 4d | 2026-07-01 A | 2026-07-06 A | 23 | 100% |  |
| 27 |  | コンテンツ入稿 | 8d | 2026-09-08 | 2026-09-17 | 24, 21, 20 |  | -7d |
| 28 |  | アクセス解析・タグ設定 | 2d | 2026-09-16 | 2026-09-17 | 24, 18, 27FF |  | -7d |
| 29 |  | 構築完了 | 0d | 2026-09-17 | 2026-09-17 | 25, 26, 27, 28 |  | -7d |
| 30 | 5 | **5. テスト** | 17d | 2026-09-18 | 2026-10-15 |  |  | -7d |
| 31 |  | 機能テスト | 5d | 2026-09-18 | 2026-09-28 | 29 |  | -7d |
| 32 |  | クロスブラウザ・端末テスト | 4d | 2026-09-18 | 2026-09-25 | 29 |  | -6d |
| 33 |  | アクセシビリティ検証 | 3d | 2026-09-18 | 2026-09-24 | 29 |  | -5d |
| 34 |  | 表示速度チューニング | 3d | 2026-09-29 | 2026-10-01 | 31 |  | -3d |
| 35 |  | 不具合修正 | 7d | 2026-09-29 | 2026-10-07 | 31, 32, 33 |  | -7d |
| 36 |  | 受入テスト(UAT) | 5d | 2026-10-08 | 2026-10-15 | 35, 34 |  | -7d |
| 37 |  | UAT 完了承認 | 0d | 2026-10-15 | 2026-10-15 | 36 |  | -7d |
| 38 | 6 | **6. 公開・完了** | 29d | 2026-09-18 | 2026-11-02 |  |  | -7d |
| 39 |  | DNS・本番環境準備 | 2d | 2026-09-18 | 2026-09-22 | 29 |  | 8d |
| 40 |  | Go/No-Go 判定会 | 1d | 2026-10-16 | 2026-10-16 | 37, 39 |  | -7d |
| 41 |  | 本番リリース作業 | 1d | 2026-10-19 | 2026-10-19 | 40 |  | -7d |
| 42 |  | サイト公開 | 0d | 2026-10-19 | 2026-10-19 | 41 |  | -7d |
| 43 |  | 公開後 監視・初期対応 | 5d | 2026-10-20 | 2026-10-26 | 42 |  | 0d |
| 44 |  | 運用引き継ぎ | 3d | 2026-10-27 | 2026-10-29 | 43 |  | 0d |
| 45 |  | プロジェクト完了報告 | 2d | 2026-10-30 | 2026-11-02 | 44 |  | 0d |

## Version 2 (data date 2026-10-09, saved 2026-10-09)

Note of the change: Land CR-618: same-day FS holds, managed MSPDI samples

Last finish stays 2026-11-02. Complete tasks 18 → 29.

Changed:

| ID | Task | Start | Finish | Complete | Total float |
| --- | --- | --- | --- | --- | --- |
| 16 | **3. コンテンツ準備** |  | 2026-09-07 A | 71% → 100% | -7d → none |
| 19 | 原稿執筆 |  | 2026-09-02 A | 67% → 100% | -7d → none |
| 21 | 原稿レビュー・承認 | 2026-09-03 A | 2026-09-07 A | 0% → 100% | -7d → none |
| 22 | **4. 構築** |  | 2026-09-17 A | 61% → 100% | -7d → none |
| 24 | テンプレート開発 |  | 2026-08-28 A | 83% → 100% | -1d → none |
| 25 | レスポンシブ対応実装 |  | 2026-08-28 A | 67% → 100% | 7d → none |
| 27 | コンテンツ入稿 | 2026-09-08 A | 2026-09-17 A | 0% → 100% | -7d → none |
| 28 | アクセス解析・タグ設定 | 2026-09-16 A | 2026-09-17 A | 0% → 100% | -7d → none |
| 29 | 構築完了 | 2026-09-17 A | 2026-09-17 A | 0% → 100% | -7d → none |
| 30 | **5. テスト** | 2026-09-18 A |  | 0% → 77% |  |
| 31 | 機能テスト | 2026-09-18 A | 2026-09-28 A | 0% → 100% | -7d → none |
| 32 | クロスブラウザ・端末テスト | 2026-09-18 A | 2026-09-25 A | 0% → 100% | -6d → none |
| 33 | アクセシビリティ検証 | 2026-09-18 A | 2026-09-24 A | 0% → 100% | -5d → none |
| 34 | 表示速度チューニング | 2026-09-29 A |  | 0% → 90% |  |
| 35 | 不具合修正 | 2026-09-29 A |  | 0% → 90% |  |
| 38 | **6. 公開・完了** | 2026-09-18 A |  | 0% → 14% |  |
| 39 | DNS・本番環境準備 | 2026-09-18 A | 2026-09-22 A | 0% → 100% | 8d → none |
| 44 | 運用引き継ぎ |  |  | 0% → 10% |  |
